# Apex-shrine

Schedule from Primavera P6, 2023-10-04 to 2027-03-05, data date 2025-04-25, costs in Rupee, A marks actual dates.

## Calendars

- Prestige Park Grove: Mon-Sat 06:00-18:00; Sun off. Exceptions (off unless hours are given): 2023-11-01, 2024-01-26, 2024-08-15, 2024-10-02, 2024-10-16 8:00-12:00, 13:00-17:00, 2024-11-01, 2025-08-15, 2025-10-02, 2025-11-01, 2026-01-26, 2026-08-15, 2026-10-02, 2027-01-26.

## Resources

| Resource | Group | Rate |
| --- | --- | --- |
| Third Party | labor | 1 |
| Santech (Plumbing) | labor | 1 |
| Elexir (Electrical) | labor | 1 |
| L&T | labor | 1 |
| Nexus (Fire) | labor | 1 |
| Otis (Lifts) | labor | 1 |
| Surfa Coats (Painting) | labor | 1 |
| Fenesta (UPVC Windows) | labor | 1 |
| Interiors (False celing) | labor | 1 |
| Morph (Wooden Doors) | labor | 1 |
| Shakthi Hormann (Fire Doors) | labor | 1 |

## Schedule

| ID | WBS | Activity | Duration | Start | Finish | Predecessors | Complete | Planned start | Planned finish | Total float | Free float | Resources | Cost | MSP Activity ID |
| --- | --- | --- | --- | --- | --- | --- | --- | --- | --- | --- | --- | --- | --- | --- |
|  | 1 | **Project Genisis** |  | 2023-10-04 | 2027-03-05 |  |  |  |  |  |  |  |  |  |
| PG-32433 |  | Project Close Out | 4.67d | 2027-02-27 | 2027-03-05 | PG-32397, PG-31533, PG-32387, PG-32386, PG-32378, PG-32373, PG-32376, PG-32375, PG-32374, PG-32377, PG-31528 |  | 2027-02-27 | 2027-03-04 | 0d |  | L&T [187000 h] | 187,000 | 46443 |
|  | 1.1 | **Contractor Appointment and Site team mobilisation** |  | 2023-10-04 | 2023-11-09 |  |  |  |  |  |  |  |  |  |
| PG-0998 |  | General Contractor appointment | 0.67d | 2023-10-04 A | 2023-10-04 A |  | 100% |  |  |  |  | L&T [27000 h] | 27,000 | 44718 |
| PG-0999 |  | GC Team Mobilisation | 29.67d | 2023-10-05 A | 2023-11-09 A | PG-0998 | 100% |  |  |  |  | L&T [1187000 h] | 1,187,000 | 44717 |
|  | 1.2 | **Procurement and Materials requirement to Site** |  | 2023-10-04 | 2026-07-25 |  |  |  |  |  |  |  |  |  |
|  | 1.2.1 | **Modular Aluminium Shuttering** |  | 2023-10-23 | 2024-08-09 |  |  |  |  |  |  |  |  |  |
| PG-10000 |  | Shell Drawings Approval & Signoff | 44.67d | 2023-10-23 A | 2023-12-15 A | PG-0998 FF+60d | 100% | 2023-10-23 | 2023-12-14 |  |  | L&T [1787000 h] | 1,787,000 | 44407 |
| PG-10001 |  | Purchase Order works ( By Contractor to F/W Vendor ) | 1.67d | 2023-12-15 A | 2023-12-18 A | PG-10000 | 100% | 2023-12-15 | 2023-12-16 |  |  | L&T [67000 h] | 67,000 | 44408 |
| PG-10002 |  | Materials to reach at site for marking | 59.67d | 2024-05-07 A | 2024-07-16 A | PG-10001 FS+120d | 100% | 2024-05-07 | 2024-07-15 |  |  | L&T [2387000 h] | 2,387,000 | 44409 |
| PG-10003 |  | Marking and setting up of materials area wise | 59.67d | 2024-05-30 A | 2024-08-09 A | PG-10002 FF+20d | 100% | 2024-05-30 | 2024-08-07 |  |  | L&T [2387000 h] | 2,387,000 | 44410 |
|  | 1.2.2 | **Tiles & Marble Supply** |  | 2024-11-08 | 2026-07-03 |  |  |  |  |  |  |  |  |  |
|  | 1.2.2.1 | **Toilet dado and Floor tiles** |  | 2024-11-08 | 2026-04-17 |  |  |  |  |  |  |  |  |  |
| PG-10004 |  | Purchase Order works | 2d | 2024-11-08 A | 2024-11-11 A | PG-11750 FF+60d | 100% | 2024-11-06 | 2024-11-08 |  |  | L&T [80000 h] | 80,000 | 44413 |
| PG-10005 |  | First Consignment Supply to site ( GF to 4th Floor ) | 10d | 2025-02-24 A | 2025-03-06 A | PG-10004 FS+90d | 100% | 2025-02-21 | 2025-03-05 |  |  | L&T [400000 h] | 400,000 | 44414 |
| PG-10006 |  | Second Consignment Supply to site ( 5th to 14th Floor ) | 10d | 2025-06-02 | 2025-06-13 | PG-10005 FS+75d |  |  |  | 45.17d | 0d | L&T [400000 h] | 400,000 | 44419 |
| PG-10007 |  | Third Consignment Supply to site ( 15th to 29th Floor ) | 9.67d | 2025-11-04 | 2025-11-15 | PG-10006 FS+120d |  |  |  | 45.17d | 0d | L&T [387000 h] | 387,000 | 44418 |
| PG-10008 |  | Fourth Consignment Supply to site ( Balance Floor wise - 30th to 41st Floor ) | 10.67d | 2026-04-06 | 2026-04-17 | PG-10007 FS+120d |  |  |  | 272.17d |  | L&T [427000 h] | 427,000 | 44415 |
|  | 1.2.2.2 | **Vitrified Floor Tiles including corridor Flooring & Cladding** |  | 2024-11-08 | 2026-07-03 |  |  |  |  |  |  |  |  |  |
| PG-10009 |  | Purchase Order works | 2d | 2024-11-08 A | 2024-11-11 A | PG-11750 FF+60d | 100% | 2024-11-06 | 2024-11-08 |  |  | L&T [80000 h] | 80,000 | 44421 |
| PG-10010 |  | First Consignment Supply to site ( GF to 4th Floor ) | 10d | 2025-02-24 A | 2025-03-06 A | PG-10009 FS+90d | 100% | 2025-02-21 | 2025-03-05 |  |  | L&T [400000 h] | 400,000 | 44422 |
| PG-10011 |  | Second Consignment Supply to site ( 5th to 14th Floor ) | 10d | 2025-05-27 | 2025-06-07 | PG-10010 FS+70d |  |  |  | 21d | 0d | L&T [400000 h] | 400,000 | 44423 |
| PG-10012 |  | Third Consignment Supply to site ( 15th to 29th Floor ) | 10d | 2025-11-10 | 2025-11-21 | PG-10011 FS+130d |  |  |  | 21d | 0d | L&T [400000 h] | 400,000 | 44424 |
| PG-10013 |  | Fourth Consignment Supply to site ( Balance Floor wise - 30th to 41st Floor ) | 10.67d | 2026-06-20 | 2026-07-03 | PG-10012 FS+180d |  |  |  | 21d | 0d | L&T [427000 h] | 427,000 | 44425 |

| ID | WBS | Activity | Duration | Start | Finish | Predecessors | Complete | Remaining | Planned start | Planned finish | Total float | Free float | Resources | Cost | MSP Activity ID |
| --- | --- | --- | --- | --- | --- | --- | --- | --- | --- | --- | --- | --- | --- | --- | --- |
|  | 1.2.3 | **CP & Sanitary Supply** |  | 2023-10-04 | 2025-03-10 |  |  |  |  |  |  |  |  |  |  |
| PG-10019 |  | Purchase Order works | 2d | 2023-10-04 A | 2023-10-06 A |  | 100% |  |  |  |  |  | Santech (Plumbing) [64000 h] | 64,000 | 44434 |
| PG-10020 |  | First Consignment Supply to site ( GF to 4th Floor ) | 9.67d | 2023-12-05 A | 2023-12-16 A | PG-10019 FF+60d | 100% |  | 2023-12-05 | 2023-12-15 |  |  | Santech (Plumbing) [309000 h] | 309,000 | 44435 |
| PG-10021 |  | Second Consignment Supply to site ( 5th to 14th Floor ) | 10.67d | 2024-02-13 A | 2024-02-26 A | PG-10020 FF+60d | 100% |  | 2024-02-13 | 2024-02-24 |  |  | Santech (Plumbing) [341000 h] | 341,000 | 44436 |
| PG-10022 |  | Third Consignment Supply to site ( 15th to 29th Floor ) | 9.67d | 2024-07-26 A | 2024-08-07 A | PG-10021 FF+140d | 100% |  | 2024-07-26 | 2024-08-06 |  |  | Santech (Plumbing) [309000 h] | 309,000 | 44437 |
| PG-10023 |  | Fourth Consignment Supply to site ( Balance Floor wise ) | 9.67d | 2025-02-25 A | 2025-03-10 A | PG-10022 FF+180d | 100% |  | 2025-02-25 | 2025-03-08 |  |  | Santech (Plumbing) [309000 h] | 309,000 | 44438 |
|  | 1.2.4 | **FRP Tanks Supply** |  | 2025-05-03 | 2025-11-29 |  |  |  |  |  |  |  |  |  |  |
| PG-10024 |  | Purchase Order works | 6.67d | 2025-05-03 | 2025-05-12 | PG-10165 |  |  |  |  | 215.83d | 0d | L&T [267000 h] | 267,000 | 44441 |
| PG-10025 |  | Materials Supply to site ( Tower - 1, 2, 3, 9, 14, 18 & 19 ) | 28.67d | 2025-06-28 | 2025-08-01 | PG-10024 FF+70d |  |  |  |  | 215.83d | 0d | L&T [1147000 h] | 1,147,000 | 44440 |
| PG-10026 |  | Materials Supply to site ( Tower - 4, 8, 10 & 13 ) | 30.67d | 2025-07-31 | 2025-09-06 | PG-10025 FF+30d |  |  |  |  | 215.83d | 0d | L&T [1227000 h] | 1,227,000 | 44442 |
| PG-10027 |  | Materials Supply to site ( Tower - 5, 6, 7, 11, 12, 15, 16 & 17 ) | 28.67d | 2025-10-25 | 2025-11-29 | PG-10026 FF+70d |  |  |  |  | 215.83d | 0d | L&T [1147000 h] | 1,147,000 | 44443 |
|  | 1.2.5 | **Lift Supply** |  | 2025-04-22 | 2025-11-24 |  |  |  |  |  |  |  |  |  |  |
| PG-10028 |  | Purchase Order works | 7d | 2025-04-22 A | 2025-04-30 | PG-10160 | 40% | 4.2d |  |  | 106.97d | 0d | L&T [280000 h] | 280,000 | 44678 |
| PG-10029 |  | Materials Supply to site ( First Lot - T1, T2. T3,T4, T8, T9, T13, T14, T18 & T19 ) | 20d | 2025-08-13 | 2025-09-06 | PG-10028 FF+110d |  |  |  |  | 106.97d | 0d | L&T [800000 h] | 800,000 | 44679 |
| PG-10030 |  | Materials Supply to site ( First Lot - T5, T6. T7,T11, T12, T15, T16 & T17 ) | 30d | 2025-10-18 | 2025-11-24 | PG-10029 FF+65d |  |  |  |  | 106.97d | 0d | L&T [1200000 h] | 1,200,000 | 44677 |
|  | 1.2.6 | **Electrical Panel Supply** |  | 2025-04-12 | 2025-08-23 |  |  |  |  |  |  |  |  |  |  |
| PG-10031 |  | Purchase Order works | 9.67d | 2025-04-12 A | 2025-04-23 A | PG-10572 | 100% |  | 2025-04-17 | 2025-04-29 |  |  | Elexir (Electrical) [309000 h] | 309,000 | 44445 |
| PG-10032 |  | Materials Supply to site | 28.67d | 2025-07-19 | 2025-08-23 | PG-10031, PG-10655 |  |  |  |  | 139.83d | 0d | Elexir (Electrical) [917000 h] | 917,000 | 44444 |
|  | 1.2.7 | **DG Supply** |  | 2023-10-04 | 2024-04-06 |  |  |  |  |  |  |  |  |  |  |
| PG-10033 |  | Purchase Order works | 8.67d | 2023-10-04 A | 2023-10-13 A |  | 100% |  |  |  |  |  | L&T [347000 h] | 347,000 | 44448 |
| PG-10034 |  | Materials Supply to site | 28.67d | 2024-03-04 A | 2024-04-06 A | PG-10033 FS+120d | 100% |  |  |  |  |  | L&T [1147000 h] | 1,147,000 | 44449 |
|  | 1.2.8 | **Transformer Supply** |  | 2026-02-25 | 2026-07-25 |  |  |  |  |  |  |  |  |  |  |
| PG-10035 |  | Purchase Order works | 9.67d | 2026-02-25 | 2026-03-07 | PG-12661 |  |  |  |  | 103.33d | 0d | L&T [387000 h] | 387,000 | 44451 |
| PG-10036 |  | Materials Supply to site | 29.67d | 2026-06-22 | 2026-07-25 | PG-10035 FF+120d |  |  |  |  | 103.33d | 0d | L&T [1187000 h] | 1,187,000 | 44452 |

| ID | WBS | Activity | Duration | Start | Finish | Predecessors | Complete | Planned start | Planned finish | Resources | Cost | MSP Activity ID |
| --- | --- | --- | --- | --- | --- | --- | --- | --- | --- | --- | --- | --- |
|  | 1.2.9 | **STP Equipment Supply** |  | 2024-01-30 | 2024-05-08 |  |  |  |  |  |  |  |
| PG-10037 |  | Purchase Order works | 10d | 2024-01-30 A | 2024-02-10 A | PG-30510 FF+60d | 100% |  |  | L&T [400000 h] | 400,000 | 44454 |
| PG-10038 |  | Materials Supply to site | 30d | 2024-04-03 A | 2024-05-08 A | PG-10037 FF+75d | 100% |  |  | L&T [1200000 h] | 1,200,000 | 44455 |
|  | 1.3 | **Construction** |  | 2023-10-04 | 2026-10-15 |  |  |  |  |  |  |  |
|  | 1.3.1 | **Building 1** |  | 2023-10-04 | 2026-10-15 |  |  |  |  |  |  |  |
|  | 1.3.1.1 | **Tower 1 ( 2B+G+23 ) TYP 4 Units - 94 Units** |  | 2023-10-27 | 2026-07-27 |  |  |  |  |  |  |  |
|  | 1.3.1.1.1 | **Foundation works** |  | 2023-10-27 | 2024-04-16 |  |  |  |  |  |  |  |
| PG-10047 |  | Setting out - Marking | 3d | 2023-10-27 A | 2023-10-31 A | PG-10844 FS+7d | 100% |  |  | L&T [120000 h] | 120,000 | 9989 |
| PG-10048 |  | Excavation Works | 45d | 2023-10-31 A | 2023-12-23 A | PG-10047 | 100% |  |  | L&T [1800000 h] | 1,800,000 | 9990 |
| PG-10049 |  | Piling Works - 148 Nos | 38d | 2023-12-20 A | 2024-02-02 A | PG-10048 FF+35d | 100% | 2023-12-20 | 2024-02-03 | L&T [1520000 h] | 1,520,000 | 9991 |
| PG-10050 |  | Backfilling and Consolidation | 19.67d | 2024-01-24 A | 2024-02-17 A | PG-10049 FF+12d | 100% | 2024-01-24 | 2024-02-16 | L&T [787000 h] | 787,000 | 45982 |
| PG-10051 |  | Waterproofing & PCC works | 15d | 2024-02-14 A | 2024-03-02 A | PG-10050 FF+12d | 100% |  |  | L&T [600000 h] | 600,000 | 9992 |
| PG-10052 |  | Raft Reinforcement | 15d | 2024-03-02 A | 2024-03-20 A | PG-10051 FF+15d | 100% |  |  | L&T [600000 h] | 600,000 | 9993 |
| PG-10053 |  | Raft Formwork | 8d | 2024-03-28 A | 2024-04-06 A | PG-10052 FF+15d | 100% |  |  | L&T [320000 h] | 320,000 | 9994 |
| PG-10054 |  | Raft Concreting | 3d | 2024-04-12 A | 2024-04-16 A | PG-10053 FF+8d | 100% |  |  | L&T [120000 h] | 120,000 | 9995 |
|  | 1.3.1.1.2 | **Structure works** |  | 2024-04-16 | 2025-08-16 |  |  |  |  |  |  |  |
|  | 1.3.1.1.2.1 | **LBF** |  | 2024-04-16 | 2024-05-14 |  |  |  |  |  |  |  |
|  | 1.3.1.1.2.1.1 | **Columns / shear walls** |  | 2024-04-16 | 2024-05-02 |  |  |  |  |  |  |  |
| PG-10055 |  | Reinforcement | 4d | 2024-04-16 A | 2024-04-20 A | PG-10054 | 100% |  |  | L&T [700000 h] | 700,000 | 9999 |
| PG-10057 |  | Concrete | 9.5d | 2024-04-20 A | 2024-05-02 A | PG-10056 FF+5d | 100% | 2024-04-20 | 2024-05-01 | L&T [340000 h] | 340,000 | 10001 |
| PG-10056 |  | Formwork | 4d | 2024-04-22 A | 2024-04-26 A | PG-10055 FF+5d | 100% |  |  | L&T [320000 h] | 320,000 | 10000 |
|  | 1.3.1.1.2.1.2 | **Slab, Beams & Staircase** |  | 2024-05-02 | 2024-05-14 |  |  |  |  |  |  |  |
| PG-10058 |  | Formwork | 3d | 2024-05-02 A | 2024-05-06 A | PG-10057 | 100% |  |  | L&T [220000 h] | 220,000 | 10003 |
| PG-10059 |  | Reinforcement | 3d | 2024-05-08 A | 2024-05-11 A | PG-10058 FF+5d | 100% |  |  | L&T [520000 h] | 520,000 | 10004 |
| PG-10060 |  | Concrete | 1d | 2024-05-13 A | 2024-05-14 A | PG-10059 FS+1d | 100% |  |  | L&T [880000 h] | 880,000 | 10005 |

| ID | WBS | Activity | Duration | Start | Finish | Predecessors | Complete | Planned start | Planned finish | Resources | Cost | MSP Activity ID |
| --- | --- | --- | --- | --- | --- | --- | --- | --- | --- | --- | --- | --- |
|  | 1.3.1.1.2.2 | **UBF** |  | 2024-05-14 | 2024-06-11 |  |  |  |  |  |  |  |
|  | 1.3.1.1.2.2.1 | **Columns / shear walls** |  | 2024-05-14 | 2024-05-30 |  |  |  |  |  |  |  |
| PG-10061 |  | Reinforcement | 4d | 2024-05-14 A | 2024-05-18 A | PG-10060 | 100% |  |  | L&T [700000 h] | 700,000 | 10017 |
| PG-10063 |  | Concrete | 9.5d | 2024-05-18 A | 2024-05-30 A | PG-10062 FF+5d | 100% | 2024-05-18 | 2024-05-29 | L&T [340000 h] | 340,000 | 10019 |
| PG-10062 |  | Formwork | 4d | 2024-05-20 A | 2024-05-24 A | PG-10061 FF+5d | 100% |  |  | L&T [320000 h] | 320,000 | 10018 |
|  | 1.3.1.1.2.2.2 | **Slab, Beams & Staircase** |  | 2024-05-30 | 2024-06-11 |  |  |  |  |  |  |  |
| PG-10064 |  | Formwork | 3d | 2024-05-30 A | 2024-06-01 A | PG-10063 | 100% | 2024-05-30 | 2024-06-03 | L&T [220000 h] | 220,000 | 10021 |
| PG-10065 |  | Reinforcement | 3d | 2024-06-05 A | 2024-06-07 A | PG-10064 FF+5d | 100% | 2024-06-05 | 2024-06-08 | L&T [520000 h] | 520,000 | 10022 |
| PG-10066 |  | Concrete | 1d | 2024-06-10 A | 2024-06-11 A | PG-10065 FS+1d | 100% |  |  | L&T [880000 h] | 880,000 | 10023 |
|  | 1.3.1.1.2.3 | **Ground Floor** |  | 2024-06-11 | 2024-07-04 |  |  |  |  |  |  |  |
|  | 1.3.1.1.2.3.1 | **Columns / shear walls** |  | 2024-06-11 | 2024-06-22 |  |  |  |  |  |  |  |
| PG-10067 |  | Reinforcement | 4d | 2024-06-11 A | 2024-06-15 A | PG-10066 | 100% |  |  | L&T [700000 h] | 700,000 | 10026 |
| PG-10069 |  | Concrete | 7.5d | 2024-06-14 A | 2024-06-22 A | PG-10068 FF+3d | 100% |  |  | L&T [340000 h] | 340,000 | 10028 |
| PG-10068 |  | Formwork | 4d | 2024-06-15 A | 2024-06-20 A | PG-10067 FF+4d | 100% |  |  | L&T [320000 h] | 320,000 | 10027 |
|  | 1.3.1.1.2.3.2 | **Slab, Beams & Staircase** |  | 2024-06-24 | 2024-07-04 |  |  |  |  |  |  |  |
| PG-10070 |  | Formwork | 3d | 2024-06-24 A | 2024-06-26 A | PG-10069 | 100% | 2024-06-24 | 2024-06-27 | L&T [220000 h] | 220,000 | 10030 |
| PG-10071 |  | Reinforcement | 3d | 2024-06-28 A | 2024-07-01 A | PG-10070 FF+4d | 100% | 2024-06-28 | 2024-07-02 | L&T [520000 h] | 520,000 | 10031 |
| PG-10072 |  | Concrete | 1d | 2024-07-03 A | 2024-07-04 A | PG-10071 FS+1d | 100% |  |  | L&T [880000 h] | 880,000 | 10032 |
|  | 1.3.1.1.2.4 | **Floor 01** |  | 2024-07-04 | 2024-07-27 |  |  |  |  |  |  |  |
|  | 1.3.1.1.2.4.1 | **Columns / shear walls** |  | 2024-07-04 | 2024-07-16 |  |  |  |  |  |  |  |
| PG-10073 |  | Reinforcement | 4d | 2024-07-04 A | 2024-07-09 A | PG-10072 | 100% |  |  | L&T [700000 h] | 700,000 | 10035 |
| PG-10075 |  | Concrete | 7.5d | 2024-07-08 A | 2024-07-16 A | PG-10074 FF+3d | 100% |  |  | L&T [340000 h] | 340,000 | 10037 |
| PG-10074 |  | Formwork | 4d | 2024-07-09 A | 2024-07-13 A | PG-10073 FF+4d | 100% |  |  | L&T [320000 h] | 320,000 | 10036 |
|  | 1.3.1.1.2.4.2 | **Slab, Beams & Staircase** |  | 2024-07-17 | 2024-07-27 |  |  |  |  |  |  |  |
| PG-10076 |  | Formwork | 3d | 2024-07-17 A | 2024-07-20 A | PG-10075 | 100% |  |  | L&T [220000 h] | 220,000 | 10039 |
| PG-10077 |  | Reinforcement | 3d | 2024-07-22 A | 2024-07-25 A | PG-10076 FF+4d | 100% |  |  | L&T [520000 h] | 520,000 | 10040 |
| PG-10078 |  | Concrete | 1d | 2024-07-26 A | 2024-07-27 A | PG-10077 FS+1d | 100% |  |  | L&T [880000 h] | 880,000 | 10041 |

| ID | WBS | Activity | Duration | Start | Finish | Predecessors | Complete | Planned start | Planned finish | Resources | Cost | MSP Activity ID |
| --- | --- | --- | --- | --- | --- | --- | --- | --- | --- | --- | --- | --- |
|  | 1.3.1.1.2.5 | **Floor 02** |  | 2024-07-27 | 2024-08-21 |  |  |  |  |  |  |  |
|  | 1.3.1.1.2.5.1 | **Columns / shear walls** |  | 2024-07-27 | 2024-08-09 |  |  |  |  |  |  |  |
| PG-10079 |  | Reinforcement | 4d | 2024-07-27 A | 2024-08-01 A | PG-10078 | 100% |  |  | L&T [700000 h] | 700,000 | 10044 |
| PG-10080 |  | Formwork | 4d | 2024-08-01 A | 2024-08-06 A | PG-10079 FF+4d | 100% |  |  | L&T [320000 h] | 320,000 | 10045 |
| PG-10081 |  | Concrete | 3.67d | 2024-08-05 A | 2024-08-09 A | PG-10080 FF+3d | 100% | 2024-08-05 | 2024-08-08 | L&T [340000 h] | 340,000 | 10046 |
|  | 1.3.1.1.2.5.2 | **Slab, Beams & Staircase** |  | 2024-08-09 | 2024-08-21 |  |  |  |  |  |  |  |
| PG-10082 |  | Formwork | 3d | 2024-08-09 A | 2024-08-12 A | PG-10081 | 100% | 2024-08-09 | 2024-08-13 | L&T [220000 h] | 220,000 | 10048 |
| PG-10083 |  | Reinforcement | 3d | 2024-08-14 A | 2024-08-17 A | PG-10082 FF+4d | 100% | 2024-08-14 | 2024-08-19 | L&T [520000 h] | 520,000 | 10049 |
| PG-10084 |  | Concrete | 1d | 2024-08-20 A | 2024-08-21 A | PG-10083 FS+1d | 100% |  |  | L&T [880000 h] | 880,000 | 10050 |
|  | 1.3.1.1.2.6 | **Floor 03** |  | 2024-08-21 | 2024-09-13 |  |  |  |  |  |  |  |
|  | 1.3.1.1.2.6.1 | **Columns / shear walls** |  | 2024-08-21 | 2024-09-03 |  |  |  |  |  |  |  |
| PG-10085 |  | Reinforcement | 4d | 2024-08-21 A | 2024-08-24 A | PG-10084 | 100% | 2024-08-21 | 2024-08-26 | L&T [700000 h] | 700,000 | 10053 |
| PG-10086 |  | Formwork | 4d | 2024-08-26 A | 2024-08-30 A | PG-10085 FF+4d | 100% |  |  | L&T [320000 h] | 320,000 | 10054 |
| PG-10087 |  | Concrete | 3.67d | 2024-08-29 A | 2024-09-03 A | PG-10086 FF+3d | 100% | 2024-08-29 | 2024-09-02 | L&T [340000 h] | 340,000 | 10055 |
|  | 1.3.1.1.2.6.2 | **Slab, Beams & Staircase** |  | 2024-09-03 | 2024-09-13 |  |  |  |  |  |  |  |
| PG-10088 |  | Formwork | 3d | 2024-09-03 A | 2024-09-06 A | PG-10087 | 100% |  |  | L&T [220000 h] | 220,000 | 10057 |
| PG-10089 |  | Reinforcement | 3d | 2024-09-07 A | 2024-09-11 A | PG-10088 FF+4d | 100% |  |  | L&T [520000 h] | 520,000 | 10058 |
| PG-10090 |  | Concrete | 1d | 2024-09-12 A | 2024-09-13 A | PG-10089 FS+1d | 100% |  |  | L&T [880000 h] | 880,000 | 10059 |
|  | 1.3.1.1.2.7 | **Floor 04** |  | 2024-09-13 | 2024-10-04 |  |  |  |  |  |  |  |
|  | 1.3.1.1.2.7.1 | **Columns / shear walls** |  | 2024-09-13 | 2024-09-23 |  |  |  |  |  |  |  |
| PG-10091 |  | Reinforcement | 4d | 2024-09-13 A | 2024-09-18 A | PG-10090 | 100% |  |  | L&T [700000 h] | 700,000 | 10062 |
| PG-10092 |  | Formwork | 4d | 2024-09-18 A | 2024-09-23 A | PG-10091 FF+4d | 100% |  |  | L&T [320000 h] | 320,000 | 10063 |
|  | 1.3.1.1.2.7.2 | **Slab, Beams & Staircase** |  | 2024-09-24 | 2024-10-04 |  |  |  |  |  |  |  |
| PG-10093 |  | Formwork | 3d | 2024-09-24 A | 2024-09-26 A | PG-10092 FF+4d | 100% | 2024-09-24 | 2024-09-27 | L&T [220000 h] | 220,000 | 10065 |
| PG-10094 |  | Reinforcement | 3d | 2024-09-28 A | 2024-10-03 A | PG-10093 FF+4d | 100% |  |  | L&T [520000 h] | 520,000 | 10066 |
| PG-10095 |  | Concrete | 1d | 2024-10-03 A | 2024-10-04 A | PG-10094 | 100% |  |  | L&T [880000 h] | 880,000 | 10067 |

| ID | WBS | Activity | Duration | Start | Finish | Predecessors | Complete | Planned start | Planned finish | Resources | Cost | MSP Activity ID |
| --- | --- | --- | --- | --- | --- | --- | --- | --- | --- | --- | --- | --- |
|  | 1.3.1.1.2.8 | **Floor 05** |  | 2024-10-04 | 2024-10-24 |  |  |  |  |  |  |  |
|  | 1.3.1.1.2.8.1 | **Columns / shear walls** |  | 2024-10-04 | 2024-10-14 |  |  |  |  |  |  |  |
| PG-10096 |  | Reinforcement | 4d | 2024-10-04 A | 2024-10-08 A | PG-10095 | 100% | 2024-10-04 | 2024-10-09 | L&T [700000 h] | 700,000 | 10070 |
| PG-10097 |  | Formwork | 4d | 2024-10-09 A | 2024-10-14 A | PG-10096 FF+4d | 100% |  |  | L&T [320000 h] | 320,000 | 10071 |
|  | 1.3.1.1.2.8.2 | **Slab, Beams & Staircase** |  | 2024-10-15 | 2024-10-24 |  |  |  |  |  |  |  |
| PG-10098 |  | Formwork | 3d | 2024-10-15 A | 2024-10-18 A | PG-10097 FF+4d | 100% |  |  | L&T [220000 h] | 220,000 | 10073 |
| PG-10099 |  | Reinforcement | 3d | 2024-10-19 A | 2024-10-23 A | PG-10098 FF+4d | 100% |  |  | L&T [520000 h] | 520,000 | 10074 |
| PG-10100 |  | Concrete | 1d | 2024-10-23 A | 2024-10-24 A | PG-10099 | 100% |  |  | L&T [880000 h] | 880,000 | 10075 |
|  | 1.3.1.1.2.9 | **Floor 06** |  | 2024-10-24 | 2024-11-09 |  |  |  |  |  |  |  |
|  | 1.3.1.1.2.9.1 | **Columns / shear walls** |  | 2024-10-24 | 2024-11-04 |  |  |  |  |  |  |  |
| PG-10101 |  | Reinforcement | 4d | 2024-10-24 A | 2024-10-29 A | PG-10100 | 100% |  |  | L&T [700000 h] | 700,000 | 10078 |
| PG-10102 |  | Formwork | 4d | 2024-10-29 A | 2024-11-04 A | PG-10101 FF+4d | 100% |  |  | L&T [320000 h] | 320,000 | 10079 |
|  | 1.3.1.1.2.9.2 | **Slab, Beams & Staircase** |  | 2024-11-02 | 2024-11-09 |  |  |  |  |  |  |  |
| PG-10103 |  | Formwork | 3d | 2024-11-02 A | 2024-11-06 A | PG-10102 FF+2d | 100% |  |  | L&T [220000 h] | 220,000 | 10081 |
| PG-10104 |  | Reinforcement | 3d | 2024-11-05 A | 2024-11-08 A | PG-10103 FF+2d | 100% |  |  | L&T [520000 h] | 520,000 | 10082 |
| PG-10105 |  | Concrete | 1d | 2024-11-08 A | 2024-11-09 A | PG-10104 | 100% |  |  | L&T [880000 h] | 880,000 | 10083 |
|  | 1.3.1.1.2.10 | **Floor 07** |  | 2024-11-09 | 2024-11-25 |  |  |  |  |  |  |  |
|  | 1.3.1.1.2.10.1 | **Columns / shear walls** |  | 2024-11-09 | 2024-11-19 |  |  |  |  |  |  |  |
| PG-10106 |  | Reinforcement | 4d | 2024-11-09 A | 2024-11-14 A | PG-10105 | 100% |  |  | L&T [700000 h] | 700,000 | 10086 |
| PG-10107 |  | Formwork | 4d | 2024-11-14 A | 2024-11-19 A | PG-10106 FF+4d | 100% |  |  | L&T [320000 h] | 320,000 | 10087 |
|  | 1.3.1.1.2.10.2 | **Slab, Beams & Staircase** |  | 2024-11-18 | 2024-11-25 |  |  |  |  |  |  |  |
| PG-10108 |  | Formwork | 3d | 2024-11-18 A | 2024-11-21 A | PG-10107 FF+2d | 100% |  |  | L&T [220000 h] | 220,000 | 10089 |
| PG-10109 |  | Reinforcement | 3d | 2024-11-20 A | 2024-11-23 A | PG-10108 FF+2d | 100% |  |  | L&T [520000 h] | 520,000 | 10090 |
| PG-10110 |  | Concrete | 1d | 2024-11-23 A | 2024-11-25 A | PG-10109 | 100% |  |  | L&T [880000 h] | 880,000 | 10091 |

| ID | WBS | Activity | Duration | Start | Finish | Predecessors | Complete | Resources | Cost | MSP Activity ID |
| --- | --- | --- | --- | --- | --- | --- | --- | --- | --- | --- |
|  | 1.3.1.1.2.11 | **Floor 08** |  | 2024-11-25 | 2024-12-10 |  |  |  |  |  |
|  | 1.3.1.1.2.11.1 | **Columns / shear walls** |  | 2024-11-25 | 2024-12-04 |  |  |  |  |  |
| PG-10111 |  | Reinforcement | 4d | 2024-11-25 A | 2024-11-29 A | PG-10110 | 100% | L&T [700000 h] | 700,000 | 10094 |
| PG-10112 |  | Formwork | 4d | 2024-11-29 A | 2024-12-04 A | PG-10111 FF+4d | 100% | L&T [320000 h] | 320,000 | 10095 |
|  | 1.3.1.1.2.11.2 | **Slab, Beams & Staircase** |  | 2024-12-03 | 2024-12-10 |  |  |  |  |  |
| PG-10113 |  | Formwork | 3d | 2024-12-03 A | 2024-12-06 A | PG-10112 FF+2d | 100% | L&T [220000 h] | 220,000 | 10097 |
| PG-10114 |  | Reinforcement | 3d | 2024-12-05 A | 2024-12-09 A | PG-10113 FF+2d | 100% | L&T [520000 h] | 520,000 | 10098 |
| PG-10115 |  | Concrete | 1d | 2024-12-09 A | 2024-12-10 A | PG-10114 | 100% | L&T [880000 h] | 880,000 | 10099 |
|  | 1.3.1.1.2.12 | **Floor 09** |  | 2024-12-10 | 2024-12-25 |  |  |  |  |  |
|  | 1.3.1.1.2.12.1 | **Columns / shear walls** |  | 2024-12-10 | 2024-12-19 |  |  |  |  |  |
| PG-10116 |  | Reinforcement | 4d | 2024-12-10 A | 2024-12-14 A | PG-10115 | 100% | L&T [700000 h] | 700,000 | 10102 |
| PG-10117 |  | Formwork | 4d | 2024-12-14 A | 2024-12-19 A | PG-10116 FF+4d | 100% | L&T [320000 h] | 320,000 | 10103 |
|  | 1.3.1.1.2.12.2 | **Slab, Beams & Staircase** |  | 2024-12-18 | 2024-12-25 |  |  |  |  |  |
| PG-10118 |  | Formwork | 3d | 2024-12-18 A | 2024-12-21 A | PG-10117 FF+2d | 100% | L&T [220000 h] | 220,000 | 10105 |
| PG-10119 |  | Reinforcement | 3d | 2024-12-20 A | 2024-12-24 A | PG-10118 FF+2d | 100% | L&T [520000 h] | 520,000 | 10106 |
| PG-10120 |  | Concrete | 1d | 2024-12-24 A | 2024-12-25 A | PG-10119 | 100% | L&T [880000 h] | 880,000 | 10107 |
|  | 1.3.1.1.2.13 | **Floor 10** |  | 2024-12-25 | 2025-01-09 |  |  |  |  |  |
|  | 1.3.1.1.2.13.1 | **Columns / shear walls** |  | 2024-12-25 | 2025-01-03 |  |  |  |  |  |
| PG-10121 |  | Reinforcement | 4d | 2024-12-25 A | 2024-12-30 A | PG-10120 | 100% | L&T [700000 h] | 700,000 | 10110 |
| PG-10122 |  | Formwork | 4d | 2024-12-30 A | 2025-01-03 A | PG-10121 FF+4d | 100% | L&T [320000 h] | 320,000 | 10111 |
|  | 1.3.1.1.2.13.2 | **Slab, Beams & Staircase** |  | 2025-01-02 | 2025-01-09 |  |  |  |  |  |
| PG-10123 |  | Formwork | 3d | 2025-01-02 A | 2025-01-06 A | PG-10122 FF+2d | 100% | L&T [220000 h] | 220,000 | 10113 |
| PG-10124 |  | Reinforcement | 3d | 2025-01-04 A | 2025-01-08 A | PG-10123 FF+2d | 100% | L&T [520000 h] | 520,000 | 10114 |
| PG-10125 |  | Concrete | 1d | 2025-01-08 A | 2025-01-09 A | PG-10124 | 100% | L&T [880000 h] | 880,000 | 10115 |

| ID | WBS | Activity | Duration | Start | Finish | Predecessors | Complete | Planned start | Planned finish | Resources | Cost | MSP Activity ID |
| --- | --- | --- | --- | --- | --- | --- | --- | --- | --- | --- | --- | --- |
|  | 1.3.1.1.2.14 | **Floor 11** |  | 2025-01-09 | 2025-01-24 |  |  |  |  |  |  |  |
|  | 1.3.1.1.2.14.1 | **Columns / shear walls** |  | 2025-01-09 | 2025-01-18 |  |  |  |  |  |  |  |
| PG-10126 |  | Reinforcement | 4d | 2025-01-09 A | 2025-01-14 A | PG-10125 | 100% |  |  | L&T [700000 h] | 700,000 | 10118 |
| PG-10127 |  | Formwork | 4d | 2025-01-14 A | 2025-01-18 A | PG-10126 FF+4d | 100% |  |  | L&T [320000 h] | 320,000 | 10119 |
|  | 1.3.1.1.2.14.2 | **Slab, Beams & Staircase** |  | 2025-01-17 | 2025-01-24 |  |  |  |  |  |  |  |
| PG-10128 |  | Formwork | 3d | 2025-01-17 A | 2025-01-21 A | PG-10127 FF+2d | 100% |  |  | L&T [220000 h] | 220,000 | 10121 |
| PG-10129 |  | Reinforcement | 3d | 2025-01-20 A | 2025-01-23 A | PG-10128 FF+2d | 100% |  |  | L&T [520000 h] | 520,000 | 10122 |
| PG-10130 |  | Concrete | 1d | 2025-01-23 A | 2025-01-24 A | PG-10129 | 100% |  |  | L&T [880000 h] | 880,000 | 10123 |
|  | 1.3.1.1.2.15 | **Floor 12** |  | 2025-01-24 | 2025-02-08 |  |  |  |  |  |  |  |
|  | 1.3.1.1.2.15.1 | **Columns / shear walls** |  | 2025-01-24 | 2025-02-03 |  |  |  |  |  |  |  |
| PG-10131 |  | Reinforcement | 4d | 2025-01-24 A | 2025-01-29 A | PG-10130 | 100% |  |  | L&T [700000 h] | 700,000 | 10126 |
| PG-10132 |  | Formwork | 4d | 2025-01-29 A | 2025-02-03 A | PG-10131 FF+4d | 100% |  |  | L&T [320000 h] | 320,000 | 10127 |
|  | 1.3.1.1.2.15.2 | **Slab, Beams & Staircase** |  | 2025-02-01 | 2025-02-08 |  |  |  |  |  |  |  |
| PG-10133 |  | Formwork | 3d | 2025-02-01 A | 2025-02-05 A | PG-10132 FF+2d | 100% |  |  | L&T [220000 h] | 220,000 | 10129 |
| PG-10134 |  | Reinforcement | 3d | 2025-02-04 A | 2025-02-07 A | PG-10133 FF+2d | 100% |  |  | L&T [520000 h] | 520,000 | 10130 |
| PG-10135 |  | Concrete | 1d | 2025-02-07 A | 2025-02-08 A | PG-10134 | 100% |  |  | L&T [880000 h] | 880,000 | 10131 |
|  | 1.3.1.1.2.16 | **Floor 13** |  | 2025-02-08 | 2025-02-25 |  |  |  |  |  |  |  |
|  | 1.3.1.1.2.16.1 | **Columns / shear walls** |  | 2025-02-08 | 2025-02-19 |  |  |  |  |  |  |  |
| PG-10136 |  | Reinforcement | 4d | 2025-02-08 A | 2025-02-14 A | PG-10135 | 100% | 2025-02-08 | 2025-02-13 | L&T [700000 h] | 700,000 | 10134 |
| PG-10137 |  | Formwork | 4d | 2025-02-14 A | 2025-02-19 A | PG-10136 FF+4d | 100% | 2025-02-13 | 2025-02-18 | L&T [320000 h] | 320,000 | 10135 |
|  | 1.3.1.1.2.16.2 | **Slab, Beams & Staircase** |  | 2025-02-18 | 2025-02-25 |  |  |  |  |  |  |  |
| PG-10138 |  | Formwork | 3d | 2025-02-18 A | 2025-02-20 A | PG-10137 FF+2d | 100% | 2025-02-17 | 2025-02-20 | L&T [220000 h] | 220,000 | 10137 |
| PG-10139 |  | Reinforcement | 3d | 2025-02-19 A | 2025-02-22 A | PG-10138 FF+2d | 100% |  |  | L&T [520000 h] | 520,000 | 10138 |
| PG-10140 |  | Concrete | 1d | 2025-02-22 A | 2025-02-25 A | PG-10139 | 100% | 2025-02-22 | 2025-02-24 | L&T [880000 h] | 880,000 | 10139 |

| ID | WBS | Activity | Duration | Start | Finish | Predecessors | Complete | Planned start | Planned finish | Resources | Cost | MSP Activity ID |
| --- | --- | --- | --- | --- | --- | --- | --- | --- | --- | --- | --- | --- |
|  | 1.3.1.1.2.17 | **Floor 14** |  | 2025-02-25 | 2025-03-12 |  |  |  |  |  |  |  |
|  | 1.3.1.1.2.17.1 | **Columns / shear walls** |  | 2025-02-25 | 2025-03-06 |  |  |  |  |  |  |  |
| PG-10141 |  | Reinforcement | 4d | 2025-02-25 A | 2025-03-01 A | PG-10140 | 100% | 2025-02-24 | 2025-02-28 | L&T [700000 h] | 700,000 | 10142 |
| PG-10142 |  | Formwork | 4d | 2025-03-01 A | 2025-03-06 A | PG-10141 FF+4d | 100% | 2025-02-28 | 2025-03-05 | L&T [320000 h] | 320,000 | 10143 |
|  | 1.3.1.1.2.17.2 | **Slab, Beams & Staircase** |  | 2025-03-05 | 2025-03-12 |  |  |  |  |  |  |  |
| PG-10143 |  | Formwork | 3d | 2025-03-05 A | 2025-03-08 A | PG-10142 FF+2d | 100% | 2025-03-04 | 2025-03-07 | L&T [220000 h] | 220,000 | 10145 |
| PG-10144 |  | Reinforcement | 3d | 2025-03-07 A | 2025-03-11 A | PG-10143 FF+2d | 100% | 2025-03-06 | 2025-03-10 | L&T [520000 h] | 520,000 | 10146 |
| PG-10145 |  | Concrete | 1d | 2025-03-11 A | 2025-03-12 A | PG-10144 | 100% | 2025-03-10 | 2025-03-11 | L&T [880000 h] | 880,000 | 10147 |
|  | 1.3.1.1.2.18 | **Floor 15** |  | 2025-03-12 | 2025-03-27 |  |  |  |  |  |  |  |
|  | 1.3.1.1.2.18.1 | **Columns / shear walls** |  | 2025-03-12 | 2025-03-21 |  |  |  |  |  |  |  |
| PG-10146 |  | Reinforcement | 4d | 2025-03-12 A | 2025-03-17 A | PG-10145 | 100% | 2025-03-11 | 2025-03-15 | L&T [700000 h] | 700,000 | 10150 |
| PG-10147 |  | Formwork | 4d | 2025-03-17 A | 2025-03-21 A | PG-10146 FF+4d | 100% | 2025-03-15 | 2025-03-20 | L&T [320000 h] | 320,000 | 10151 |
|  | 1.3.1.1.2.18.2 | **Slab, Beams & Staircase** |  | 2025-03-20 | 2025-03-27 |  |  |  |  |  |  |  |
| PG-10148 |  | Formwork | 3d | 2025-03-20 A | 2025-03-24 A | PG-10147 FF+2d | 100% | 2025-03-19 | 2025-03-22 | L&T [220000 h] | 220,000 | 10153 |
| PG-10149 |  | Reinforcement | 3d | 2025-03-22 A | 2025-03-26 A | PG-10148 FF+2d | 100% |  |  | L&T [520000 h] | 520,000 | 10154 |
| PG-10150 |  | Concrete | 1d | 2025-03-26 A | 2025-03-27 A | PG-10149 | 100% |  |  | L&T [880000 h] | 880,000 | 10155 |
|  | 1.3.1.1.2.19 | **Floor 16** |  | 2025-03-27 | 2025-04-09 |  |  |  |  |  |  |  |
|  | 1.3.1.1.2.19.1 | **Columns / shear walls** |  | 2025-03-27 | 2025-04-03 |  |  |  |  |  |  |  |
| PG-10151 |  | Reinforcement | 4d | 2025-03-27 A | 2025-04-01 A | PG-10150 | 100% |  |  | L&T [700000 h] | 700,000 | 10158 |
| PG-10152 |  | Formwork | 4d | 2025-03-29 A | 2025-04-03 A | PG-10151 FF+2d | 100% | 2025-03-28 | 2025-04-02 | L&T [320000 h] | 320,000 | 10159 |
|  | 1.3.1.1.2.19.2 | **Slab, Beams & Staircase** |  | 2025-04-02 | 2025-04-09 |  |  |  |  |  |  |  |
| PG-10153 |  | Formwork | 3d | 2025-04-02 A | 2025-04-05 A | PG-10152 FF+2d | 100% | 2025-04-01 | 2025-04-04 | L&T [220000 h] | 220,000 | 10161 |
| PG-10154 |  | Reinforcement | 3d | 2025-04-04 A | 2025-04-08 A | PG-10153 FF+2d | 100% | 2025-04-03 | 2025-04-07 | L&T [520000 h] | 520,000 | 10162 |
| PG-10155 |  | Concrete | 1d | 2025-04-08 A | 2025-04-09 A | PG-10154 | 100% |  |  | L&T [880000 h] | 880,000 | 10163 |

| ID | WBS | Activity | Duration | Start | Finish | Predecessors | Complete | Remaining | Planned start | Planned finish | Total float | Free float | Resources | Cost | MSP Activity ID |
| --- | --- | --- | --- | --- | --- | --- | --- | --- | --- | --- | --- | --- | --- | --- | --- |
|  | 1.3.1.1.2.20 | **Floor 17** |  | 2025-04-09 | 2025-04-22 |  |  |  |  |  |  |  |  |  |  |
|  | 1.3.1.1.2.20.1 | **Columns / shear walls** |  | 2025-04-09 | 2025-04-16 |  |  |  |  |  |  |  |  |  |  |
| PG-10156 |  | Reinforcement | 4d | 2025-04-09 A | 2025-04-15 A | PG-10155 | 100% |  | 2025-04-09 | 2025-04-14 |  |  | L&T [700000 h] | 700,000 | 10166 |
| PG-10157 |  | Formwork | 4d | 2025-04-12 A | 2025-04-16 A | PG-10156 FF+2d | 100% |  | 2025-04-11 | 2025-04-16 |  |  | L&T [320000 h] | 320,000 | 10167 |
|  | 1.3.1.1.2.20.2 | **Slab, Beams & Staircase** |  | 2025-04-15 | 2025-04-22 |  |  |  |  |  |  |  |  |  |  |
| PG-10158 |  | Formwork | 3d | 2025-04-15 A | 2025-04-19 A | PG-10157 FF+2d | 100% |  | 2025-04-15 | 2025-04-18 |  |  | L&T [220000 h] | 220,000 | 10169 |
| PG-10159 |  | Reinforcement | 3d | 2025-04-18 A | 2025-04-21 A | PG-10158 FF+2d | 100% |  | 2025-04-17 | 2025-04-21 |  |  | L&T [520000 h] | 520,000 | 10170 |
| PG-10160 |  | Concrete | 1d | 2025-04-21 A | 2025-04-22 A | PG-10159 | 100% |  |  |  |  |  | L&T [880000 h] | 880,000 | 10171 |
|  | 1.3.1.1.2.21 | **Floor 18** |  | 2025-04-22 | 2025-05-03 |  |  |  |  |  |  |  |  |  |  |
|  | 1.3.1.1.2.21.1 | **Columns / shear walls** |  | 2025-04-22 | 2025-04-28 |  |  |  |  |  |  |  |  |  |  |
| PG-10161 |  | Reinforcement | 4d | 2025-04-22 A | 2025-04-25 | PG-10160 | 79% | 0.84d | 2025-04-22 | 2025-04-26 | 44.83d | 0d | L&T [700000 h] | 700,000 | 10174 |
| PG-10162 |  | Formwork | 4d | 2025-04-24 A | 2025-04-28 | PG-10161 FF+2d | 31% | 2.74d | 2025-04-24 | 2025-04-29 | 44.83d | 0d | L&T [320000 h] | 320,000 | 10175 |
|  | 1.3.1.1.2.21.2 | **Slab, Beams & Staircase** |  | 2025-04-26 | 2025-05-03 |  |  |  |  |  |  |  |  |  |  |
| PG-10163 |  | Formwork | 3d | 2025-04-26 | 2025-04-30 | PG-10162 FF+2d |  |  |  |  | 44.83d | 0d | L&T [220000 h] | 220,000 | 10177 |
| PG-10164 |  | Reinforcement | 3d | 2025-04-29 | 2025-05-02 | PG-10163 FF+2d |  |  |  |  | 44.83d | 0d | L&T [520000 h] | 520,000 | 10178 |
| PG-10165 |  | Concrete | 1d | 2025-05-02 | 2025-05-03 | PG-10164 |  |  |  |  | 44.83d | 0d | L&T [880000 h] | 880,000 | 10179 |
|  | 1.3.1.1.2.22 | **Floor 19** |  | 2025-05-03 | 2025-05-16 |  |  |  |  |  |  |  |  |  |  |
|  | 1.3.1.1.2.22.1 | **Columns / shear walls** |  | 2025-05-03 | 2025-05-10 |  |  |  |  |  |  |  |  |  |  |
| PG-10166 |  | Reinforcement | 4d | 2025-05-03 | 2025-05-08 | PG-10165 |  |  |  |  | 44.83d | 0d | L&T [700000 h] | 700,000 | 10182 |
| PG-10167 |  | Formwork | 4d | 2025-05-06 | 2025-05-10 | PG-10166 FF+2d |  |  |  |  | 44.83d | 0d | L&T [320000 h] | 320,000 | 10183 |
|  | 1.3.1.1.2.22.2 | **Slab, Beams & Staircase** |  | 2025-05-09 | 2025-05-16 |  |  |  |  |  |  |  |  |  |  |
| PG-10168 |  | Formwork | 3d | 2025-05-09 | 2025-05-13 | PG-10167 FF+2d |  |  |  |  | 44.83d | 0d | L&T [220000 h] | 220,000 | 10185 |
| PG-10169 |  | Reinforcement | 3d | 2025-05-12 | 2025-05-15 | PG-10168 FF+2d |  |  |  |  | 44.83d | 0d | L&T [520000 h] | 520,000 | 10186 |
| PG-10170 |  | Concrete | 1d | 2025-05-15 | 2025-05-16 | PG-10169 |  |  |  |  | 44.83d | 0d | L&T [880000 h] | 880,000 | 10187 |

| ID | WBS | Activity | Duration | Start | Finish | Predecessors | Total float | Free float | Resources | Cost | MSP Activity ID |
| --- | --- | --- | --- | --- | --- | --- | --- | --- | --- | --- | --- |
|  | 1.3.1.1.2.23 | **Floor 20** |  | 2025-05-16 | 2025-05-29 |  |  |  |  |  |  |
|  | 1.3.1.1.2.23.1 | **Columns / shear walls** |  | 2025-05-16 | 2025-05-23 |  |  |  |  |  |  |
| PG-10171 |  | Reinforcement | 4d | 2025-05-16 | 2025-05-21 | PG-10170 | 44.83d | 0d | L&T [700000 h] | 700,000 | 10190 |
| PG-10172 |  | Formwork | 4d | 2025-05-19 | 2025-05-23 | PG-10171 FF+2d | 44.83d | 0d | L&T [320000 h] | 320,000 | 10191 |
|  | 1.3.1.1.2.23.2 | **Slab, Beams & Staircase** |  | 2025-05-22 | 2025-05-29 |  |  |  |  |  |  |
| PG-10173 |  | Formwork | 3d | 2025-05-22 | 2025-05-26 | PG-10172 FF+2d | 44.83d | 0d | L&T [220000 h] | 220,000 | 10193 |
| PG-10174 |  | Reinforcement | 3d | 2025-05-24 | 2025-05-28 | PG-10173 FF+2d | 44.83d | 0d | L&T [520000 h] | 520,000 | 10194 |
| PG-10175 |  | Concrete | 1d | 2025-05-28 | 2025-05-29 | PG-10174 | 44.83d | 0d | L&T [880000 h] | 880,000 | 10195 |
|  | 1.3.1.1.2.24 | **Floor 21** |  | 2025-05-29 | 2025-06-11 |  |  |  |  |  |  |
|  | 1.3.1.1.2.24.1 | **Columns / shear walls** |  | 2025-05-29 | 2025-06-05 |  |  |  |  |  |  |
| PG-10176 |  | Reinforcement | 4d | 2025-05-29 | 2025-06-03 | PG-10175 | 44.83d | 0d | L&T [700000 h] | 700,000 | 10198 |
| PG-10177 |  | Formwork | 4d | 2025-05-31 | 2025-06-05 | PG-10176 FF+2d | 44.83d | 0d | L&T [320000 h] | 320,000 | 10199 |
|  | 1.3.1.1.2.24.2 | **Slab, Beams & Staircase** |  | 2025-06-04 | 2025-06-11 |  |  |  |  |  |  |
| PG-10178 |  | Formwork | 3d | 2025-06-04 | 2025-06-07 | PG-10177 FF+2d | 44.83d | 0d | L&T [220000 h] | 220,000 | 10201 |
| PG-10179 |  | Reinforcement | 3d | 2025-06-06 | 2025-06-10 | PG-10178 FF+2d | 44.83d | 0d | L&T [520000 h] | 520,000 | 10202 |
| PG-10180 |  | Concrete | 1d | 2025-06-10 | 2025-06-11 | PG-10179 | 44.83d | 0d | L&T [880000 h] | 880,000 | 10203 |
|  | 1.3.1.1.2.25 | **Floor 22** |  | 2025-06-11 | 2025-06-24 |  |  |  |  |  |  |
|  | 1.3.1.1.2.25.1 | **Columns / shear walls** |  | 2025-06-11 | 2025-06-18 |  |  |  |  |  |  |
| PG-10181 |  | Reinforcement | 4d | 2025-06-11 | 2025-06-16 | PG-10180 | 44.83d | 0d | L&T [700000 h] | 700,000 | 10206 |
| PG-10182 |  | Formwork | 4d | 2025-06-13 | 2025-06-18 | PG-10181 FF+2d | 44.83d | 0d | L&T [320000 h] | 320,000 | 10207 |
|  | 1.3.1.1.2.25.2 | **Slab, Beams & Staircase** |  | 2025-06-17 | 2025-06-24 |  |  |  |  |  |  |
| PG-10183 |  | Formwork | 3d | 2025-06-17 | 2025-06-20 | PG-10182 FF+2d | 44.83d | 0d | L&T [220000 h] | 220,000 | 10209 |
| PG-10184 |  | Reinforcement | 3d | 2025-06-19 | 2025-06-23 | PG-10183 FF+2d | 44.83d | 0d | L&T [520000 h] | 520,000 | 10210 |
| PG-10185 |  | Concrete | 1d | 2025-06-23 | 2025-06-24 | PG-10184 | 44.83d | 0d | L&T [880000 h] | 880,000 | 10211 |

| ID | WBS | Activity | Duration | Start | Finish | Predecessors | Complete | Planned start | Planned finish | Total float | Free float | Resources | Cost | MSP Activity ID |
| --- | --- | --- | --- | --- | --- | --- | --- | --- | --- | --- | --- | --- | --- | --- |
|  | 1.3.1.1.2.26 | **Floor 23** |  | 2025-06-24 | 2025-07-07 |  |  |  |  |  |  |  |  |  |
|  | 1.3.1.1.2.26.1 | **Columns / shear walls** |  | 2025-06-24 | 2025-07-01 |  |  |  |  |  |  |  |  |  |
| PG-10186 |  | Reinforcement | 4d | 2025-06-24 | 2025-06-28 | PG-10185 |  |  |  | 44.83d | 0d | L&T [700000 h] | 700,000 | 10214 |
| PG-10187 |  | Formwork | 4d | 2025-06-26 | 2025-07-01 | PG-10186 FF+2d |  |  |  | 44.83d | 0d | L&T [320000 h] | 320,000 | 10215 |
|  | 1.3.1.1.2.26.2 | **Slab, Beams & Staircase** |  | 2025-06-30 | 2025-07-07 |  |  |  |  |  |  |  |  |  |
| PG-10188 |  | Formwork | 3d | 2025-06-30 | 2025-07-03 | PG-10187 FF+2d |  |  |  | 44.83d | 0d | L&T [220000 h] | 220,000 | 10217 |
| PG-10189 |  | Reinforcement | 3d | 2025-07-02 | 2025-07-05 | PG-10188 FF+2d |  |  |  | 44.83d | 0d | L&T [520000 h] | 520,000 | 10218 |
| PG-10190 |  | Concrete | 1d | 2025-07-05 | 2025-07-07 | PG-10189 |  |  |  | 44.83d | 0d | L&T [880000 h] | 880,000 | 10219 |
|  | 1.3.1.1.2.27 | **Above Terrace Floor** |  | 2025-07-07 | 2025-08-16 |  |  |  |  |  |  |  |  |  |
|  | 1.3.1.1.2.27.1 | **Columns / shear walls/Parapet Walls** |  | 2025-07-07 | 2025-07-21 |  |  |  |  |  |  |  |  |  |
| PG-10191 |  | Reinforcement | 4d | 2025-07-07 | 2025-07-11 | PG-10190 |  |  |  | 122.33d | 0d | L&T [160000 h] | 160,000 | 10318 |
| PG-10192 |  | Formwork | 5d | 2025-07-09 | 2025-07-15 | PG-10191 FF+3d |  |  |  | 122.33d | 0d | L&T [200000 h] | 200,000 | 10319 |
| PG-10193 |  | Concrete | 5d | 2025-07-15 | 2025-07-21 | PG-10192 |  |  |  | 122.33d | 0d | L&T [200000 h] | 200,000 | 10320 |
|  | 1.3.1.1.2.27.2 | **Slab, Beams & Staircase Head rooms, Lift headroom** |  | 2025-07-11 | 2025-08-16 |  |  |  |  |  |  |  |  |  |
| PG-10197 |  | Terrace Waterproofing and Protective finishing. | 30d | 2025-07-11 | 2025-08-16 | PG-10196 FF+10d |  |  |  | 247.49d | 0d | L&T [1200000 h] | 1,200,000 | 10325 |
| PG-10194 |  | Formwork | 5d | 2025-07-21 | 2025-07-26 | PG-10193 |  |  |  | 247.49d | 0d | L&T [200000 h] | 200,000 | 10322 |
| PG-10195 |  | Reinforcement | 5d | 2025-07-26 | 2025-08-01 | PG-10194 FF+5d |  |  |  | 247.49d | 0d | L&T [200000 h] | 200,000 | 10323 |
| PG-10196 |  | Concrete | 2d | 2025-08-01 | 2025-08-04 | PG-10195 |  |  |  | 247.49d | 0d | L&T [80000 h] | 80,000 | 10324 |
|  | 1.3.1.1.3 | **MEP Internal works** |  | 2024-10-24 | 2026-01-16 |  |  |  |  |  |  |  |  |  |
|  | 1.3.1.1.3.1 | **LBF** |  | 2024-10-24 | 2025-01-07 |  |  |  |  |  |  |  |  |  |
| PG-10198 |  | Surface Drainage System (Chambers and Pipeline for Sump) | 15d | 2024-10-24 A | 2024-11-12 A | PG-10100 | 100% |  |  |  |  | L&T [600000 h] | 600,000 | 11422 |
| PG-10199 |  | Pump fixing for collection sump | 2d | 2024-12-05 A | 2024-12-07 A | PG-10422 | 100% |  |  |  |  | L&T [80000 h] | 80,000 | 11423 |
| PG-10200 |  | FPS Piping and Sprinkler Fixing works | 9.67d | 2024-12-23 A | 2025-01-03 A | PG-10199, PG-10425 FF+5d | 100% | 2024-12-23 | 2025-01-02 |  |  | Nexus (Fire) [309000 h] | 309,000 | 11424 |
| PG-10201 |  | Electrical Conducting and Light Fixing works | 9.67d | 2024-12-25 A | 2025-01-07 A | PG-10425 FF+7d | 100% | 2024-12-25 | 2025-01-04 |  |  | Elexir (Electrical) [309000 h] | 309,000 | 11425 |

| ID | WBS | Activity | Duration | Start | Finish | Predecessors | Complete | Planned start | Planned finish | Resources | Cost | MSP Activity ID |
| --- | --- | --- | --- | --- | --- | --- | --- | --- | --- | --- | --- | --- |
|  | 1.3.1.1.3.2 | **UBF** |  | 2024-12-17 | 2025-01-24 |  |  |  |  |  |  |  |
| PG-10202 |  | Piping for Rainwater and Soil lines in Ceiling | 20d | 2024-12-17 A | 2025-01-09 A | PG-10425 FF+10d | 100% |  |  | Santech (Plumbing) [640000 h] | 640,000 | 11427 |
| PG-10203 |  | FPS Piping and Sprinkler Fixing works | 9.67d | 2025-01-01 A | 2025-01-13 A | PG-12710 FF+5d, PG-10200 FF+5d | 100% | 2024-12-31 | 2025-01-10 | Nexus (Fire) [309000 h] | 309,000 | 11429 |
| PG-10204 |  | Electrical Conducting and Light Fixing works | 9.67d | 2025-01-13 A | 2025-01-24 A | PG-10203, PG-12711 FF+5d, PG-10201 FF+5d | 100% | 2025-01-11 | 2025-01-22 | Elexir (Electrical) [309000 h] | 309,000 | 11430 |
|  | 1.3.1.1.3.3 | **Ground Floor** |  | 2024-10-24 | 2025-01-15 |  |  |  |  |  |  |  |
|  | 1.3.1.1.3.3.1 | **PHE Works** |  | 2024-10-24 | 2025-01-14 |  |  |  |  |  |  |  |
| PG-10205 |  | 1st Fix - Piping works | 12d | 2024-10-24 A | 2024-11-08 A | PG-10100 | 100% |  |  | Santech (Plumbing) [245000 h] | 245,000 | 11441 |
| PG-10206 |  | 2nd Fix - diverter fixing & Pressure testing | 10d | 2024-11-04 A | 2024-11-15 A | PG-10205 FF+6d | 100% |  |  | Santech (Plumbing) [124000 h] | 124,000 | 11442 |
| PG-10207 |  | Final Fix - CP & Sanitary fixtures | 10.5d | 2025-01-02 A | 2025-01-14 A | PG-10435, PG-10441 FF+6d | 100% | 2025-01-01 | 2025-01-13 | Santech (Plumbing) [330000 h] | 330,000 | 11443 |
|  | 1.3.1.1.3.3.2 | **Fire Fighting Works** |  | 2024-11-04 | 2025-01-15 |  |  |  |  |  |  |  |
| PG-10208 |  | 1st Fix - Piping and Shaft hydrant works | 11.67d | 2024-11-04 A | 2024-11-18 A | PG-10432 FF+6d | 100% | 2024-11-04 | 2024-11-16 | Nexus (Fire) [162000 h] | 162,000 | 11445 |
| PG-10209 |  | 2nd Fix - Sprinkler fixing & Pressure testing | 9.67d | 2024-12-11 A | 2024-12-23 A | PG-10440 FF+6d | 100% | 2024-12-11 | 2024-12-21 | Nexus (Fire) [145000 h] | 145,000 | 11446 |
| PG-10210 |  | Final Fix - Smoke & heat detectors, FHC , FAS Etc. | 9.67d | 2025-01-02 A | 2025-01-15 A | PG-10209, PG-10441 FF+6d | 100% | 2025-01-02 | 2025-01-13 | Nexus (Fire) [185000 h] | 185,000 | 11447 |
|  | 1.3.1.1.3.3.3 | **Electrical Works** |  | 2024-10-24 | 2025-01-15 |  |  |  |  |  |  |  |
| PG-10211 |  | 1st Fix - GI wire pulling | 8d | 2024-10-24 A | 2024-11-04 A | PG-10100 | 100% |  |  | Elexir (Electrical) [165000 h] | 165,000 | 11449 |
| PG-10212 |  | 2nd Fix - Wiring works | 14.67d | 2024-12-04 A | 2024-12-23 A | PG-10440 FF+5d | 100% | 2024-12-04 | 2024-12-20 | Elexir (Electrical) [248000 h] | 248,000 | 11452 |
| PG-10213 |  | Final Fix - Electrical Fixtures | 5.67d | 2025-01-08 A | 2025-01-15 A | PG-10212, PG-10441 FF+6d | 100% | 2025-01-07 | 2025-01-13 | Elexir (Electrical) [205000 h] | 205,000 | 11450 |
|  | 1.3.1.1.3.4 | **Floor 1** |  | 2024-11-09 | 2025-02-01 |  |  |  |  |  |  |  |
|  | 1.3.1.1.3.4.1 | **PHE Works** |  | 2024-11-09 | 2025-02-01 |  |  |  |  |  |  |  |
| PG-10214 |  | 1st Fix - Piping works | 12d | 2024-11-09 A | 2024-11-23 A | PG-10105 | 100% |  |  | Santech (Plumbing) [245000 h] | 245,000 | 12173 |
| PG-10215 |  | 2nd Fix - diverter fixing & Pressure testing | 10d | 2024-11-19 A | 2024-11-30 A | PG-10214 FF+6d | 100% |  |  | Santech (Plumbing) [124000 h] | 124,000 | 12174 |
| PG-10216 |  | Final Fix - CP & Sanitary fixtures | 9.67d | 2025-01-20 A | 2025-02-01 A | PG-10449, PG-10455 FF+6d | 100% | 2025-01-17 | 2025-01-28 | Santech (Plumbing) [330000 h] | 330,000 | 12175 |
|  | 1.3.1.1.3.4.2 | **Fire Fighting Works** |  | 2024-11-19 | 2025-01-31 |  |  |  |  |  |  |  |
| PG-10217 |  | 1st Fix - Piping and Shaft hydrant works | 11.67d | 2024-11-19 A | 2024-12-03 A | PG-10446 FF+6d | 100% | 2024-11-19 | 2024-12-02 | Nexus (Fire) [162000 h] | 162,000 | 12177 |
| PG-10218 |  | 2nd Fix - Sprinkler fixing & Pressure testing | 9.67d | 2024-12-27 A | 2025-01-08 A | PG-10454 FF+6d | 100% | 2024-12-26 | 2025-01-06 | Nexus (Fire) [145000 h] | 145,000 | 12178 |
| PG-10219 |  | Final Fix - Smoke & heat detectors, FHC , FAS Etc. | 9.67d | 2025-01-20 A | 2025-01-31 A | PG-10218, PG-10455 FF+6d | 100% | 2025-01-17 | 2025-01-28 | Nexus (Fire) [185000 h] | 185,000 | 12179 |

| ID | WBS | Activity | Duration | Start | Finish | Predecessors | Complete | Planned start | Planned finish | Resources | Cost | MSP Activity ID |
| --- | --- | --- | --- | --- | --- | --- | --- | --- | --- | --- | --- | --- |
|  | 1.3.1.1.3.4.3 | **Electrical Works** |  | 2024-11-09 | 2025-01-31 |  |  |  |  |  |  |  |
| PG-10220 |  | 1st Fix - GI wire pulling | 8d | 2024-11-09 A | 2024-11-19 A | PG-10105 | 100% |  |  | Elexir (Electrical) [165000 h] | 165,000 | 12181 |
| PG-10221 |  | 2nd Fix - Wiring works | 14.67d | 2024-12-20 A | 2025-01-06 A | PG-10454 FF+5d | 100% | 2024-12-19 | 2025-01-04 | Elexir (Electrical) [248000 h] | 248,000 | 12182 |
| PG-10222 |  | Final Fix - Electrical Fixtures | 5.67d | 2025-01-24 A | 2025-01-31 A | PG-10221, PG-10455 FF+6d | 100% | 2025-01-22 | 2025-01-28 | Elexir (Electrical) [205000 h] | 205,000 | 12183 |
|  | 1.3.1.1.3.5 | **Floor 2** |  | 2024-11-25 | 2025-02-14 |  |  |  |  |  |  |  |
|  | 1.3.1.1.3.5.1 | **PHE Works** |  | 2024-11-25 | 2025-02-14 |  |  |  |  |  |  |  |
| PG-10223 |  | 1st Fix - Piping works | 12d | 2024-11-25 A | 2024-12-09 A | PG-10110 | 100% |  |  | Santech (Plumbing) [245000 h] | 245,000 | 12222 |
| PG-10224 |  | 2nd Fix - diverter fixing & Pressure testing | 10d | 2024-12-04 A | 2024-12-16 A | PG-10223 FF+6d | 100% |  |  | Santech (Plumbing) [124000 h] | 124,000 | 12223 |
| PG-10225 |  | Final Fix - CP & Sanitary fixtures | 9.67d | 2025-02-03 A | 2025-02-14 A | PG-10463, PG-10469 FF+6d | 100% | 2025-02-01 | 2025-02-12 | Santech (Plumbing) [330000 h] | 330,000 | 12224 |
|  | 1.3.1.1.3.5.2 | **Fire Fighting Works** |  | 2024-12-04 | 2025-02-14 |  |  |  |  |  |  |  |
| PG-10226 |  | 1st Fix - Piping and Shaft hydrant works | 11.67d | 2024-12-04 A | 2024-12-19 A | PG-10460 FF+6d | 100% | 2024-12-04 | 2024-12-17 | Nexus (Fire) [162000 h] | 162,000 | 12226 |
| PG-10227 |  | 2nd Fix - Sprinkler fixing & Pressure testing | 9.67d | 2025-01-10 A | 2025-01-22 A | PG-10468 FF+6d | 100% | 2025-01-10 | 2025-01-21 | Nexus (Fire) [145000 h] | 145,000 | 12227 |
| PG-10228 |  | Final Fix - Smoke & heat detectors, FHC , FAS Etc. | 9.67d | 2025-02-03 A | 2025-02-14 A | PG-10227, PG-10469 FF+6d | 100% | 2025-02-01 | 2025-02-12 | Nexus (Fire) [185000 h] | 185,000 | 12228 |
|  | 1.3.1.1.3.5.3 | **Electrical Works** |  | 2024-11-25 | 2025-02-14 |  |  |  |  |  |  |  |
| PG-10229 |  | 1st Fix - GI wire pulling | 8d | 2024-11-25 A | 2024-12-04 A | PG-10110 | 100% |  |  | Elexir (Electrical) [165000 h] | 165,000 | 12230 |
| PG-10230 |  | 2nd Fix - Wiring works | 14.67d | 2025-01-03 A | 2025-01-20 A | PG-10468 FF+5d | 100% |  |  | Elexir (Electrical) [248000 h] | 248,000 | 12231 |
| PG-10231 |  | Final Fix - Electrical Fixtures | 5.83d | 2025-02-07 A | 2025-02-14 A | PG-10230, PG-10469 FF+6d | 100% | 2025-02-06 | 2025-02-12 | Elexir (Electrical) [205000 h] | 205,000 | 12232 |
|  | 1.3.1.1.3.6 | **Floor 3** |  | 2024-12-10 | 2025-03-04 |  |  |  |  |  |  |  |
|  | 1.3.1.1.3.6.1 | **PHE Works** |  | 2024-12-10 | 2025-03-04 |  |  |  |  |  |  |  |
| PG-10232 |  | 1st Fix - Piping works | 12d | 2024-12-10 A | 2024-12-24 A | PG-10115 | 100% |  |  | Santech (Plumbing) [245000 h] | 245,000 | 12235 |
| PG-10233 |  | 2nd Fix - diverter fixing & Pressure testing | 10d | 2024-12-19 A | 2025-01-01 A | PG-10232 FF+6d | 100% | 2024-12-19 | 2024-12-31 | Santech (Plumbing) [124000 h] | 124,000 | 12236 |
| PG-10234 |  | Final Fix - CP & Sanitary fixtures | 9.67d | 2025-02-20 A | 2025-03-04 A | PG-10477, PG-10483 FF+6d | 100% | 2025-02-18 | 2025-02-28 | Santech (Plumbing) [330000 h] | 330,000 | 12237 |
|  | 1.3.1.1.3.6.2 | **Fire Fighting Works** |  | 2024-12-19 | 2025-03-04 |  |  |  |  |  |  |  |
| PG-10235 |  | 1st Fix - Piping and Shaft hydrant works | 11.67d | 2024-12-19 A | 2025-01-02 A | PG-10474 FF+6d | 100% | 2024-12-19 | 2025-01-01 | Nexus (Fire) [162000 h] | 162,000 | 12239 |
| PG-10236 |  | 2nd Fix - Sprinkler fixing & Pressure testing | 9.67d | 2025-01-27 A | 2025-02-06 A | PG-10482 FF+6d | 100% | 2025-01-25 | 2025-02-05 | Nexus (Fire) [145000 h] | 145,000 | 12240 |
| PG-10237 |  | Final Fix - Smoke & heat detectors, FHC , FAS Etc. | 9.67d | 2025-02-20 A | 2025-03-04 A | PG-10236, PG-10483 FF+6d | 100% | 2025-02-18 | 2025-02-28 | Nexus (Fire) [185000 h] | 185,000 | 12241 |

| ID | WBS | Activity | Duration | Start | Finish | Predecessors | Complete | Planned start | Planned finish | Resources | Cost | MSP Activity ID |
| --- | --- | --- | --- | --- | --- | --- | --- | --- | --- | --- | --- | --- |
|  | 1.3.1.1.3.6.3 | **Electrical Works** |  | 2024-12-10 | 2025-03-04 |  |  |  |  |  |  |  |
| PG-10238 |  | 1st Fix - GI wire pulling | 8d | 2024-12-10 A | 2024-12-19 A | PG-10115 | 100% |  |  | Elexir (Electrical) [165000 h] | 165,000 | 12243 |
| PG-10239 |  | 2nd Fix - Wiring works | 14.67d | 2025-01-20 A | 2025-02-05 A | PG-10482 FF+5d | 100% | 2025-01-18 | 2025-02-04 | Elexir (Electrical) [248000 h] | 248,000 | 12244 |
| PG-10240 |  | Final Fix - Electrical Fixtures | 5.67d | 2025-02-25 A | 2025-03-04 A | PG-10239, PG-10483 FF+6d | 100% | 2025-02-22 | 2025-02-28 | Elexir (Electrical) [205000 h] | 205,000 | 12245 |
|  | 1.3.1.1.3.7 | **Floor 4** |  | 2024-12-25 | 2025-03-17 |  |  |  |  |  |  |  |
|  | 1.3.1.1.3.7.1 | **PHE Works** |  | 2024-12-25 | 2025-03-17 |  |  |  |  |  |  |  |
| PG-10241 |  | 1st Fix - Piping works | 12d | 2024-12-25 A | 2025-01-09 A | PG-10120 | 100% | 2024-12-25 | 2025-01-08 | Santech (Plumbing) [245000 h] | 245,000 | 12266 |
| PG-10242 |  | 2nd Fix - diverter fixing & Pressure testing | 10d | 2025-01-04 A | 2025-01-15 A | PG-10241 FF+6d | 100% | 2025-01-03 | 2025-01-15 | Santech (Plumbing) [124000 h] | 124,000 | 12267 |
| PG-10243 |  | Final Fix - CP & Sanitary fixtures | 9.67d | 2025-03-05 A | 2025-03-17 A | PG-10491, PG-10497 FF+6d | 100% | 2025-03-04 | 2025-03-14 | Santech (Plumbing) [330000 h] | 330,000 | 12268 |
|  | 1.3.1.1.3.7.2 | **Fire Fighting Works** |  | 2025-01-04 | 2025-03-17 |  |  |  |  |  |  |  |
| PG-10244 |  | 1st Fix - Piping and Shaft hydrant works | 11.67d | 2025-01-04 A | 2025-01-17 A | PG-10488 FF+6d | 100% | 2025-01-03 | 2025-01-16 | Nexus (Fire) [162000 h] | 162,000 | 12270 |
| PG-10245 |  | 2nd Fix - Sprinkler fixing & Pressure testing | 9.67d | 2025-02-10 A | 2025-02-21 A | PG-10496 FF+6d | 100% | 2025-02-10 | 2025-02-20 | Nexus (Fire) [145000 h] | 145,000 | 12271 |
| PG-10246 |  | Final Fix - Smoke & heat detectors, FHC , FAS Etc. | 9.67d | 2025-03-05 A | 2025-03-17 A | PG-10245, PG-10497 FF+6d | 100% | 2025-03-04 | 2025-03-14 | Nexus (Fire) [185000 h] | 185,000 | 12272 |
|  | 1.3.1.1.3.7.3 | **Electrical Works** |  | 2024-12-25 | 2025-03-17 |  |  |  |  |  |  |  |
| PG-10247 |  | 1st Fix - GI wire pulling | 8d | 2024-12-25 A | 2025-01-03 A | PG-10120 | 100% |  |  | Elexir (Electrical) [165000 h] | 165,000 | 12274 |
| PG-10248 |  | 2nd Fix - Wiring works | 14.67d | 2025-02-03 A | 2025-02-19 A | PG-10496 FF+5d | 100% |  |  | Elexir (Electrical) [248000 h] | 248,000 | 12275 |
| PG-10249 |  | Final Fix - Electrical Fixtures | 5.67d | 2025-03-11 A | 2025-03-17 A | PG-10248, PG-10497 FF+6d | 100% | 2025-03-08 | 2025-03-14 | Elexir (Electrical) [205000 h] | 205,000 | 12276 |
|  | 1.3.1.1.3.8 | **Floor 5** |  | 2025-01-09 | 2025-04-02 |  |  |  |  |  |  |  |
|  | 1.3.1.1.3.8.1 | **PHE Works** |  | 2025-01-09 | 2025-04-01 |  |  |  |  |  |  |  |
| PG-10250 |  | 1st Fix - Piping works | 12d | 2025-01-09 A | 2025-01-22 A | PG-10125 | 100% | 2025-01-09 | 2025-01-23 | Santech (Plumbing) [245000 h] | 245,000 | 12297 |
| PG-10251 |  | 2nd Fix - diverter fixing & Pressure testing | 10d | 2025-01-18 A | 2025-01-30 A | PG-10250 FF+6d | 100% |  |  | Santech (Plumbing) [124000 h] | 124,000 | 12298 |
| PG-10252 |  | Final Fix - CP & Sanitary fixtures | 9.67d | 2025-03-20 A | 2025-04-01 A | PG-10505, PG-10511 FF+6d | 100% | 2025-03-19 | 2025-03-29 | Santech (Plumbing) [330000 h] | 330,000 | 12299 |
|  | 1.3.1.1.3.8.2 | **Fire Fighting Works** |  | 2025-01-18 | 2025-04-02 |  |  |  |  |  |  |  |
| PG-10253 |  | 1st Fix - Piping and Shaft hydrant works | 11.67d | 2025-01-18 A | 2025-02-01 A | PG-10502 FF+6d | 100% | 2025-01-18 | 2025-01-31 | Nexus (Fire) [162000 h] | 162,000 | 12301 |
| PG-10254 |  | 2nd Fix - Sprinkler fixing & Pressure testing | 9.67d | 2025-02-26 A | 2025-03-08 A | PG-10510 FF+6d | 100% | 2025-02-25 | 2025-03-07 | Nexus (Fire) [145000 h] | 145,000 | 12302 |
| PG-10255 |  | Final Fix - Smoke & heat detectors, FHC , FAS Etc. | 9.67d | 2025-03-20 A | 2025-04-02 A | PG-10254, PG-10511 FF+6d | 100% | 2025-03-19 | 2025-03-29 | Nexus (Fire) [185000 h] | 185,000 | 12303 |

| ID | WBS | Activity | Duration | Start | Finish | Predecessors | Complete | Remaining | Planned start | Planned finish | Total float | Free float | Resources | Cost | MSP Activity ID |
| --- | --- | --- | --- | --- | --- | --- | --- | --- | --- | --- | --- | --- | --- | --- | --- |
|  | 1.3.1.1.3.8.3 | **Electrical Works** |  | 2025-01-09 | 2025-04-02 |  |  |  |  |  |  |  |  |  |  |
| PG-10256 |  | 1st Fix - GI wire pulling | 8d | 2025-01-09 A | 2025-01-18 A | PG-10125 | 100% |  |  |  |  |  | Elexir (Electrical) [165000 h] | 165,000 | 12305 |
| PG-10257 |  | 2nd Fix - Wiring works | 14.67d | 2025-02-19 A | 2025-03-10 A | PG-10510 FF+5d | 100% |  | 2025-02-18 | 2025-03-06 |  |  | Elexir (Electrical) [248000 h] | 248,000 | 12306 |
| PG-10258 |  | Final Fix - Electrical Fixtures | 5.83d | 2025-03-25 A | 2025-04-02 A | PG-10257, PG-10511 FF+6d | 100% |  | 2025-03-25 | 2025-03-31 |  |  | Elexir (Electrical) [205000 h] | 205,000 | 12307 |
|  | 1.3.1.1.3.9 | **Floor 6** |  | 2025-01-24 | 2025-04-17 |  |  |  |  |  |  |  |  |  |  |
|  | 1.3.1.1.3.9.1 | **PHE Works** |  | 2025-01-24 | 2025-04-17 |  |  |  |  |  |  |  |  |  |  |
| PG-10259 |  | 1st Fix - Piping works | 12d | 2025-01-24 A | 2025-02-08 A | PG-10130 | 100% |  | 2025-01-24 | 2025-02-07 |  |  | Santech (Plumbing) [245000 h] | 245,000 | 12328 |
| PG-10260 |  | 2nd Fix - diverter fixing & Pressure testing | 10d | 2025-02-04 A | 2025-02-15 A | PG-10259 FF+6d | 100% |  | 2025-02-03 | 2025-02-14 |  |  | Santech (Plumbing) [124000 h] | 124,000 | 12329 |
| PG-10261 |  | Final Fix - CP & Sanitary fixtures | 9.67d | 2025-04-05 A | 2025-04-17 A | PG-10519, PG-10525 FF+6d | 100% |  | 2025-04-04 | 2025-04-16 |  |  | Santech (Plumbing) [330000 h] | 330,000 | 12330 |
|  | 1.3.1.1.3.9.2 | **Fire Fighting Works** |  | 2025-02-03 | 2025-04-17 |  |  |  |  |  |  |  |  |  |  |
| PG-10262 |  | 1st Fix - Piping and Shaft hydrant works | 11.67d | 2025-02-03 A | 2025-02-17 A | PG-10516 FF+6d | 100% |  | 2025-02-03 | 2025-02-15 |  |  | Nexus (Fire) [162000 h] | 162,000 | 12332 |
| PG-10263 |  | 2nd Fix - Sprinkler fixing & Pressure testing | 9.67d | 2025-03-12 A | 2025-03-24 A | PG-10524 FF+6d | 100% |  | 2025-03-12 | 2025-03-22 |  |  | Nexus (Fire) [145000 h] | 145,000 | 12333 |
| PG-10264 |  | Final Fix - Smoke & heat detectors, FHC , FAS Etc. | 9.67d | 2025-04-05 A | 2025-04-17 A | PG-10263, PG-10525 FF+6d | 100% |  | 2025-04-04 | 2025-04-16 |  |  | Nexus (Fire) [185000 h] | 185,000 | 12334 |
|  | 1.3.1.1.3.9.3 | **Electrical Works** |  | 2025-01-24 | 2025-04-17 |  |  |  |  |  |  |  |  |  |  |
| PG-10265 |  | 1st Fix - GI wire pulling | 8d | 2025-01-24 A | 2025-02-03 A | PG-10130 | 100% |  |  |  |  |  | Elexir (Electrical) [165000 h] | 165,000 | 12336 |
| PG-10266 |  | 2nd Fix - Wiring works | 14.67d | 2025-03-05 A | 2025-03-22 A | PG-10524 FF+5d | 100% |  | 2025-03-05 | 2025-03-21 |  |  | Elexir (Electrical) [248000 h] | 248,000 | 12337 |
| PG-10267 |  | Final Fix - Electrical Fixtures | 5.67d | 2025-04-10 A | 2025-04-17 A | PG-10266, PG-10525 FF+6d | 100% |  | 2025-04-09 | 2025-04-16 |  |  | Elexir (Electrical) [205000 h] | 205,000 | 12338 |
|  | 1.3.1.1.3.10 | **Floor 7** |  | 2025-02-08 | 2025-05-02 |  |  |  |  |  |  |  |  |  |  |
|  | 1.3.1.1.3.10.1 | **PHE Works** |  | 2025-02-08 | 2025-05-02 |  |  |  |  |  |  |  |  |  |  |
| PG-10268 |  | 1st Fix - Piping works | 12d | 2025-02-08 A | 2025-02-24 A | PG-10135 | 100% |  | 2025-02-08 | 2025-02-22 |  |  | Santech (Plumbing) [245000 h] | 245,000 | 12359 |
| PG-10269 |  | 2nd Fix - diverter fixing & Pressure testing | 10d | 2025-02-19 A | 2025-03-04 A | PG-10268 FF+6d | 100% |  | 2025-02-18 | 2025-03-01 |  |  | Santech (Plumbing) [124000 h] | 124,000 | 12360 |
| PG-10270 |  | Final Fix - CP & Sanitary fixtures | 9.83d | 2025-04-21 A | 2025-05-02 | PG-10533, PG-10539 FF+6d | 33% | 6.57d | 2025-04-19 | 2025-05-01 | 405.43d | 0d | Santech (Plumbing) [330000 h] | 330,000 | 12361 |
|  | 1.3.1.1.3.10.2 | **Fire Fighting Works** |  | 2025-02-18 | 2025-05-01 |  |  |  |  |  |  |  |  |  |  |
| PG-10271 |  | 1st Fix - Piping and Shaft hydrant works | 11.67d | 2025-02-18 A | 2025-03-05 A | PG-10530 FF+6d | 100% |  | 2025-02-18 | 2025-03-03 |  |  | Nexus (Fire) [162000 h] | 162,000 | 12363 |
| PG-10272 |  | 2nd Fix - Sprinkler fixing & Pressure testing | 9.67d | 2025-03-29 A | 2025-04-11 A | PG-10538 FF+6d | 100% |  | 2025-03-28 | 2025-04-09 |  |  | Nexus (Fire) [145000 h] | 145,000 | 12364 |
| PG-10273 |  | Final Fix - Smoke & heat detectors, FHC , FAS Etc. | 9.67d | 2025-04-21 A | 2025-05-01 | PG-10272, PG-10539 FF+6d | 46% | 5.25d | 2025-04-19 | 2025-05-01 | 406d | 0.57d | Nexus (Fire) [185000 h] | 185,000 | 12365 |

| ID | WBS | Activity | Duration | Start | Finish | Predecessors | Complete | Planned start | Planned finish | Total float | Free float | Resources | Cost | MSP Activity ID |
| --- | --- | --- | --- | --- | --- | --- | --- | --- | --- | --- | --- | --- | --- | --- |
|  | 1.3.1.1.3.10.3 | **Electrical Works** |  | 2025-02-08 | 2025-05-01 |  |  |  |  |  |  |  |  |  |
| PG-10274 |  | 1st Fix - GI wire pulling | 8d | 2025-02-08 A | 2025-02-19 A | PG-10135 | 100% | 2025-02-08 | 2025-02-18 |  |  | Elexir (Electrical) [165000 h] | 165,000 | 12367 |
| PG-10275 |  | 2nd Fix - Wiring works | 14.67d | 2025-03-22 A | 2025-04-09 A | PG-10538 FF+5d | 100% | 2025-03-22 | 2025-04-08 |  |  | Elexir (Electrical) [248000 h] | 248,000 | 12368 |
| PG-10276 |  | Final Fix - Electrical Fixtures | 5.67d | 2025-04-25 | 2025-05-01 | PG-10275, PG-10539 FF+6d |  | 2025-04-25 | 2025-05-02 | 406d | 0.57d | Elexir (Electrical) [205000 h] | 205,000 | 12369 |
|  | 1.3.1.1.3.11 | **Floor 8** |  | 2025-02-25 | 2025-05-16 |  |  |  |  |  |  |  |  |  |
|  | 1.3.1.1.3.11.1 | **PHE Works** |  | 2025-02-25 | 2025-05-16 |  |  |  |  |  |  |  |  |  |
| PG-10277 |  | 1st Fix - Piping works | 12d | 2025-02-25 A | 2025-03-10 A | PG-10140 | 100% | 2025-02-24 | 2025-03-10 |  |  | Santech (Plumbing) [245000 h] | 245,000 | 12390 |
| PG-10278 |  | 2nd Fix - diverter fixing & Pressure testing | 10d | 2025-03-05 A | 2025-03-17 A | PG-10277 FF+6d | 100% |  |  |  |  | Santech (Plumbing) [124000 h] | 124,000 | 12391 |
| PG-10279 |  | Final Fix - CP & Sanitary fixtures | 9.83d | 2025-05-05 | 2025-05-16 | PG-10547, PG-10553 FF+6d |  |  |  | 391.64d | 0d | Santech (Plumbing) [330000 h] | 330,000 | 12392 |
|  | 1.3.1.1.3.11.2 | **Fire Fighting Works** |  | 2025-03-06 | 2025-05-16 |  |  |  |  |  |  |  |  |  |
| PG-10280 |  | 1st Fix - Piping and Shaft hydrant works | 11.67d | 2025-03-06 A | 2025-03-21 A | PG-10544 FF+6d | 100% | 2025-03-05 | 2025-03-18 |  |  | Nexus (Fire) [162000 h] | 162,000 | 12394 |
| PG-10281 |  | 2nd Fix - Sprinkler fixing & Pressure testing | 9.67d | 2025-04-12 A | 2025-04-24 A | PG-10552 FF+6d | 100% | 2025-04-11 | 2025-04-22 |  |  | Nexus (Fire) [145000 h] | 145,000 | 12395 |
| PG-10282 |  | Final Fix - Smoke & heat detectors, FHC , FAS Etc. | 9.83d | 2025-05-05 | 2025-05-16 | PG-10281, PG-10553 FF+6d |  |  |  | 391.64d | 0d | Nexus (Fire) [185000 h] | 185,000 | 12396 |
|  | 1.3.1.1.3.11.3 | **Electrical Works** |  | 2025-02-25 | 2025-05-16 |  |  |  |  |  |  |  |  |  |
| PG-10283 |  | 1st Fix - GI wire pulling | 8d | 2025-02-25 A | 2025-03-06 A | PG-10140 | 100% | 2025-02-24 | 2025-03-05 |  |  | Elexir (Electrical) [165000 h] | 165,000 | 12398 |
| PG-10284 |  | 2nd Fix - Wiring works | 14.67d | 2025-04-05 A | 2025-04-22 A | PG-10552 FF+5d | 100% |  |  |  |  | Elexir (Electrical) [248000 h] | 248,000 | 12399 |
| PG-10285 |  | Final Fix - Electrical Fixtures | 5.67d | 2025-05-09 | 2025-05-16 | PG-10284, PG-10553 FF+6d |  |  |  | 391.64d | 0d | Elexir (Electrical) [205000 h] | 205,000 | 12400 |
|  | 1.3.1.1.3.12 | **Floor 9** |  | 2025-03-12 | 2025-05-29 |  |  |  |  |  |  |  |  |  |
|  | 1.3.1.1.3.12.1 | **PHE Works** |  | 2025-03-12 | 2025-05-29 |  |  |  |  |  |  |  |  |  |
| PG-10286 |  | 1st Fix - Piping works | 12d | 2025-03-12 A | 2025-03-25 A | PG-10145 | 100% | 2025-03-11 | 2025-03-25 |  |  | Santech (Plumbing) [245000 h] | 245,000 | 12421 |
| PG-10287 |  | 2nd Fix - diverter fixing & Pressure testing | 10d | 2025-03-20 A | 2025-04-02 A | PG-10286 FF+6d | 100% | 2025-03-20 | 2025-04-01 |  |  | Santech (Plumbing) [124000 h] | 124,000 | 12422 |
| PG-10288 |  | Final Fix - CP & Sanitary fixtures | 9.83d | 2025-05-17 | 2025-05-29 | PG-10561, PG-10567 FF+6d |  |  |  | 381.52d | 0d | Santech (Plumbing) [330000 h] | 330,000 | 12423 |
|  | 1.3.1.1.3.12.2 | **Fire Fighting Works** |  | 2025-03-21 | 2025-05-29 |  |  |  |  |  |  |  |  |  |
| PG-10289 |  | 1st Fix - Piping and Shaft hydrant works | 11.67d | 2025-03-21 A | 2025-04-04 A | PG-10558 FF+6d | 100% | 2025-03-20 | 2025-04-02 |  |  | Nexus (Fire) [162000 h] | 162,000 | 12425 |
| PG-10290 |  | 2nd Fix - Sprinkler fixing & Pressure testing | 9.67d | 2025-04-26 | 2025-05-08 | PG-10566 FF+6d |  | 2025-04-26 | 2025-05-07 | 389.85d | 8.33d | Nexus (Fire) [145000 h] | 145,000 | 12426 |
| PG-10291 |  | Final Fix - Smoke & heat detectors, FHC , FAS Etc. | 9.83d | 2025-05-17 | 2025-05-29 | PG-10290, PG-10567 FF+6d |  |  |  | 381.52d | 0d | Nexus (Fire) [185000 h] | 185,000 | 12427 |

| ID | WBS | Activity | Duration | Start | Finish | Predecessors | Complete | Remaining | Planned start | Planned finish | Total float | Free float | Resources | Cost | MSP Activity ID |
| --- | --- | --- | --- | --- | --- | --- | --- | --- | --- | --- | --- | --- | --- | --- | --- |
|  | 1.3.1.1.3.12.3 | **Electrical Works** |  | 2025-03-12 | 2025-05-29 |  |  |  |  |  |  |  |  |  |  |
| PG-10292 |  | 1st Fix - GI wire pulling | 8d | 2025-03-12 A | 2025-03-20 A | PG-10145 | 100% |  | 2025-03-11 | 2025-03-20 |  |  | Elexir (Electrical) [165000 h] | 165,000 | 12429 |
| PG-10293 |  | 2nd Fix - Wiring works | 14.83d | 2025-04-21 A | 2025-05-07 | PG-10566 FF+5d | 39% | 9.01d |  |  | 395.35d | 13.83d | Elexir (Electrical) [248000 h] | 248,000 | 12430 |
| PG-10294 |  | Final Fix - Electrical Fixtures | 6d | 2025-05-22 | 2025-05-29 | PG-10293, PG-10567 FF+6d |  |  |  |  | 381.52d | 0d | Elexir (Electrical) [205000 h] | 205,000 | 12431 |
|  | 1.3.1.1.3.13 | **Floor 10** |  | 2025-03-27 | 2025-06-12 |  |  |  |  |  |  |  |  |  |  |
|  | 1.3.1.1.3.13.1 | **PHE Works** |  | 2025-03-27 | 2025-06-12 |  |  |  |  |  |  |  |  |  |  |
| PG-10295 |  | 1st Fix - Piping works | 12d | 2025-03-27 A | 2025-04-10 A | PG-10150 | 100% |  |  |  |  |  | Santech (Plumbing) [245000 h] | 245,000 | 12452 |
| PG-10296 |  | 2nd Fix - diverter fixing & Pressure testing | 10d | 2025-04-05 A | 2025-04-17 A | PG-10295 FF+6d | 100% |  | 2025-04-04 | 2025-04-16 |  |  | Santech (Plumbing) [124000 h] | 124,000 | 12453 |
| PG-10297 |  | Final Fix - CP & Sanitary fixtures | 10d | 2025-06-02 | 2025-06-12 | PG-10575, PG-10581 FF+6d |  |  | 2025-06-02 | 2025-06-13 | 368.27d | 0d | Santech (Plumbing) [330000 h] | 330,000 | 12454 |
|  | 1.3.1.1.3.13.2 | **Fire Fighting Works** |  | 2025-04-05 | 2025-06-12 |  |  |  |  |  |  |  |  |  |  |
| PG-10298 |  | 1st Fix - Piping and Shaft hydrant works | 11.67d | 2025-04-05 A | 2025-04-19 A | PG-10572 FF+6d | 100% |  | 2025-04-04 | 2025-04-17 |  |  | Nexus (Fire) [162000 h] | 162,000 | 12456 |
| PG-10299 |  | 2nd Fix - Sprinkler fixing & Pressure testing | 9.83d | 2025-05-12 | 2025-05-23 | PG-10580 FF+6d |  |  |  |  | 376.1d | 7.83d | Nexus (Fire) [145000 h] | 145,000 | 12457 |
| PG-10300 |  | Final Fix - Smoke & heat detectors, FHC , FAS Etc. | 10d | 2025-06-02 | 2025-06-12 | PG-10299, PG-10581 FF+6d |  |  | 2025-06-02 | 2025-06-13 | 368.27d | 0d | Nexus (Fire) [185000 h] | 185,000 | 12458 |
|  | 1.3.1.1.3.13.3 | **Electrical Works** |  | 2025-03-27 | 2025-06-12 |  |  |  |  |  |  |  |  |  |  |
| PG-10301 |  | 1st Fix - GI wire pulling | 8d | 2025-03-27 A | 2025-04-04 A | PG-10150 | 100% |  | 2025-03-27 | 2025-04-05 |  |  | Elexir (Electrical) [165000 h] | 165,000 | 12460 |
| PG-10302 |  | 2nd Fix - Wiring works | 14.83d | 2025-05-05 | 2025-05-22 | PG-10580 FF+5d |  |  |  |  | 380.93d | 12.67d | Elexir (Electrical) [248000 h] | 248,000 | 12461 |
| PG-10303 |  | Final Fix - Electrical Fixtures | 6d | 2025-06-06 | 2025-06-12 | PG-10302, PG-10581 FF+6d |  |  | 2025-06-06 | 2025-06-13 | 368.27d | 0d | Elexir (Electrical) [205000 h] | 205,000 | 12462 |
|  | 1.3.1.1.3.14 | **Floor 11** |  | 2025-04-09 | 2025-06-27 |  |  |  |  |  |  |  |  |  |  |
|  | 1.3.1.1.3.14.1 | **PHE Works** |  | 2025-04-09 | 2025-06-27 |  |  |  |  |  |  |  |  |  |  |
| PG-10304 |  | 1st Fix - Piping works | 12d | 2025-04-09 A | 2025-04-24 A | PG-10155 | 100% |  | 2025-04-09 | 2025-04-23 |  |  | Santech (Plumbing) [245000 h] | 245,000 | 12483 |
| PG-10305 |  | 2nd Fix - diverter fixing & Pressure testing | 10d | 2025-04-19 A | 2025-05-01 | PG-10304 FF+6d | 49% | 5.11d | 2025-04-18 | 2025-04-30 | 355.08d | 0d | Santech (Plumbing) [124000 h] | 124,000 | 12484 |
| PG-10306 |  | Final Fix - CP & Sanitary fixtures | 10d | 2025-06-17 | 2025-06-27 | PG-10589, PG-10595 FF+6d |  |  | 2025-06-17 | 2025-06-28 | 355.08d | 0d | Santech (Plumbing) [330000 h] | 330,000 | 12485 |
|  | 1.3.1.1.3.14.2 | **Fire Fighting Works** |  | 2025-04-18 | 2025-06-27 |  |  |  |  |  |  |  |  |  |  |
| PG-10307 |  | 1st Fix - Piping and Shaft hydrant works | 11.67d | 2025-04-18 A | 2025-05-01 | PG-10586 FF+6d | 52% | 5.61d | 2025-04-17 | 2025-05-01 | 405.17d | 0d | Nexus (Fire) [162000 h] | 162,000 | 12487 |
| PG-10308 |  | 2nd Fix - Sprinkler fixing & Pressure testing | 10d | 2025-05-27 | 2025-06-07 | PG-10594 FF+6d |  |  |  |  | 363.08d | 8d | Nexus (Fire) [145000 h] | 145,000 | 12488 |
| PG-10309 |  | Final Fix - Smoke & heat detectors, FHC , FAS Etc. | 10d | 2025-06-17 | 2025-06-27 | PG-10308, PG-10595 FF+6d |  |  | 2025-06-17 | 2025-06-28 | 355.08d | 0d | Nexus (Fire) [185000 h] | 185,000 | 12489 |

| ID | WBS | Activity | Duration | Start | Finish | Predecessors | Complete | Remaining | Planned start | Planned finish | Total float | Free float | Resources | Cost | MSP Activity ID |
| --- | --- | --- | --- | --- | --- | --- | --- | --- | --- | --- | --- | --- | --- | --- | --- |
|  | 1.3.1.1.3.14.3 | **Electrical Works** |  | 2025-04-09 | 2025-06-27 |  |  |  |  |  |  |  |  |  |  |
| PG-10310 |  | 1st Fix - GI wire pulling | 8d | 2025-04-09 A | 2025-04-18 A | PG-10155 | 100% |  |  |  |  |  | Elexir (Electrical) [165000 h] | 165,000 | 12491 |
| PG-10311 |  | 2nd Fix - Wiring works | 15d | 2025-05-20 | 2025-06-06 | PG-10594 FF+5d |  |  |  |  | 367.92d | 12.83d | Elexir (Electrical) [248000 h] | 248,000 | 12492 |
| PG-10312 |  | Final Fix - Electrical Fixtures | 6d | 2025-06-21 | 2025-06-27 | PG-10311, PG-10595 FF+6d |  |  | 2025-06-21 | 2025-06-28 | 355.08d | 0d | Elexir (Electrical) [205000 h] | 205,000 | 12493 |
|  | 1.3.1.1.3.15 | **Floor 12** |  | 2025-04-22 | 2025-07-09 |  |  |  |  |  |  |  |  |  |  |
|  | 1.3.1.1.3.15.1 | **PHE Works** |  | 2025-04-22 | 2025-07-09 |  |  |  |  |  |  |  |  |  |  |
| PG-10313 |  | 1st Fix - Piping works | 12d | 2025-04-22 A | 2025-05-05 | PG-10160 | 26% | 8.92d | 2025-04-22 | 2025-05-06 | 347.08d | 0d | Santech (Plumbing) [245000 h] | 245,000 | 12514 |
| PG-10314 |  | 2nd Fix - diverter fixing & Pressure testing | 10d | 2025-04-30 | 2025-05-12 | PG-10313 FF+6d |  |  |  |  | 347.08d | 0d | Santech (Plumbing) [124000 h] | 124,000 | 12515 |
| PG-10315 |  | Final Fix - CP & Sanitary fixtures | 10d | 2025-06-27 | 2025-07-09 | PG-10603, PG-10609 FF+6d |  |  |  |  | 347.08d | 0d | Santech (Plumbing) [330000 h] | 330,000 | 12516 |
|  | 1.3.1.1.3.15.2 | **Fire Fighting Works** |  | 2025-04-30 | 2025-07-09 |  |  |  |  |  |  |  |  |  |  |
| PG-10316 |  | 1st Fix - Piping and Shaft hydrant works | 11.83d | 2025-04-30 | 2025-05-14 | PG-10600 FF+6d |  |  |  |  | 394.61d | 0d | Nexus (Fire) [162000 h] | 162,000 | 12518 |
| PG-10317 |  | 2nd Fix - Sprinkler fixing & Pressure testing | 10d | 2025-06-06 | 2025-06-18 | PG-10608 FF+6d |  |  |  |  | 354.75d | 7.67d | Nexus (Fire) [145000 h] | 145,000 | 12519 |
| PG-10318 |  | Final Fix - Smoke & heat detectors, FHC , FAS Etc. | 10d | 2025-06-27 | 2025-07-09 | PG-10317, PG-10609 FF+6d |  |  |  |  | 347.08d | 0d | Nexus (Fire) [185000 h] | 185,000 | 12520 |
|  | 1.3.1.1.3.15.3 | **Electrical Works** |  | 2025-04-22 | 2025-07-09 |  |  |  |  |  |  |  |  |  |  |
| PG-10319 |  | 1st Fix - GI wire pulling | 8d | 2025-04-22 A | 2025-04-30 | PG-10160 | 47% | 4.22d | 2025-04-22 | 2025-05-01 | 394.61d | 0d | Elexir (Electrical) [165000 h] | 165,000 | 12522 |
| PG-10320 |  | 2nd Fix - Wiring works | 15d | 2025-05-30 | 2025-06-17 | PG-10608 FF+5d |  |  |  |  | 359.75d | 12.67d | Elexir (Electrical) [248000 h] | 248,000 | 12523 |
| PG-10321 |  | Final Fix - Electrical Fixtures | 6d | 2025-07-02 | 2025-07-09 | PG-10320, PG-10609 FF+6d |  |  |  |  | 347.08d | 0d | Elexir (Electrical) [205000 h] | 205,000 | 12524 |
|  | 1.3.1.1.3.16 | **Floor 13** |  | 2025-05-03 | 2025-07-24 |  |  |  |  |  |  |  |  |  |  |
|  | 1.3.1.1.3.16.1 | **PHE Works** |  | 2025-05-03 | 2025-07-24 |  |  |  |  |  |  |  |  |  |  |
| PG-10322 |  | 1st Fix - Piping works | 12d | 2025-05-03 | 2025-05-17 | PG-10165 |  |  |  |  | 334.66d | 0d | Santech (Plumbing) [245000 h] | 245,000 | 12545 |
| PG-10323 |  | 2nd Fix - diverter fixing & Pressure testing | 10d | 2025-05-13 | 2025-05-24 | PG-10322 FF+6d |  |  |  |  | 334.66d | 0d | Santech (Plumbing) [124000 h] | 124,000 | 12546 |
| PG-10324 |  | Final Fix - CP & Sanitary fixtures | 10d | 2025-07-12 | 2025-07-24 | PG-10617, PG-10623 FF+6d |  |  |  |  | 334.66d | 0d | Santech (Plumbing) [330000 h] | 330,000 | 12547 |
|  | 1.3.1.1.3.16.2 | **Fire Fighting Works** |  | 2025-05-13 | 2025-07-24 |  |  |  |  |  |  |  |  |  |  |
| PG-10325 |  | 1st Fix - Piping and Shaft hydrant works | 11.83d | 2025-05-13 | 2025-05-27 | PG-10614 FF+6d |  |  |  |  | 379.33d | 0d | Nexus (Fire) [162000 h] | 162,000 | 12549 |
| PG-10326 |  | 2nd Fix - Sprinkler fixing & Pressure testing | 10d | 2025-06-19 | 2025-07-01 | PG-10622 FF+6d |  |  |  |  | 344.66d | 10d | Nexus (Fire) [145000 h] | 145,000 | 12550 |
| PG-10327 |  | Final Fix - Smoke & heat detectors, FHC , FAS Etc. | 10d | 2025-07-12 | 2025-07-24 | PG-10326, PG-10623 FF+6d |  |  |  |  | 334.66d | 0d | Nexus (Fire) [185000 h] | 185,000 | 12551 |

| ID | WBS | Activity | Duration | Start | Finish | Predecessors | Total float | Free float | Resources | Cost | MSP Activity ID |
| --- | --- | --- | --- | --- | --- | --- | --- | --- | --- | --- | --- |
|  | 1.3.1.1.3.16.3 | **Electrical Works** |  | 2025-05-03 | 2025-07-24 |  |  |  |  |  |  |
| PG-10328 |  | 1st Fix - GI wire pulling | 8d | 2025-05-03 | 2025-05-13 | PG-10165 | 379.33d | 0d | Elexir (Electrical) [165000 h] | 165,000 | 12553 |
| PG-10329 |  | 2nd Fix - Wiring works | 15d | 2025-06-12 | 2025-06-30 | PG-10622 FF+5d | 349.66d | 15d | Elexir (Electrical) [248000 h] | 248,000 | 12554 |
| PG-10330 |  | Final Fix - Electrical Fixtures | 6d | 2025-07-17 | 2025-07-24 | PG-10329, PG-10623 FF+6d | 334.66d | 0d | Elexir (Electrical) [205000 h] | 205,000 | 12555 |
|  | 1.3.1.1.3.17 | **Floor 14** |  | 2025-05-16 | 2025-08-06 |  |  |  |  |  |  |
|  | 1.3.1.1.3.17.1 | **PHE Works** |  | 2025-05-16 | 2025-08-06 |  |  |  |  |  |  |
| PG-10331 |  | 1st Fix - Piping works | 12d | 2025-05-16 | 2025-05-30 | PG-10170 | 323.66d | 0d | Santech (Plumbing) [245000 h] | 245,000 | 12576 |
| PG-10332 |  | 2nd Fix - diverter fixing & Pressure testing | 10d | 2025-05-26 | 2025-06-06 | PG-10331 FF+6d | 323.66d | 0d | Santech (Plumbing) [124000 h] | 124,000 | 12577 |
| PG-10333 |  | Final Fix - CP & Sanitary fixtures | 10d | 2025-07-25 | 2025-08-06 | PG-10631, PG-10637 FF+6d | 323.66d | 0d | Santech (Plumbing) [330000 h] | 330,000 | 12578 |
|  | 1.3.1.1.3.17.2 | **Fire Fighting Works** |  | 2025-05-26 | 2025-08-06 |  |  |  |  |  |  |
| PG-10334 |  | 1st Fix - Piping and Shaft hydrant works | 12d | 2025-05-26 | 2025-06-09 | PG-10628 FF+6d | 370.33d | 0d | Nexus (Fire) [162000 h] | 162,000 | 12580 |
| PG-10335 |  | 2nd Fix - Sprinkler fixing & Pressure testing | 10d | 2025-07-02 | 2025-07-14 | PG-10636 FF+6d | 333.66d | 10d | Nexus (Fire) [145000 h] | 145,000 | 12581 |
| PG-10336 |  | Final Fix - Smoke & heat detectors, FHC , FAS Etc. | 10d | 2025-07-25 | 2025-08-06 | PG-10335, PG-10637 FF+6d | 323.66d | 0d | Nexus (Fire) [185000 h] | 185,000 | 12582 |
|  | 1.3.1.1.3.17.3 | **Electrical Works** |  | 2025-05-16 | 2025-08-06 |  |  |  |  |  |  |
| PG-10337 |  | 1st Fix - GI wire pulling | 8d | 2025-05-16 | 2025-05-26 | PG-10170 | 370.33d | 0d | Elexir (Electrical) [165000 h] | 165,000 | 12584 |
| PG-10338 |  | 2nd Fix - Wiring works | 15d | 2025-06-25 | 2025-07-12 | PG-10636 FF+5d | 338.66d | 15d | Elexir (Electrical) [248000 h] | 248,000 | 12585 |
| PG-10339 |  | Final Fix - Electrical Fixtures | 6d | 2025-07-30 | 2025-08-06 | PG-10338, PG-10637 FF+6d | 323.66d | 0d | Elexir (Electrical) [205000 h] | 205,000 | 12586 |
|  | 1.3.1.1.3.18 | **Floor 15** |  | 2025-05-29 | 2025-08-19 |  |  |  |  |  |  |
|  | 1.3.1.1.3.18.1 | **PHE Works** |  | 2025-05-29 | 2025-08-19 |  |  |  |  |  |  |
| PG-10340 |  | 1st Fix - Piping works | 12d | 2025-05-29 | 2025-06-12 | PG-10175 | 131.16d | 0d | Santech (Plumbing) [245000 h] | 245,000 | 12607 |
| PG-10341 |  | 2nd Fix - diverter fixing & Pressure testing | 10d | 2025-06-07 | 2025-06-19 | PG-10340 FF+6d | 131.16d | 0d | Santech (Plumbing) [124000 h] | 124,000 | 12608 |
| PG-10342 |  | Final Fix - CP & Sanitary fixtures | 10d | 2025-08-06 | 2025-08-19 | PG-10645, PG-10651 FF+6d | 313.66d | 0d | Santech (Plumbing) [330000 h] | 330,000 | 12609 |
|  | 1.3.1.1.3.18.2 | **Fire Fighting Works** |  | 2025-06-07 | 2025-08-19 |  |  |  |  |  |  |
| PG-10343 |  | 1st Fix - Piping and Shaft hydrant works | 12d | 2025-06-07 | 2025-06-21 | PG-10642 FF+6d | 360.33d | 0d | Nexus (Fire) [162000 h] | 162,000 | 12611 |
| PG-10344 |  | 2nd Fix - Sprinkler fixing & Pressure testing | 10d | 2025-07-15 | 2025-07-26 | PG-10650 FF+6d | 322.66d | 9d | Nexus (Fire) [145000 h] | 145,000 | 12612 |
| PG-10345 |  | Final Fix - Smoke & heat detectors, FHC , FAS Etc. | 10d | 2025-08-06 | 2025-08-19 | PG-10344, PG-10651 FF+6d | 313.66d | 0d | Nexus (Fire) [185000 h] | 185,000 | 12613 |

| ID | WBS | Activity | Duration | Start | Finish | Predecessors | Total float | Free float | Resources | Cost | MSP Activity ID |
| --- | --- | --- | --- | --- | --- | --- | --- | --- | --- | --- | --- |
|  | 1.3.1.1.3.18.3 | **Electrical Works** |  | 2025-05-29 | 2025-08-19 |  |  |  |  |  |  |
| PG-10346 |  | 1st Fix - GI wire pulling | 8d | 2025-05-29 | 2025-06-07 | PG-10175 | 360.33d | 0d | Elexir (Electrical) [165000 h] | 165,000 | 12615 |
| PG-10347 |  | 2nd Fix - Wiring works | 15d | 2025-07-08 | 2025-07-25 | PG-10650 FF+5d | 327.66d | 14d | Elexir (Electrical) [248000 h] | 248,000 | 12616 |
| PG-10348 |  | Final Fix - Electrical Fixtures | 6d | 2025-08-11 | 2025-08-19 | PG-10347, PG-10651 FF+6d | 313.66d | 0d | Elexir (Electrical) [205000 h] | 205,000 | 12617 |
|  | 1.3.1.1.3.19 | **Floor 16** |  | 2025-06-11 | 2025-09-01 |  |  |  |  |  |  |
|  | 1.3.1.1.3.19.1 | **PHE Works** |  | 2025-06-11 | 2025-09-01 |  |  |  |  |  |  |
| PG-10349 |  | 1st Fix - Piping works | 12d | 2025-06-11 | 2025-06-25 | PG-10180 | 302.66d | 0d | Santech (Plumbing) [245000 h] | 245,000 | 12638 |
| PG-10350 |  | 2nd Fix - diverter fixing & Pressure testing | 10d | 2025-06-20 | 2025-07-02 | PG-10349 FF+6d | 302.66d | 0d | Santech (Plumbing) [124000 h] | 124,000 | 12639 |
| PG-10351 |  | Final Fix - CP & Sanitary fixtures | 10d | 2025-08-20 | 2025-09-01 | PG-10659, PG-10665 FF+6d | 302.66d | 0d | Santech (Plumbing) [330000 h] | 330,000 | 12640 |
|  | 1.3.1.1.3.19.2 | **Fire Fighting Works** |  | 2025-06-20 | 2025-09-01 |  |  |  |  |  |  |
| PG-10352 |  | 1st Fix - Piping and Shaft hydrant works | 12d | 2025-06-20 | 2025-07-04 | PG-10656 FF+6d | 349.33d | 0d | Nexus (Fire) [162000 h] | 162,000 | 12642 |
| PG-10353 |  | 2nd Fix - Sprinkler fixing & Pressure testing | 10d | 2025-07-28 | 2025-08-08 | PG-10664 FF+6d | 311.66d | 9d | Nexus (Fire) [145000 h] | 145,000 | 12643 |
| PG-10354 |  | Final Fix - Smoke & heat detectors, FHC , FAS Etc. | 10d | 2025-08-20 | 2025-09-01 | PG-10353, PG-10665 FF+6d | 302.66d | 0d | Nexus (Fire) [185000 h] | 185,000 | 12644 |
|  | 1.3.1.1.3.19.3 | **Electrical Works** |  | 2025-06-11 | 2025-09-01 |  |  |  |  |  |  |
| PG-10355 |  | 1st Fix - GI wire pulling | 8d | 2025-06-11 | 2025-06-20 | PG-10180 | 349.33d | 0d | Elexir (Electrical) [165000 h] | 165,000 | 12646 |
| PG-10356 |  | 2nd Fix - Wiring works | 15d | 2025-07-21 | 2025-08-07 | PG-10664 FF+5d | 316.66d | 14d | Elexir (Electrical) [248000 h] | 248,000 | 12647 |
| PG-10357 |  | Final Fix - Electrical Fixtures | 6d | 2025-08-25 | 2025-09-01 | PG-10356, PG-10665 FF+6d | 302.66d | 0d | Elexir (Electrical) [205000 h] | 205,000 | 12648 |
|  | 1.3.1.1.3.20 | **Floor 17** |  | 2025-06-24 | 2025-09-13 |  |  |  |  |  |  |
|  | 1.3.1.1.3.20.1 | **PHE Works** |  | 2025-06-24 | 2025-09-13 |  |  |  |  |  |  |
| PG-10358 |  | 1st Fix - Piping works | 12d | 2025-06-24 | 2025-07-08 | PG-10185 | 291.66d | 0d | Santech (Plumbing) [245000 h] | 245,000 | 12669 |
| PG-10359 |  | 2nd Fix - diverter fixing & Pressure testing | 10d | 2025-07-03 | 2025-07-15 | PG-10358 FF+6d | 291.66d | 0d | Santech (Plumbing) [124000 h] | 124,000 | 12670 |
| PG-10360 |  | Final Fix - CP & Sanitary fixtures | 10d | 2025-09-02 | 2025-09-13 | PG-10673, PG-10679 FF+6d | 291.66d | 0d | Santech (Plumbing) [330000 h] | 330,000 | 12671 |
|  | 1.3.1.1.3.20.2 | **Fire Fighting Works** |  | 2025-07-03 | 2025-09-13 |  |  |  |  |  |  |
| PG-10361 |  | 1st Fix - Piping and Shaft hydrant works | 12d | 2025-07-03 | 2025-07-17 | PG-10670 FF+6d | 338.33d | 0d | Nexus (Fire) [162000 h] | 162,000 | 12673 |
| PG-10362 |  | 2nd Fix - Sprinkler fixing & Pressure testing | 10d | 2025-08-09 | 2025-08-22 | PG-10678 FF+6d | 300.66d | 9d | Nexus (Fire) [145000 h] | 145,000 | 12674 |
| PG-10363 |  | Final Fix - Smoke & heat detectors, FHC , FAS Etc. | 10d | 2025-09-02 | 2025-09-13 | PG-10362, PG-10679 FF+6d | 291.66d | 0d | Nexus (Fire) [185000 h] | 185,000 | 12675 |

| ID | WBS | Activity | Duration | Start | Finish | Predecessors | Total float | Free float | Resources | Cost | MSP Activity ID |
| --- | --- | --- | --- | --- | --- | --- | --- | --- | --- | --- | --- |
|  | 1.3.1.1.3.20.3 | **Electrical Works** |  | 2025-06-24 | 2025-09-13 |  |  |  |  |  |  |
| PG-10364 |  | 1st Fix - GI wire pulling | 8d | 2025-06-24 | 2025-07-03 | PG-10185 | 338.33d | 0d | Elexir (Electrical) [165000 h] | 165,000 | 12677 |
| PG-10365 |  | 2nd Fix - Wiring works | 15d | 2025-08-02 | 2025-08-21 | PG-10678 FF+5d | 305.66d | 14d | Elexir (Electrical) [248000 h] | 248,000 | 12678 |
| PG-10366 |  | Final Fix - Electrical Fixtures | 6d | 2025-09-06 | 2025-09-13 | PG-10365, PG-10679 FF+6d | 291.66d | 0d | Elexir (Electrical) [205000 h] | 205,000 | 12679 |
|  | 1.3.1.1.3.21 | **Floor 18** |  | 2025-07-07 | 2025-09-26 |  |  |  |  |  |  |
|  | 1.3.1.1.3.21.1 | **PHE Works** |  | 2025-07-07 | 2025-09-26 |  |  |  |  |  |  |
| PG-10367 |  | 1st Fix - Piping works | 12d | 2025-07-07 | 2025-07-21 | PG-10190 | 44.83d | 0d | Santech (Plumbing) [245000 h] | 245,000 | 12700 |
| PG-10368 |  | 2nd Fix - diverter fixing & Pressure testing | 10d | 2025-07-16 | 2025-07-28 | PG-10367 FF+6d | 280.66d | 0d | Santech (Plumbing) [124000 h] | 124,000 | 12701 |
| PG-10369 |  | Final Fix - CP & Sanitary fixtures | 10d | 2025-09-15 | 2025-09-26 | PG-10687, PG-10693 FF+6d | 280.66d | 0d | Santech (Plumbing) [330000 h] | 330,000 | 12702 |
|  | 1.3.1.1.3.21.2 | **Fire Fighting Works** |  | 2025-07-16 | 2025-09-26 |  |  |  |  |  |  |
| PG-10370 |  | 1st Fix - Piping and Shaft hydrant works | 12d | 2025-07-16 | 2025-07-30 | PG-10684 FF+6d | 327.33d | 0d | Nexus (Fire) [162000 h] | 162,000 | 12704 |
| PG-10371 |  | 2nd Fix - Sprinkler fixing & Pressure testing | 10d | 2025-08-23 | 2025-09-04 | PG-10692 FF+6d | 289.66d | 9d | Nexus (Fire) [145000 h] | 145,000 | 12705 |
| PG-10372 |  | Final Fix - Smoke & heat detectors, FHC , FAS Etc. | 10d | 2025-09-15 | 2025-09-26 | PG-10371, PG-10693 FF+6d | 280.66d | 0d | Nexus (Fire) [185000 h] | 185,000 | 12706 |
|  | 1.3.1.1.3.21.3 | **Electrical Works** |  | 2025-07-07 | 2025-09-26 |  |  |  |  |  |  |
| PG-10373 |  | 1st Fix - GI wire pulling | 8d | 2025-07-07 | 2025-07-16 | PG-10190 | 327.33d | 0d | Elexir (Electrical) [165000 h] | 165,000 | 12708 |
| PG-10374 |  | 2nd Fix - Wiring works | 15d | 2025-08-16 | 2025-09-03 | PG-10692 FF+5d | 294.66d | 14d | Elexir (Electrical) [248000 h] | 248,000 | 12709 |
| PG-10375 |  | Final Fix - Electrical Fixtures | 6d | 2025-09-19 | 2025-09-26 | PG-10374, PG-10693 FF+6d | 280.66d | 0d | Elexir (Electrical) [205000 h] | 205,000 | 12710 |
|  | 1.3.1.1.3.22 | **Floor 19** |  | 2025-07-29 | 2025-10-22 |  |  |  |  |  |  |
|  | 1.3.1.1.3.22.1 | **PHE Works** |  | 2025-07-29 | 2025-10-22 |  |  |  |  |  |  |
| PG-10376 |  | 1st Fix - Piping works | 12d | 2025-07-29 | 2025-08-12 | PG-10367 FS+7d | 163.83d | 0d | Santech (Plumbing) [245000 h] | 245,000 | 12731 |
| PG-10377 |  | 2nd Fix - diverter fixing & Pressure testing | 10d | 2025-08-07 | 2025-08-20 | PG-10376 FF+6d | 163.83d | 0d | Santech (Plumbing) [124000 h] | 124,000 | 12732 |
| PG-10378 |  | Final Fix - CP & Sanitary fixtures | 9.67d | 2025-10-10 | 2025-10-22 | PG-10701, PG-10707 FF+6d | 259.66d | 0d | Santech (Plumbing) [330000 h] | 330,000 | 12733 |
|  | 1.3.1.1.3.22.2 | **Fire Fighting Works** |  | 2025-08-07 | 2025-10-22 |  |  |  |  |  |  |
| PG-10379 |  | 1st Fix - Piping and Shaft hydrant works | 12d | 2025-08-07 | 2025-08-22 | PG-10698 FF+6d | 175.83d | 0d | Nexus (Fire) [162000 h] | 162,000 | 12735 |
| PG-10380 |  | 2nd Fix - Sprinkler fixing & Pressure testing | 9.67d | 2025-09-15 | 2025-09-26 | PG-10706 FF+6d | 270.66d | 11d | Nexus (Fire) [145000 h] | 145,000 | 12736 |
| PG-10381 |  | Final Fix - Smoke & heat detectors, FHC , FAS Etc. | 9.67d | 2025-10-10 | 2025-10-22 | PG-10380, PG-10707 FF+6d | 259.66d | 0d | Nexus (Fire) [185000 h] | 185,000 | 12737 |

| ID | WBS | Activity | Duration | Start | Finish | Predecessors | Total float | Free float | Resources | Cost | MSP Activity ID |
| --- | --- | --- | --- | --- | --- | --- | --- | --- | --- | --- | --- |
|  | 1.3.1.1.3.22.3 | **Electrical Works** |  | 2025-07-29 | 2025-10-22 |  |  |  |  |  |  |
| PG-10382 |  | 1st Fix - GI wire pulling | 8d | 2025-07-29 | 2025-08-07 | PG-10367 FS+7d | 44.83d | 0d | Elexir (Electrical) [165000 h] | 165,000 | 12739 |
| PG-10383 |  | 2nd Fix - Wiring works | 14.67d | 2025-09-08 | 2025-09-25 | PG-10706 FF+5d | 275.66d | 16d | Elexir (Electrical) [248000 h] | 248,000 | 12740 |
| PG-10384 |  | Final Fix - Electrical Fixtures | 5.67d | 2025-10-15 | 2025-10-22 | PG-10383, PG-10707 FF+6d | 259.66d | 0d | Elexir (Electrical) [205000 h] | 205,000 | 12741 |
|  | 1.3.1.1.3.23 | **Floor 20** |  | 2025-08-21 | 2025-11-13 |  |  |  |  |  |  |
|  | 1.3.1.1.3.23.1 | **PHE Works** |  | 2025-08-21 | 2025-11-13 |  |  |  |  |  |  |
| PG-10385 |  | 1st Fix - Piping works | 12d | 2025-08-21 | 2025-09-04 | PG-10376 FS+7d | 185.49d | 0d | Santech (Plumbing) [245000 h] | 245,000 | 12780 |
| PG-10386 |  | 2nd Fix - diverter fixing & Pressure testing | 10d | 2025-08-30 | 2025-09-11 | PG-10385 FF+6d | 240.49d | 0d | Santech (Plumbing) [124000 h] | 124,000 | 12781 |
| PG-10387 |  | Final Fix - CP & Sanitary fixtures | 9.67d | 2025-10-31 | 2025-11-13 | PG-10715, PG-10721 FF+6d | 240.49d | 0d | Santech (Plumbing) [330000 h] | 330,000 | 12782 |
|  | 1.3.1.1.3.23.2 | **Fire Fighting Works** |  | 2025-08-30 | 2025-11-13 |  |  |  |  |  |  |
| PG-10388 |  | 1st Fix - Piping and Shaft hydrant works | 12d | 2025-08-30 | 2025-09-13 | PG-10712 FF+6d | 287.16d | 0d | Nexus (Fire) [162000 h] | 162,000 | 12784 |
| PG-10389 |  | 2nd Fix - Sprinkler fixing & Pressure testing | 9.67d | 2025-10-08 | 2025-10-20 | PG-10720 FF+6d | 250.16d | 9.67d | Nexus (Fire) [145000 h] | 145,000 | 12785 |
| PG-10390 |  | Final Fix - Smoke & heat detectors, FHC , FAS Etc. | 9.67d | 2025-10-31 | 2025-11-13 | PG-10389, PG-10721 FF+6d | 240.49d | 0d | Nexus (Fire) [185000 h] | 185,000 | 12786 |
|  | 1.3.1.1.3.23.3 | **Electrical Works** |  | 2025-08-21 | 2025-11-13 |  |  |  |  |  |  |
| PG-10391 |  | 1st Fix - GI wire pulling | 8d | 2025-08-21 | 2025-08-30 | PG-10376 FS+7d | 287.16d | 0d | Elexir (Electrical) [165000 h] | 165,000 | 12788 |
| PG-10392 |  | 2nd Fix - Wiring works | 14.67d | 2025-09-30 | 2025-10-18 | PG-10720 FF+5d | 255.49d | 15d | Elexir (Electrical) [248000 h] | 248,000 | 12789 |
| PG-10393 |  | Final Fix - Electrical Fixtures | 5.67d | 2025-11-06 | 2025-11-13 | PG-10392, PG-10721 FF+6d | 240.49d | 0d | Elexir (Electrical) [205000 h] | 205,000 | 12790 |
|  | 1.3.1.1.3.24 | **Floor 21** |  | 2025-09-12 | 2025-12-05 |  |  |  |  |  |  |
|  | 1.3.1.1.3.24.1 | **PHE Works** |  | 2025-09-12 | 2025-12-05 |  |  |  |  |  |  |
| PG-10394 |  | 1st Fix - Piping works | 12d | 2025-09-12 | 2025-09-26 | PG-10385 FS+7d | 185.49d | 0d | Santech (Plumbing) [245000 h] | 245,000 | 12793 |
| PG-10395 |  | 2nd Fix - diverter fixing & Pressure testing | 10d | 2025-09-22 | 2025-10-04 | PG-10394 FF+6d | 221.49d | 0d | Santech (Plumbing) [124000 h] | 124,000 | 12794 |
| PG-10396 |  | Final Fix - CP & Sanitary fixtures | 9.83d | 2025-11-24 | 2025-12-05 | PG-10729, PG-10735 FF+6d | 221.49d | 0d | Santech (Plumbing) [330000 h] | 330,000 | 12795 |
|  | 1.3.1.1.3.24.2 | **Fire Fighting Works** |  | 2025-09-22 | 2025-12-05 |  |  |  |  |  |  |
| PG-10397 |  | 1st Fix - Piping and Shaft hydrant works | 12d | 2025-09-22 | 2025-10-07 | PG-10726 FF+6d | 268.16d | 0d | Nexus (Fire) [162000 h] | 162,000 | 12797 |
| PG-10398 |  | 2nd Fix - Sprinkler fixing & Pressure testing | 9.67d | 2025-10-30 | 2025-11-12 | PG-10734 FF+6d | 231.49d | 10d | Nexus (Fire) [145000 h] | 145,000 | 12798 |
| PG-10399 |  | Final Fix - Smoke & heat detectors, FHC , FAS Etc. | 9.83d | 2025-11-24 | 2025-12-05 | PG-10398, PG-10735 FF+6d | 221.49d | 0d | Nexus (Fire) [185000 h] | 185,000 | 12799 |

| ID | WBS | Activity | Duration | Start | Finish | Predecessors | Total float | Free float | Resources | Cost | MSP Activity ID |
| --- | --- | --- | --- | --- | --- | --- | --- | --- | --- | --- | --- |
|  | 1.3.1.1.3.24.3 | **Electrical Works** |  | 2025-09-12 | 2025-12-05 |  |  |  |  |  |  |
| PG-10400 |  | 1st Fix - GI wire pulling | 8d | 2025-09-12 | 2025-09-22 | PG-10385 FS+7d | 268.16d | 0d | Elexir (Electrical) [165000 h] | 165,000 | 12801 |
| PG-10401 |  | 2nd Fix - Wiring works | 14.83d | 2025-10-23 | 2025-11-11 | PG-10734 FF+5d | 236.49d | 15d | Elexir (Electrical) [248000 h] | 248,000 | 12802 |
| PG-10402 |  | Final Fix - Electrical Fixtures | 5.83d | 2025-11-28 | 2025-12-05 | PG-10401, PG-10735 FF+6d | 221.49d | 0d | Elexir (Electrical) [205000 h] | 205,000 | 12803 |
|  | 1.3.1.1.3.25 | **Floor 22** |  | 2025-10-06 | 2025-12-27 |  |  |  |  |  |  |
|  | 1.3.1.1.3.25.1 | **PHE Works** |  | 2025-10-06 | 2025-12-27 |  |  |  |  |  |  |
| PG-10403 |  | 1st Fix - Piping works | 12d | 2025-10-06 | 2025-10-20 | PG-10394 FS+7d | 185.49d | 0d | Santech (Plumbing) [245000 h] | 245,000 | 12824 |
| PG-10404 |  | 2nd Fix - diverter fixing & Pressure testing | 10d | 2025-10-15 | 2025-10-27 | PG-10403 FF+6d | 201.49d | 0d | Santech (Plumbing) [124000 h] | 124,000 | 12825 |
| PG-10405 |  | Final Fix - CP & Sanitary fixtures | 9.67d | 2025-12-16 | 2025-12-27 | PG-10743, PG-10749 FF+6d | 201.49d | 0d | Santech (Plumbing) [330000 h] | 330,000 | 12826 |
|  | 1.3.1.1.3.25.2 | **Fire Fighting Works** |  | 2025-10-15 | 2025-12-27 |  |  |  |  |  |  |
| PG-10406 |  | 1st Fix - Piping and Shaft hydrant works | 12d | 2025-10-15 | 2025-10-29 | PG-10740 FF+6d | 249.16d | 0d | Nexus (Fire) [162000 h] | 162,000 | 12828 |
| PG-10407 |  | 2nd Fix - Sprinkler fixing & Pressure testing | 9.67d | 2025-11-22 | 2025-12-04 | PG-10748 FF+6d | 211.49d | 10d | Nexus (Fire) [145000 h] | 145,000 | 12829 |
| PG-10408 |  | Final Fix - Smoke & heat detectors, FHC , FAS Etc. | 9.67d | 2025-12-16 | 2025-12-27 | PG-10407, PG-10749 FF+6d | 201.49d | 0d | Nexus (Fire) [185000 h] | 185,000 | 12830 |
|  | 1.3.1.1.3.25.3 | **Electrical Works** |  | 2025-10-06 | 2025-12-27 |  |  |  |  |  |  |
| PG-10409 |  | 1st Fix - GI wire pulling | 8d | 2025-10-06 | 2025-10-15 | PG-10394 FS+7d | 249.16d | 0d | Elexir (Electrical) [165000 h] | 165,000 | 12832 |
| PG-10410 |  | 2nd Fix - Wiring works | 14.67d | 2025-11-15 | 2025-12-03 | PG-10748 FF+5d | 216.49d | 15d | Elexir (Electrical) [248000 h] | 248,000 | 12833 |
| PG-10411 |  | Final Fix - Electrical Fixtures | 5.67d | 2025-12-20 | 2025-12-27 | PG-10410, PG-10749 FF+6d | 201.49d | 0d | Elexir (Electrical) [205000 h] | 205,000 | 12834 |
|  | 1.3.1.1.3.26 | **Floor 23** |  | 2025-10-28 | 2026-01-16 |  |  |  |  |  |  |
|  | 1.3.1.1.3.26.1 | **PHE Works** |  | 2025-10-28 | 2026-01-16 |  |  |  |  |  |  |
| PG-10412 |  | 1st Fix - Piping works | 12d | 2025-10-28 | 2025-11-12 | PG-10403 FS+7d | 185.49d | 0d | Santech (Plumbing) [245000 h] | 245,000 | 12855 |
| PG-10413 |  | 2nd Fix - diverter fixing & Pressure testing | 10d | 2025-11-07 | 2025-11-19 | PG-10412 FF+6d | 185.49d | 0d | Santech (Plumbing) [124000 h] | 124,000 | 12856 |
| PG-10414 |  | Final Fix - CP & Sanitary fixtures | 10d | 2026-01-05 | 2026-01-16 | PG-10757, PG-10763 FF+6d | 185.49d | 0d | Santech (Plumbing) [330000 h] | 330,000 | 12857 |
|  | 1.3.1.1.3.26.2 | **Fire Fighting Works** |  | 2025-11-07 | 2026-01-16 |  |  |  |  |  |  |
| PG-10415 |  | 1st Fix - Piping and Shaft hydrant works | 12d | 2025-11-07 | 2025-11-21 | PG-10754 FF+6d | 230.33d | 0d | Nexus (Fire) [162000 h] | 162,000 | 12859 |
| PG-10416 |  | 2nd Fix - Sprinkler fixing & Pressure testing | 10d | 2025-12-15 | 2025-12-26 | PG-10762 FF+6d | 192.99d | 0d | Nexus (Fire) [145000 h] | 145,000 | 12860 |
| PG-10417 |  | Final Fix - Smoke & heat detectors, FHC , FAS Etc. | 10d | 2026-01-05 | 2026-01-16 | PG-10416, PG-10763 FF+6d, PG-10023 | 185.49d | 0d | Nexus (Fire) [185000 h] | 185,000 | 12861 |

| ID | WBS | Activity | Duration | Start | Finish | Predecessors | Complete | Planned start | Planned finish | Total float | Free float | Resources | Cost | MSP Activity ID |
| --- | --- | --- | --- | --- | --- | --- | --- | --- | --- | --- | --- | --- | --- | --- |
|  | 1.3.1.1.3.26.3 | **Electrical Works** |  | 2025-10-28 | 2026-01-16 |  |  |  |  |  |  |  |  |  |
| PG-10418 |  | 1st Fix - GI wire pulling | 8d | 2025-10-28 | 2025-11-07 | PG-10403 FS+7d |  |  |  | 230.33d | 0d | Elexir (Electrical) [165000 h] | 165,000 | 12863 |
| PG-10419 |  | 2nd Fix - Wiring works | 15d | 2025-12-08 | 2025-12-25 | PG-10762 FF+5d |  |  |  | 197.99d | 12.5d | Elexir (Electrical) [248000 h] | 248,000 | 12864 |
| PG-10420 |  | Final Fix - Electrical Fixtures | 6d | 2026-01-09 | 2026-01-16 | PG-10419, PG-10763 FF+6d |  |  |  | 185.49d | 0d | Elexir (Electrical) [205000 h] | 205,000 | 12865 |
|  | 1.3.1.1.4 | **Civil Finishes - Units** |  | 2024-10-24 | 2026-01-12 |  |  |  |  |  |  |  |  |  |
|  | 1.3.1.1.4.1 | **LBF** |  | 2024-10-24 | 2025-01-24 |  |  |  |  |  |  |  |  |  |
| PG-10421 |  | Back Filling above Raft | 30d | 2024-10-24 A | 2024-11-28 A | PG-10100 | 100% | 2024-10-24 | 2024-11-29 |  |  | L&T [1200000 h] | 1,200,000 | 11473 |
| PG-10422 |  | Car wash water collection sump with cap | 15d | 2024-11-18 A | 2024-12-05 A | PG-12708 FF+5d, PG-10421 FF+5d, PG-10198 FF+5d | 100% |  |  |  |  | L&T [600000 h] | 600,000 | 12034 |
| PG-10423 |  | Surface Drain to slope | 10d | 2024-11-29 A | 2024-12-11 A | PG-10422 FF+5d | 100% |  |  |  |  | L&T [400000 h] | 400,000 | 12056 |
| PG-10424 |  | Grade Slab | 10d | 2024-12-05 A | 2024-12-17 A | PG-10423 FF+5d | 100% |  |  |  |  | L&T [400000 h] | 400,000 | 12055 |
| PG-10425 |  | First Coat Painting works | 14.67d | 2024-12-11 A | 2024-12-28 A | PG-10424 FF+10d | 100% | 2024-12-11 | 2024-12-27 |  |  | Surfa Coats (Painting) [381000 h] | 381,000 | 11476 |
| PG-10426 |  | Final coat painting | 10.5d | 2025-01-07 A | 2025-01-18 A | PG-10201 | 100% | 2025-01-06 | 2025-01-17 |  |  | Surfa Coats (Painting) [273000 h] | 273,000 | 12054 |
| PG-10427 |  | Car park marking and column corner beading fixing | 8.67d | 2025-01-14 A | 2025-01-24 A | PG-10426 FF+5d | 100% | 2025-01-14 | 2025-01-23 |  |  | L&T [347000 h] | 347,000 | 12035 |
|  | 1.3.1.1.4.2 | **UBF** |  | 2024-12-11 | 2025-02-18 |  |  |  |  |  |  |  |  |  |
| PG-10428 |  | Surface Drain with Grade Slab to slope | 15d | 2024-12-11 A | 2024-12-28 A | PG-10421 FS+10d | 100% |  |  |  |  | L&T [600000 h] | 600,000 | 11478 |
| PG-10429 |  | First Coat Paint works | 11.67d | 2025-01-09 A | 2025-01-24 A | PG-10428, PG-10202 | 100% | 2025-01-09 | 2025-01-22 |  |  | Surfa Coats (Painting) [303000 h] | 303,000 | 12057 |
| PG-10430 |  | Final Coat Paint Works | 9.67d | 2025-01-24 A | 2025-02-05 A | PG-10429, PG-10204 FF+5d | 100% | 2025-01-23 | 2025-02-03 |  |  | Surfa Coats (Painting) [251000 h] | 251,000 | 11479 |
| PG-10431 |  | Car park marking and column corner beading fixing | 10.67d | 2025-02-05 A | 2025-02-18 A | PG-10430 | 100% | 2025-02-04 | 2025-02-15 |  |  | L&T [427000 h] | 427,000 | 11480 |
|  | 1.3.1.1.4.3 | **Ground Floor** |  | 2024-10-24 | 2025-01-07 |  |  |  |  |  |  |  |  |  |
|  | 1.3.1.1.4.3.1 | **Ceiling Finishing works - Civil** |  | 2024-11-04 | 2025-01-07 |  |  |  |  |  |  |  |  |  |
| PG-10432 |  | Gypsum Plastering | 6d | 2024-11-04 A | 2024-11-11 A | PG-10211 | 100% |  |  |  |  | L&T [195000 h] | 195,000 | 12038 |
| PG-10433 |  | Cornice fixing | 4d | 2024-11-20 A | 2024-11-25 A | PG-10208 FF+6d | 100% |  |  |  |  | Interiors (False celing) [62000 h] | 62,000 | 12039 |
| PG-10435 |  | Toilet False ceiling | 4d | 2024-11-28 A | 2024-12-03 A | PG-10443 FF+5d | 100% |  |  |  |  | Interiors (False celing) [86000 h] | 86,000 | 12041 |
| PG-10434 |  | Painting Works - Putty, Primer and 1st | 6d | 2024-12-09 A | 2024-12-16 A | PG-10433, PG-10438 | 100% |  |  |  |  | Surfa Coats (Painting) [130000 h] | 130,000 | 12040 |
| PG-10436 |  | Final Coat Painting | 18.5d | 2024-12-16 A | 2025-01-07 A | PG-10434, PG-10445 | 100% | 2024-12-16 | 2025-01-06 |  |  | Surfa Coats (Painting) [125000 h] | 125,000 | 12042 |

| ID | WBS | Activity | Duration | Start | Finish | Predecessors | Complete | Planned start | Planned finish | Resources | Cost | MSP Activity ID |
| --- | --- | --- | --- | --- | --- | --- | --- | --- | --- | --- | --- | --- |
|  | 1.3.1.1.4.3.2 | **Wall Finishing works - Civil** |  | 2024-10-24 | 2025-01-07 |  |  |  |  |  |  |  |
| PG-10437 |  | Balcony Railing Fixing works | 4d | 2024-10-24 A | 2024-10-29 A | PG-10100 | 100% |  |  | L&T [165000 h] | 165,000 | 12044 |
| PG-10439 |  | Dadoing - Wet area | 5d | 2024-11-15 A | 2024-11-21 A | PG-10206 | 100% |  |  | L&T [168000 h] | 168,000 | 12046 |
| PG-10438 |  | UPVC Windows & Sliding doors | 5d | 2024-12-03 A | 2024-12-09 A | PG-10437, PG-10444 FF+5d | 100% |  |  | Fenesta (UPVC Windows) [430000 h] | 430,000 | 12045 |
| PG-10440 |  | Painting Works - Putty, Primer and 1st | 6d | 2024-12-09 A | 2024-12-16 A | PG-10438 | 100% |  |  | Surfa Coats (Painting) [188000 h] | 188,000 | 12047 |
| PG-10441 |  | Final Coat Painting | 18.5d | 2024-12-16 A | 2025-01-07 A | PG-10445 | 100% | 2024-12-16 | 2025-01-06 | Surfa Coats (Painting) [172000 h] | 172,000 | 12048 |
|  | 1.3.1.1.4.3.3 | **Floor Finishing Works - Civil** |  | 2024-10-24 | 2024-12-16 |  |  |  |  |  |  |  |
| PG-10442 |  | Waterproofing for sunken areas | 3d | 2024-10-24 A | 2024-10-28 A | PG-10100 | 100% |  |  | L&T [64000 h] | 64,000 | 12050 |
| PG-10443 |  | Floor Tiling - Wet area | 5d | 2024-11-21 A | 2024-11-27 A | PG-10442, PG-10439 | 100% |  |  | L&T [126000 h] | 126,000 | 12051 |
| PG-10444 |  | Floor Tiling - Dry area | 5d | 2024-11-27 A | 2024-12-03 A | PG-10443 FF+5d | 100% |  |  | L&T [335000 h] | 335,000 | 12052 |
| PG-10445 |  | Wooden doors | 5d | 2024-12-10 A | 2024-12-16 A | PG-10440 FF | 100% |  |  | Morph (Wooden Doors) [330000 h] | 330,000 | 12053 |
|  | 1.3.1.1.4.4 | **Floor 1** |  | 2024-11-09 | 2025-01-24 |  |  |  |  |  |  |  |
|  | 1.3.1.1.4.4.1 | **Ceiling Finishing works - Civil** |  | 2024-11-19 | 2025-01-23 |  |  |  |  |  |  |  |
| PG-10446 |  | Gypsum Plastering | 6d | 2024-11-19 A | 2024-11-26 A | PG-10220 | 100% |  |  | L&T [195000 h] | 195,000 | 12186 |
| PG-10447 |  | Cornice fixing | 4d | 2024-12-05 A | 2024-12-10 A | PG-10217 FF+6d | 100% |  |  | Interiors (False celing) [62000 h] | 62,000 | 12187 |
| PG-10449 |  | Toilet False ceiling | 4d | 2024-12-14 A | 2024-12-19 A | PG-10457 FF+5d | 100% | 2024-12-13 | 2024-12-18 | Interiors (False celing) [86000 h] | 86,000 | 12189 |
| PG-10448 |  | Painting Works - Putty, Primer and 1st | 6d | 2024-12-25 A | 2025-01-01 A | PG-10447, PG-10452 | 100% | 2024-12-24 | 2024-12-31 | Surfa Coats (Painting) [130000 h] | 130,000 | 12188 |
| PG-10450 |  | Final Coat Painting | 18.5d | 2025-01-01 A | 2025-01-23 A | PG-10448, PG-10459 | 100% | 2024-12-31 | 2025-01-21 | Surfa Coats (Painting) [125000 h] | 125,000 | 12190 |
|  | 1.3.1.1.4.4.2 | **Wall Finishing works - Civil** |  | 2024-11-09 | 2025-01-24 |  |  |  |  |  |  |  |
| PG-10451 |  | Balcony Railing Fixing works | 4d | 2024-11-09 A | 2024-11-14 A | PG-10105 | 100% |  |  | L&T [165000 h] | 165,000 | 12192 |
| PG-10453 |  | Dadoing - Wet area | 5d | 2024-11-30 A | 2024-12-07 A | PG-10215 | 100% | 2024-11-30 | 2024-12-06 | L&T [168000 h] | 168,000 | 12194 |
| PG-10452 |  | UPVC Windows & Sliding doors | 5d | 2024-12-19 A | 2024-12-25 A | PG-10451, PG-10458 FF+5d | 100% | 2024-12-18 | 2024-12-24 | Fenesta (UPVC Windows) [430000 h] | 430,000 | 12193 |
| PG-10454 |  | Painting Works - Putty, Primer and 1st | 6d | 2024-12-25 A | 2025-01-01 A | PG-10452 | 100% | 2024-12-24 | 2024-12-31 | Surfa Coats (Painting) [188000 h] | 188,000 | 12195 |
| PG-10455 |  | Final Coat Painting | 18.5d | 2025-01-01 A | 2025-01-24 A | PG-10459 | 100% | 2024-12-31 | 2025-01-21 | Surfa Coats (Painting) [172000 h] | 172,000 | 12196 |

| ID | WBS | Activity | Duration | Start | Finish | Predecessors | Complete | Planned start | Planned finish | Resources | Cost | MSP Activity ID |
| --- | --- | --- | --- | --- | --- | --- | --- | --- | --- | --- | --- | --- |
|  | 1.3.1.1.4.4.3 | **Floor Finishing Works - Civil** |  | 2024-11-09 | 2025-01-01 |  |  |  |  |  |  |  |
| PG-10456 |  | Waterproofing for sunken areas | 3d | 2024-11-09 A | 2024-11-13 A | PG-10105 | 100% |  |  | L&T [64000 h] | 64,000 | 12198 |
| PG-10457 |  | Floor Tiling - Wet area | 5d | 2024-12-07 A | 2024-12-13 A | PG-10456, PG-10453 | 100% | 2024-12-06 | 2024-12-12 | L&T [126000 h] | 126,000 | 12199 |
| PG-10458 |  | Floor Tiling - Dry area | 5d | 2024-12-13 A | 2024-12-19 A | PG-10457 FF+5d | 100% | 2024-12-12 | 2024-12-18 | L&T [335000 h] | 335,000 | 12200 |
| PG-10459 |  | Wooden doors | 5d | 2024-12-26 A | 2025-01-01 A | PG-10454 FF | 100% | 2024-12-25 | 2024-12-31 | Morph (Wooden Doors) [330000 h] | 330,000 | 12201 |
|  | 1.3.1.1.4.5 | **Floor 2** |  | 2024-11-25 | 2025-02-07 |  |  |  |  |  |  |  |
|  | 1.3.1.1.4.5.1 | **Ceiling Finishing works - Civil** |  | 2024-12-04 | 2025-02-05 |  |  |  |  |  |  |  |
| PG-10460 |  | Gypsum Plastering | 6d | 2024-12-04 A | 2024-12-11 A | PG-10229 | 100% |  |  | L&T [195000 h] | 195,000 | 12204 |
| PG-10461 |  | Cornice fixing | 4d | 2024-12-21 A | 2024-12-26 A | PG-10226 FF+6d | 100% | 2024-12-20 | 2024-12-25 | Interiors (False celing) [62000 h] | 62,000 | 12205 |
| PG-10463 |  | Toilet False ceiling | 4d | 2024-12-28 A | 2025-01-02 A | PG-10471 FF+5d | 100% |  |  | Interiors (False celing) [86000 h] | 86,000 | 12207 |
| PG-10462 |  | Painting Works - Putty, Primer and 1st | 6d | 2025-01-08 A | 2025-01-15 A | PG-10461, PG-10466 | 100% |  |  | Surfa Coats (Painting) [130000 h] | 130,000 | 12206 |
| PG-10464 |  | Final Coat Painting | 18.5d | 2025-01-15 A | 2025-02-05 A | PG-10462, PG-10473 | 100% |  |  | Surfa Coats (Painting) [125000 h] | 125,000 | 12208 |
|  | 1.3.1.1.4.5.2 | **Wall Finishing works - Civil** |  | 2024-11-25 | 2025-02-07 |  |  |  |  |  |  |  |
| PG-10465 |  | Balcony Railing Fixing works | 4d | 2024-11-25 A | 2024-11-29 A | PG-10110 | 100% |  |  | L&T [165000 h] | 165,000 | 12210 |
| PG-10467 |  | Dadoing - Wet area | 5d | 2024-12-16 A | 2024-12-21 A | PG-10224 | 100% |  |  | L&T [168000 h] | 168,000 | 12212 |
| PG-10466 |  | UPVC Windows & Sliding doors | 5d | 2025-01-02 A | 2025-01-08 A | PG-10465, PG-10472 FF+5d | 100% |  |  | Fenesta (UPVC Windows) [430000 h] | 430,000 | 12211 |
| PG-10468 |  | Painting Works - Putty, Primer and 1st | 6d | 2025-01-08 A | 2025-01-15 A | PG-10466 | 100% |  |  | Surfa Coats (Painting) [188000 h] | 188,000 | 12213 |
| PG-10469 |  | Final Coat Painting | 18.5d | 2025-01-15 A | 2025-02-07 A | PG-10473 | 100% | 2025-01-15 | 2025-02-05 | Surfa Coats (Painting) [172000 h] | 172,000 | 12214 |
|  | 1.3.1.1.4.5.3 | **Floor Finishing Works - Civil** |  | 2024-11-25 | 2025-01-15 |  |  |  |  |  |  |  |
| PG-10470 |  | Waterproofing for sunken areas | 3d | 2024-11-25 A | 2024-11-28 A | PG-10110 | 100% |  |  | L&T [64000 h] | 64,000 | 12216 |
| PG-10471 |  | Floor Tiling - Wet area | 5d | 2024-12-21 A | 2024-12-27 A | PG-10470, PG-10467 | 100% |  |  | L&T [126000 h] | 126,000 | 12217 |
| PG-10472 |  | Floor Tiling - Dry area | 5d | 2024-12-27 A | 2025-01-02 A | PG-10471 FF+5d | 100% |  |  | L&T [335000 h] | 335,000 | 12218 |
| PG-10473 |  | Wooden doors | 5d | 2025-01-09 A | 2025-01-15 A | PG-10468 FF | 100% |  |  | Morph (Wooden Doors) [330000 h] | 330,000 | 12219 |
|  | 1.3.1.1.4.6 | **Floor 3** |  | 2024-12-10 | 2025-02-25 |  |  |  |  |  |  |  |
|  | 1.3.1.1.4.6.1 | **Ceiling Finishing works - Civil** |  | 2024-12-19 | 2025-02-24 |  |  |  |  |  |  |  |
| PG-10474 |  | Gypsum Plastering | 6d | 2024-12-19 A | 2024-12-26 A | PG-10238 | 100% |  |  | L&T [195000 h] | 195,000 | 12248 |
| PG-10475 |  | Cornice fixing | 4d | 2025-01-04 A | 2025-01-09 A | PG-10235 FF+6d | 100% |  |  | Interiors (False celing) [62000 h] | 62,000 | 12249 |
| PG-10477 |  | Toilet False ceiling | 4d | 2025-01-14 A | 2025-01-18 A | PG-10485 FF+5d | 100% | 2025-01-13 | 2025-01-17 | Interiors (False celing) [86000 h] | 86,000 | 12251 |
| PG-10476 |  | Painting Works - Putty, Primer and 1st | 6d | 2025-01-24 A | 2025-01-30 A | PG-10475, PG-10480 | 100% | 2025-01-23 | 2025-01-30 | Surfa Coats (Painting) [130000 h] | 130,000 | 12250 |
| PG-10478 |  | Final Coat Painting | 19.5d | 2025-01-31 A | 2025-02-24 A | PG-10476, PG-10487 | 100% | 2025-01-30 | 2025-02-21 | Surfa Coats (Painting) [125000 h] | 125,000 | 12252 |

| ID | WBS | Activity | Duration | Start | Finish | Predecessors | Complete | Planned start | Planned finish | Resources | Cost | MSP Activity ID |
| --- | --- | --- | --- | --- | --- | --- | --- | --- | --- | --- | --- | --- |
|  | 1.3.1.1.4.6.2 | **Wall Finishing works - Civil** |  | 2024-12-10 | 2025-02-25 |  |  |  |  |  |  |  |
| PG-10479 |  | Balcony Railing Fixing works | 4d | 2024-12-10 A | 2024-12-14 A | PG-10115 | 100% |  |  | L&T [165000 h] | 165,000 | 12254 |
| PG-10481 |  | Dadoing - Wet area | 5d | 2025-01-01 A | 2025-01-07 A | PG-10233 | 100% | 2024-12-31 | 2025-01-06 | L&T [168000 h] | 168,000 | 12256 |
| PG-10480 |  | UPVC Windows & Sliding doors | 5d | 2025-01-18 A | 2025-01-24 A | PG-10479, PG-10486 FF+5d | 100% | 2025-01-17 | 2025-01-23 | Fenesta (UPVC Windows) [430000 h] | 430,000 | 12255 |
| PG-10482 |  | Painting Works - Putty, Primer and 1st | 6d | 2025-01-24 A | 2025-01-31 A | PG-10480 | 100% | 2025-01-23 | 2025-01-30 | Surfa Coats (Painting) [188000 h] | 188,000 | 12257 |
| PG-10483 |  | Final Coat Painting | 19.5d | 2025-01-31 A | 2025-02-25 A | PG-10487 | 100% | 2025-01-30 | 2025-02-21 | Surfa Coats (Painting) [172000 h] | 172,000 | 12258 |
|  | 1.3.1.1.4.6.3 | **Floor Finishing Works - Civil** |  | 2024-12-10 | 2025-01-31 |  |  |  |  |  |  |  |
| PG-10484 |  | Waterproofing for sunken areas | 3d | 2024-12-10 A | 2024-12-13 A | PG-10115 | 100% |  |  | L&T [64000 h] | 64,000 | 12260 |
| PG-10485 |  | Floor Tiling - Wet area | 5d | 2025-01-07 A | 2025-01-13 A | PG-10481 | 100% | 2025-01-06 | 2025-01-11 | L&T [126000 h] | 126,000 | 12261 |
| PG-10486 |  | Floor Tiling - Dry area | 5d | 2025-01-13 A | 2025-01-18 A | PG-10485 FF+5d | 100% | 2025-01-11 | 2025-01-17 | L&T [335000 h] | 335,000 | 12262 |
| PG-10487 |  | Wooden doors | 5d | 2025-01-25 A | 2025-01-31 A | PG-10484, PG-10482 FF | 100% | 2025-01-24 | 2025-01-30 | Morph (Wooden Doors) [330000 h] | 330,000 | 12263 |
|  | 1.3.1.1.4.7 | **Floor 4** |  | 2024-12-25 | 2025-03-10 |  |  |  |  |  |  |  |
|  | 1.3.1.1.4.7.1 | **Ceiling Finishing works - Civil** |  | 2025-01-03 | 2025-03-10 |  |  |  |  |  |  |  |
| PG-10488 |  | Gypsum Plastering | 6d | 2025-01-03 A | 2025-01-11 A | PG-10247 | 100% | 2025-01-03 | 2025-01-10 | L&T [195000 h] | 195,000 | 12279 |
| PG-10489 |  | Cornice fixing | 4d | 2025-01-20 A | 2025-01-24 A | PG-10244 FF+6d | 100% |  |  | Interiors (False celing) [62000 h] | 62,000 | 12280 |
| PG-10491 |  | Toilet False ceiling | 4d | 2025-01-29 A | 2025-02-03 A | PG-10499 FF+5d | 100% | 2025-01-28 | 2025-02-01 | Interiors (False celing) [86000 h] | 86,000 | 12282 |
| PG-10490 |  | Painting Works - Putty, Primer and 1st | 6d | 2025-02-07 A | 2025-02-15 A | PG-10489, PG-10494 | 100% | 2025-02-07 | 2025-02-14 | Surfa Coats (Painting) [130000 h] | 130,000 | 12281 |
| PG-10492 |  | Final Coat Painting | 18.5d | 2025-02-15 A | 2025-03-10 A | PG-10490, PG-10501 | 100% | 2025-02-14 | 2025-03-07 | Surfa Coats (Painting) [125000 h] | 125,000 | 12283 |
|  | 1.3.1.1.4.7.2 | **Wall Finishing works - Civil** |  | 2024-12-25 | 2025-03-10 |  |  |  |  |  |  |  |
| PG-10493 |  | Balcony Railing Fixing works | 4d | 2024-12-25 A | 2024-12-30 A | PG-10120 | 100% |  |  | L&T [165000 h] | 165,000 | 12285 |
| PG-10495 |  | Dadoing - Wet area | 5d | 2025-01-15 A | 2025-01-22 A | PG-10242 | 100% | 2025-01-15 | 2025-01-21 | L&T [168000 h] | 168,000 | 12287 |
| PG-10494 |  | UPVC Windows & Sliding doors | 5d | 2025-02-03 A | 2025-02-07 A | PG-10493, PG-10500 FF+5d | 100% | 2025-02-01 | 2025-02-07 | Fenesta (UPVC Windows) [430000 h] | 430,000 | 12286 |
| PG-10496 |  | Painting Works - Putty, Primer and 1st | 6d | 2025-02-07 A | 2025-02-14 A | PG-10494 | 100% |  |  | Surfa Coats (Painting) [188000 h] | 188,000 | 12288 |
| PG-10497 |  | Final Coat Painting | 18.5d | 2025-02-14 A | 2025-03-10 A | PG-10501 | 100% | 2025-02-14 | 2025-03-07 | Surfa Coats (Painting) [172000 h] | 172,000 | 12289 |

| ID | WBS | Activity | Duration | Start | Finish | Predecessors | Complete | Planned start | Planned finish | Resources | Cost | MSP Activity ID |
| --- | --- | --- | --- | --- | --- | --- | --- | --- | --- | --- | --- | --- |
|  | 1.3.1.1.4.7.3 | **Floor Finishing Works - Civil** |  | 2024-12-25 | 2025-02-14 |  |  |  |  |  |  |  |
| PG-10498 |  | Waterproofing for sunken areas | 3d | 2024-12-25 A | 2024-12-28 A | PG-10120 | 100% |  |  | L&T [64000 h] | 64,000 | 12291 |
| PG-10499 |  | Floor Tiling - Wet area | 5d | 2025-01-22 A | 2025-01-28 A | PG-10498, PG-10495 | 100% | 2025-01-21 | 2025-01-27 | L&T [126000 h] | 126,000 | 12292 |
| PG-10500 |  | Floor Tiling - Dry area | 5d | 2025-01-28 A | 2025-02-03 A | PG-10499 FF+5d | 100% | 2025-01-27 | 2025-02-01 | L&T [335000 h] | 335,000 | 12293 |
| PG-10501 |  | Wooden doors | 5d | 2025-02-08 A | 2025-02-14 A | PG-10496 FF | 100% |  |  | Morph (Wooden Doors) [330000 h] | 330,000 | 12294 |
|  | 1.3.1.1.4.8 | **Floor 5** |  | 2025-01-09 | 2025-03-26 |  |  |  |  |  |  |  |
|  | 1.3.1.1.4.8.1 | **Ceiling Finishing works - Civil** |  | 2025-01-18 | 2025-03-26 |  |  |  |  |  |  |  |
| PG-10502 |  | Gypsum Plastering | 6d | 2025-01-18 A | 2025-01-25 A | PG-10256 | 100% |  |  | L&T [195000 h] | 195,000 | 12310 |
| PG-10503 |  | Cornice fixing | 4d | 2025-02-04 A | 2025-02-08 A | PG-10253 FF+6d | 100% |  |  | Interiors (False celing) [62000 h] | 62,000 | 12311 |
| PG-10505 |  | Toilet False ceiling | 4d | 2025-02-12 A | 2025-02-17 A | PG-10513 FF+5d | 100% |  |  | Interiors (False celing) [86000 h] | 86,000 | 12313 |
| PG-10504 |  | Painting Works - Putty, Primer and 1st | 6d | 2025-02-22 A | 2025-03-01 A | PG-10503, PG-10508 | 100% |  |  | Surfa Coats (Painting) [130000 h] | 130,000 | 12312 |
| PG-10506 |  | Final Coat Painting | 18.67d | 2025-03-03 A | 2025-03-26 A | PG-10504, PG-10515 | 100% | 2025-03-01 | 2025-03-22 | Surfa Coats (Painting) [125000 h] | 125,000 | 12314 |
|  | 1.3.1.1.4.8.2 | **Wall Finishing works - Civil** |  | 2025-01-09 | 2025-03-25 |  |  |  |  |  |  |  |
| PG-10507 |  | Balcony Railing Fixing works | 4d | 2025-01-09 A | 2025-01-14 A | PG-10125 | 100% |  |  | L&T [165000 h] | 165,000 | 12316 |
| PG-10509 |  | Dadoing - Wet area | 5d | 2025-01-30 A | 2025-02-05 A | PG-10251 | 100% |  |  | L&T [168000 h] | 168,000 | 12318 |
| PG-10508 |  | UPVC Windows & Sliding doors | 5d | 2025-02-17 A | 2025-02-22 A | PG-10507, PG-10514 FF+5d | 100% |  |  | Fenesta (UPVC Windows) [430000 h] | 430,000 | 12317 |
| PG-10510 |  | Painting Works - Putty, Primer and 1st | 6d | 2025-02-22 A | 2025-03-03 A | PG-10508 | 100% | 2025-02-22 | 2025-03-01 | Surfa Coats (Painting) [188000 h] | 188,000 | 12319 |
| PG-10511 |  | Final Coat Painting | 18.67d | 2025-03-03 A | 2025-03-25 A | PG-10515 | 100% | 2025-03-01 | 2025-03-22 | Surfa Coats (Painting) [172000 h] | 172,000 | 12320 |
|  | 1.3.1.1.4.8.3 | **Floor Finishing Works - Civil** |  | 2025-01-09 | 2025-03-03 |  |  |  |  |  |  |  |
| PG-10512 |  | Waterproofing for sunken areas | 3d | 2025-01-09 A | 2025-01-13 A | PG-10125 | 100% |  |  | L&T [64000 h] | 64,000 | 12322 |
| PG-10513 |  | Floor Tiling - Wet area | 5d | 2025-02-05 A | 2025-02-11 A | PG-10512, PG-10509 | 100% |  |  | L&T [126000 h] | 126,000 | 12323 |
| PG-10514 |  | Floor Tiling - Dry area | 5d | 2025-02-11 A | 2025-02-17 A | PG-10513 FF+5d | 100% |  |  | L&T [335000 h] | 335,000 | 12324 |
| PG-10515 |  | Wooden doors | 5d | 2025-02-25 A | 2025-03-03 A | PG-10510 FF | 100% | 2025-02-24 | 2025-03-01 | Morph (Wooden Doors) [330000 h] | 330,000 | 12325 |
|  | 1.3.1.1.4.9 | **Floor 6** |  | 2025-01-24 | 2025-04-10 |  |  |  |  |  |  |  |
|  | 1.3.1.1.4.9.1 | **Ceiling Finishing works - Civil** |  | 2025-02-03 | 2025-04-09 |  |  |  |  |  |  |  |
| PG-10516 |  | Gypsum Plastering | 6d | 2025-02-03 A | 2025-02-10 A | PG-10265 | 100% |  |  | L&T [195000 h] | 195,000 | 12341 |
| PG-10517 |  | Cornice fixing | 4d | 2025-02-19 A | 2025-02-24 A | PG-10262 FF+6d | 100% |  |  | Interiors (False celing) [62000 h] | 62,000 | 12342 |
| PG-10519 |  | Toilet False ceiling | 4d | 2025-02-28 A | 2025-03-05 A | PG-10527 FF+5d | 100% | 2025-02-27 | 2025-03-04 | Interiors (False celing) [86000 h] | 86,000 | 12344 |
| PG-10518 |  | Painting Works - Putty, Primer and 1st | 6d | 2025-03-10 A | 2025-03-18 A | PG-10517, PG-10522 | 100% | 2025-03-10 | 2025-03-17 | Surfa Coats (Painting) [130000 h] | 130,000 | 12343 |
| PG-10520 |  | Final Coat Painting | 18.67d | 2025-03-18 A | 2025-04-09 A | PG-10518, PG-10529 | 100% | 2025-03-17 | 2025-04-07 | Surfa Coats (Painting) [125000 h] | 125,000 | 12345 |

| ID | WBS | Activity | Duration | Start | Finish | Predecessors | Complete | Planned start | Planned finish | Resources | Cost | MSP Activity ID |
| --- | --- | --- | --- | --- | --- | --- | --- | --- | --- | --- | --- | --- |
|  | 1.3.1.1.4.9.2 | **Wall Finishing works - Civil** |  | 2025-01-24 | 2025-04-10 |  |  |  |  |  |  |  |
| PG-10521 |  | Balcony Railing Fixing works | 4d | 2025-01-24 A | 2025-01-29 A | PG-10130 | 100% |  |  | L&T [165000 h] | 165,000 | 12347 |
| PG-10523 |  | Dadoing - Wet area | 5d | 2025-02-15 A | 2025-02-21 A | PG-10260 | 100% | 2025-02-14 | 2025-02-20 | L&T [168000 h] | 168,000 | 12349 |
| PG-10522 |  | UPVC Windows & Sliding doors | 5d | 2025-03-04 A | 2025-03-10 A | PG-10521, PG-10528 FF+5d | 100% |  |  | Fenesta (UPVC Windows) [430000 h] | 430,000 | 12348 |
| PG-10524 |  | Painting Works - Putty, Primer and 1st | 6d | 2025-03-10 A | 2025-03-17 A | PG-10522 | 100% |  |  | Surfa Coats (Painting) [188000 h] | 188,000 | 12350 |
| PG-10525 |  | Final Coat Painting | 18.67d | 2025-03-17 A | 2025-04-10 A | PG-10529 | 100% | 2025-03-17 | 2025-04-07 | Surfa Coats (Painting) [172000 h] | 172,000 | 12351 |
|  | 1.3.1.1.4.9.3 | **Floor Finishing Works - Civil** |  | 2025-01-24 | 2025-03-17 |  |  |  |  |  |  |  |
| PG-10526 |  | Waterproofing for sunken areas | 3d | 2025-01-24 A | 2025-01-28 A | PG-10130 | 100% |  |  | L&T [64000 h] | 64,000 | 12353 |
| PG-10527 |  | Floor Tiling - Wet area | 5d | 2025-02-21 A | 2025-02-27 A | PG-10526, PG-10523 | 100% | 2025-02-20 | 2025-02-26 | L&T [126000 h] | 126,000 | 12354 |
| PG-10528 |  | Floor Tiling - Dry area | 5d | 2025-02-27 A | 2025-03-04 A | PG-10527 FF+5d | 100% | 2025-02-26 | 2025-03-04 | L&T [335000 h] | 335,000 | 12355 |
| PG-10529 |  | Wooden doors | 5d | 2025-03-11 A | 2025-03-17 A | PG-10524 FF | 100% |  |  | Morph (Wooden Doors) [330000 h] | 330,000 | 12356 |
|  | 1.3.1.1.4.10 | **Floor 7** |  | 2025-02-08 | 2025-04-25 |  |  |  |  |  |  |  |
|  | 1.3.1.1.4.10.1 | **Ceiling Finishing works - Civil** |  | 2025-02-19 | 2025-04-25 |  |  |  |  |  |  |  |
| PG-10530 |  | Gypsum Plastering | 6d | 2025-02-19 A | 2025-02-25 A | PG-10274 | 100% | 2025-02-18 | 2025-02-25 | L&T [195000 h] | 195,000 | 12372 |
| PG-10531 |  | Cornice fixing | 4d | 2025-03-07 A | 2025-03-12 A | PG-10271 FF+6d | 100% | 2025-03-06 | 2025-03-11 | Interiors (False celing) [62000 h] | 62,000 | 12373 |
| PG-10533 |  | Toilet False ceiling | 4d | 2025-03-17 A | 2025-03-21 A | PG-10541 FF+5d | 100% | 2025-03-14 | 2025-03-19 | Interiors (False celing) [86000 h] | 86,000 | 12375 |
| PG-10532 |  | Painting Works - Putty, Primer and 1st | 6d | 2025-03-27 A | 2025-04-03 A | PG-10531, PG-10536 | 100% |  |  | Surfa Coats (Painting) [130000 h] | 130,000 | 12374 |
| PG-10534 |  | Final Coat Painting | 19.5d | 2025-04-03 A | 2025-04-25 A | PG-10532, PG-10543 | 100% | 2025-04-02 | 2025-04-24 | Surfa Coats (Painting) [125000 h] | 125,000 | 12376 |
|  | 1.3.1.1.4.10.2 | **Wall Finishing works - Civil** |  | 2025-02-08 | 2025-04-25 |  |  |  |  |  |  |  |
| PG-10535 |  | Balcony Railing Fixing works | 4d | 2025-02-08 A | 2025-02-13 A | PG-10135 | 100% |  |  | L&T [165000 h] | 165,000 | 12378 |
| PG-10537 |  | Dadoing - Wet area | 5d | 2025-03-04 A | 2025-03-10 A | PG-10269 | 100% | 2025-03-01 | 2025-03-07 | L&T [168000 h] | 168,000 | 12380 |
| PG-10536 |  | UPVC Windows & Sliding doors | 5d | 2025-03-21 A | 2025-03-27 A | PG-10535, PG-10542 FF+5d | 100% | 2025-03-19 | 2025-03-25 | Fenesta (UPVC Windows) [430000 h] | 430,000 | 12379 |
| PG-10538 |  | Painting Works - Putty, Primer and 1st | 6d | 2025-03-27 A | 2025-04-03 A | PG-10536 | 100% |  |  | Surfa Coats (Painting) [188000 h] | 188,000 | 12381 |
| PG-10539 |  | Final Coat Painting | 19.5d | 2025-04-03 A | 2025-04-25 A | PG-10543 | 100% | 2025-04-02 | 2025-04-24 | Surfa Coats (Painting) [172000 h] | 172,000 | 12382 |

| ID | WBS | Activity | Duration | Start | Finish | Predecessors | Complete | Remaining | Planned start | Planned finish | Total float | Free float | Resources | Cost | MSP Activity ID |
| --- | --- | --- | --- | --- | --- | --- | --- | --- | --- | --- | --- | --- | --- | --- | --- |
|  | 1.3.1.1.4.10.3 | **Floor Finishing Works - Civil** |  | 2025-02-08 | 2025-04-03 |  |  |  |  |  |  |  |  |  |  |
| PG-10540 |  | Waterproofing for sunken areas | 3d | 2025-02-08 A | 2025-02-12 A | PG-10135 | 100% |  |  |  |  |  | L&T [64000 h] | 64,000 | 12384 |
| PG-10541 |  | Floor Tiling - Wet area | 5d | 2025-03-10 A | 2025-03-15 A | PG-10537 | 100% |  | 2025-03-07 | 2025-03-13 |  |  | L&T [126000 h] | 126,000 | 12385 |
| PG-10542 |  | Floor Tiling - Dry area | 5d | 2025-03-15 A | 2025-03-21 A | PG-10541 FF+5d | 100% |  | 2025-03-13 | 2025-03-19 |  |  | L&T [335000 h] | 335,000 | 12386 |
| PG-10543 |  | Wooden doors | 5d | 2025-03-28 A | 2025-04-03 A | PG-10540, PG-10538 FF | 100% |  |  |  |  |  | Morph (Wooden Doors) [330000 h] | 330,000 | 12387 |
|  | 1.3.1.1.4.11 | **Floor 8** |  | 2025-02-25 | 2025-05-09 |  |  |  |  |  |  |  |  |  |  |
|  | 1.3.1.1.4.11.1 | **Ceiling Finishing works - Civil** |  | 2025-03-06 | 2025-05-07 |  |  |  |  |  |  |  |  |  |  |
| PG-10544 |  | Gypsum Plastering | 6d | 2025-03-06 A | 2025-03-13 A | PG-10283 | 100% |  | 2025-03-05 | 2025-03-12 |  |  | L&T [195000 h] | 195,000 | 12403 |
| PG-10545 |  | Cornice fixing | 4d | 2025-03-24 A | 2025-03-28 A | PG-10280 FF+6d | 100% |  |  |  |  |  | Interiors (False celing) [62000 h] | 62,000 | 12404 |
| PG-10547 |  | Toilet False ceiling | 4d | 2025-03-31 A | 2025-04-04 A | PG-10555 FF+5d | 100% |  | 2025-03-29 | 2025-04-03 |  |  | Interiors (False celing) [86000 h] | 86,000 | 12406 |
| PG-10546 |  | Painting Works - Putty, Primer and 1st | 6d | 2025-04-10 A | 2025-04-16 A | PG-10545, PG-10550 | 100% |  | 2025-04-10 | 2025-04-17 |  |  | Surfa Coats (Painting) [130000 h] | 130,000 | 12405 |
| PG-10548 |  | Final Coat Painting | 18.5d | 2025-04-17 A | 2025-05-07 | PG-10546, PG-10557 | 41% | 11d | 2025-04-16 | 2025-05-07 | 427.67d | 36.03d | Surfa Coats (Painting) [125000 h] | 125,000 | 12407 |
|  | 1.3.1.1.4.11.2 | **Wall Finishing works - Civil** |  | 2025-02-25 | 2025-05-09 |  |  |  |  |  |  |  |  |  |  |
| PG-10549 |  | Balcony Railing Fixing works | 4d | 2025-02-25 A | 2025-03-01 A | PG-10140 | 100% |  | 2025-02-24 | 2025-02-28 |  |  | L&T [165000 h] | 165,000 | 12409 |
| PG-10551 |  | Dadoing - Wet area | 5d | 2025-03-17 A | 2025-03-22 A | PG-10278 | 100% |  |  |  |  |  | L&T [168000 h] | 168,000 | 12411 |
| PG-10550 |  | UPVC Windows & Sliding doors | 5d | 2025-04-04 A | 2025-04-10 A | PG-10549, PG-10556 FF+5d | 100% |  | 2025-04-03 | 2025-04-09 |  |  | Fenesta (UPVC Windows) [430000 h] | 430,000 | 12410 |
| PG-10552 |  | Painting Works - Putty, Primer and 1st | 6d | 2025-04-10 A | 2025-04-17 A | PG-10550 | 100% |  |  |  |  |  | Surfa Coats (Painting) [188000 h] | 188,000 | 12412 |
| PG-10553 |  | Final Coat Painting | 18.5d | 2025-04-17 A | 2025-05-09 | PG-10557 | 33% | 12.36d | 2025-04-16 | 2025-05-07 | 391.64d | 0d | Surfa Coats (Painting) [172000 h] | 172,000 | 12413 |
|  | 1.3.1.1.4.11.3 | **Floor Finishing Works - Civil** |  | 2025-02-25 | 2025-04-17 |  |  |  |  |  |  |  |  |  |  |
| PG-10554 |  | Waterproofing for sunken areas | 3d | 2025-02-25 A | 2025-02-27 A | PG-10140 | 100% |  | 2025-02-24 | 2025-02-27 |  |  | L&T [64000 h] | 64,000 | 12415 |
| PG-10555 |  | Floor Tiling - Wet area | 5d | 2025-03-22 A | 2025-03-29 A | PG-10554, PG-10551 | 100% |  | 2025-03-22 | 2025-03-28 |  |  | L&T [126000 h] | 126,000 | 12416 |
| PG-10556 |  | Floor Tiling - Dry area | 5d | 2025-03-29 A | 2025-04-04 A | PG-10555 FF+5d | 100% |  | 2025-03-28 | 2025-04-03 |  |  | L&T [335000 h] | 335,000 | 12417 |
| PG-10557 |  | Wooden doors | 5d | 2025-04-11 A | 2025-04-17 A | PG-10552 FF | 100% |  |  |  |  |  | Morph (Wooden Doors) [330000 h] | 330,000 | 12418 |
|  | 1.3.1.1.4.12 | **Floor 9** |  | 2025-03-12 | 2025-05-22 |  |  |  |  |  |  |  |  |  |  |
|  | 1.3.1.1.4.12.1 | **Ceiling Finishing works - Civil** |  | 2025-03-20 | 2025-05-22 |  |  |  |  |  |  |  |  |  |  |
| PG-10558 |  | Gypsum Plastering | 6d | 2025-03-20 A | 2025-03-28 A | PG-10292 | 100% |  | 2025-03-20 | 2025-03-27 |  |  | L&T [195000 h] | 195,000 | 12434 |
| PG-10559 |  | Cornice fixing | 4d | 2025-04-07 A | 2025-04-12 A | PG-10289 FF+6d | 100% |  | 2025-04-07 | 2025-04-11 |  |  | Interiors (False celing) [62000 h] | 62,000 | 12435 |
| PG-10561 |  | Toilet False ceiling | 4d | 2025-04-15 A | 2025-04-19 A | PG-10569 FF+5d | 100% |  | 2025-04-14 | 2025-04-18 |  |  | Interiors (False celing) [86000 h] | 86,000 | 12437 |
| PG-10560 |  | Painting Works - Putty, Primer and 1st | 6d | 2025-04-25 A | 2025-04-30 | PG-10559, PG-10564 | 18% | 4.91d | 2025-04-25 | 2025-05-02 | 416.42d | 0.24d | Surfa Coats (Painting) [130000 h] | 130,000 | 12436 |
| PG-10562 |  | Final Coat Painting | 18.33d | 2025-05-01 | 2025-05-22 | PG-10560, PG-10571 |  |  |  |  | 416.18d | 34.67d | Surfa Coats (Painting) [125000 h] | 125,000 | 12438 |

| ID | WBS | Activity | Duration | Start | Finish | Predecessors | Complete | Remaining | Planned start | Planned finish | Total float | Free float | Resources | Cost | MSP Activity ID |
| --- | --- | --- | --- | --- | --- | --- | --- | --- | --- | --- | --- | --- | --- | --- | --- |
|  | 1.3.1.1.4.12.2 | **Wall Finishing works - Civil** |  | 2025-03-12 | 2025-05-22 |  |  |  |  |  |  |  |  |  |  |
| PG-10563 |  | Balcony Railing Fixing works | 4d | 2025-03-12 A | 2025-03-17 A | PG-10145 | 100% |  | 2025-03-11 | 2025-03-15 |  |  | L&T [165000 h] | 165,000 | 12440 |
| PG-10565 |  | Dadoing - Wet area | 5d | 2025-04-02 A | 2025-04-08 A | PG-10287 | 100% |  |  |  |  |  | L&T [168000 h] | 168,000 | 12442 |
| PG-10564 |  | UPVC Windows & Sliding doors | 5d | 2025-04-19 A | 2025-04-25 A | PG-10563, PG-10570 FF+5d | 100% |  |  |  |  |  | Fenesta (UPVC Windows) [430000 h] | 430,000 | 12441 |
| PG-10566 |  | Painting Works - Putty, Primer and 1st | 6d | 2025-04-25 A | 2025-05-01 | PG-10564 | 14% | 5.15d | 2025-04-25 | 2025-05-02 | 381.52d | 0d | Surfa Coats (Painting) [188000 h] | 188,000 | 12443 |
| PG-10567 |  | Final Coat Painting | 18.33d | 2025-05-01 | 2025-05-22 | PG-10571 |  |  |  |  | 381.52d | 0d | Surfa Coats (Painting) [172000 h] | 172,000 | 12444 |
|  | 1.3.1.1.4.12.3 | **Floor Finishing Works - Civil** |  | 2025-03-12 | 2025-05-01 |  |  |  |  |  |  |  |  |  |  |
| PG-10568 |  | Waterproofing for sunken areas | 3d | 2025-03-12 A | 2025-03-15 A | PG-10145 | 100% |  | 2025-03-11 | 2025-03-14 |  |  | L&T [64000 h] | 64,000 | 12446 |
| PG-10569 |  | Floor Tiling - Wet area | 5d | 2025-04-08 A | 2025-04-14 A | PG-10568, PG-10565 | 100% |  | 2025-04-07 | 2025-04-12 |  |  | L&T [126000 h] | 126,000 | 12447 |
| PG-10570 |  | Floor Tiling - Dry area | 5d | 2025-04-14 A | 2025-04-19 A | PG-10569 FF+5d | 100% |  | 2025-04-12 | 2025-04-18 |  |  | L&T [335000 h] | 335,000 | 12448 |
| PG-10571 |  | Wooden doors | 5d | 2025-04-25 | 2025-05-01 | PG-10566 FF |  |  |  |  | 381.52d | 0d | Morph (Wooden Doors) [330000 h] | 330,000 | 12449 |
|  | 1.3.1.1.4.13 | **Floor 10** |  | 2025-03-27 | 2025-06-05 |  |  |  |  |  |  |  |  |  |  |
|  | 1.3.1.1.4.13.1 | **Ceiling Finishing works - Civil** |  | 2025-04-04 | 2025-06-05 |  |  |  |  |  |  |  |  |  |  |
| PG-10572 |  | Gypsum Plastering | 6d | 2025-04-04 A | 2025-04-12 A | PG-10301 | 100% |  | 2025-04-03 | 2025-04-10 |  |  | L&T [195000 h] | 195,000 | 12465 |
| PG-10573 |  | Cornice fixing | 4d | 2025-04-22 A | 2025-04-26 | PG-10298 FF+6d | 85% | 0.6d |  |  | 415.5d | 10.57d | Interiors (False celing) [62000 h] | 62,000 | 12466 |
| PG-10575 |  | Toilet False ceiling | 4d | 2025-04-29 | 2025-05-03 | PG-10583 FF+5d |  |  |  |  | 393.1d | 24.83d | Interiors (False celing) [86000 h] | 86,000 | 12468 |
| PG-10574 |  | Painting Works - Putty, Primer and 1st | 6d | 2025-05-09 | 2025-05-16 | PG-10573, PG-10578 |  |  |  |  | 404.93d | 0d | Surfa Coats (Painting) [130000 h] | 130,000 | 12467 |
| PG-10576 |  | Final Coat Painting | 17.33d | 2025-05-16 | 2025-06-05 | PG-10574, PG-10585 |  |  |  |  | 404.93d | 36.67d | Surfa Coats (Painting) [125000 h] | 125,000 | 12469 |
|  | 1.3.1.1.4.13.2 | **Wall Finishing works - Civil** |  | 2025-03-27 | 2025-06-05 |  |  |  |  |  |  |  |  |  |  |
| PG-10577 |  | Balcony Railing Fixing works | 4d | 2025-03-27 A | 2025-04-01 A | PG-10150 | 100% |  |  |  |  |  | L&T [165000 h] | 165,000 | 12471 |
| PG-10579 |  | Dadoing - Wet area | 5d | 2025-04-17 A | 2025-04-23 A | PG-10296 | 100% |  |  |  |  |  | L&T [168000 h] | 168,000 | 12473 |
| PG-10578 |  | UPVC Windows & Sliding doors | 5d | 2025-05-03 | 2025-05-09 | PG-10577, PG-10584 FF+5d |  |  |  |  | 368.27d | 0d | Fenesta (UPVC Windows) [430000 h] | 430,000 | 12472 |
| PG-10580 |  | Painting Works - Putty, Primer and 1st | 6d | 2025-05-09 | 2025-05-16 | PG-10578 |  |  |  |  | 368.27d | 0d | Surfa Coats (Painting) [188000 h] | 188,000 | 12474 |
| PG-10581 |  | Final Coat Painting | 17.33d | 2025-05-16 | 2025-06-05 | PG-10585 |  |  |  |  | 368.27d | 0d | Surfa Coats (Painting) [172000 h] | 172,000 | 12475 |

| ID | WBS | Activity | Duration | Start | Finish | Predecessors | Complete | Remaining | Planned start | Planned finish | Total float | Free float | Resources | Cost | MSP Activity ID |
| --- | --- | --- | --- | --- | --- | --- | --- | --- | --- | --- | --- | --- | --- | --- | --- |
|  | 1.3.1.1.4.13.3 | **Floor Finishing Works - Civil** |  | 2025-03-27 | 2025-05-16 |  |  |  |  |  |  |  |  |  |  |
| PG-10582 |  | Waterproofing for sunken areas | 3d | 2025-03-27 A | 2025-03-31 A | PG-10150 | 100% |  |  |  |  |  | L&T [64000 h] | 64,000 | 12477 |
| PG-10583 |  | Floor Tiling - Wet area | 5d | 2025-04-23 A | 2025-04-28 | PG-10582, PG-10579 | 52% | 2.4d | 2025-04-22 | 2025-04-28 | 368.27d | 0d | L&T [126000 h] | 126,000 | 12478 |
| PG-10584 |  | Floor Tiling - Dry area | 5d | 2025-04-28 | 2025-05-03 | PG-10583 FF+5d |  |  |  |  | 368.27d | 0d | L&T [335000 h] | 335,000 | 12479 |
| PG-10585 |  | Wooden doors | 5d | 2025-05-10 | 2025-05-16 | PG-10580 FF |  |  |  |  | 368.27d | 0d | Morph (Wooden Doors) [330000 h] | 330,000 | 12480 |
|  | 1.3.1.1.4.14 | **Floor 11** |  | 2025-04-09 | 2025-06-20 |  |  |  |  |  |  |  |  |  |  |
|  | 1.3.1.1.4.14.1 | **Ceiling Finishing works - Civil** |  | 2025-04-18 | 2025-06-20 |  |  |  |  |  |  |  |  |  |  |
| PG-10586 |  | Gypsum Plastering | 6d | 2025-04-18 A | 2025-04-25 A | PG-10310 | 100% |  | 2025-04-17 | 2025-04-24 |  |  | L&T [195000 h] | 195,000 | 12496 |
| PG-10587 |  | Cornice fixing | 4d | 2025-05-05 | 2025-05-08 | PG-10307 FF+6d |  |  |  |  | 405.17d | 13.42d | Interiors (False celing) [62000 h] | 62,000 | 12497 |
| PG-10589 |  | Toilet False ceiling | 4d | 2025-05-14 | 2025-05-19 | PG-10597 FF+5d |  |  |  |  | 380.08d | 25d | Interiors (False celing) [86000 h] | 86,000 | 12499 |
| PG-10588 |  | Painting Works - Putty, Primer and 1st | 6d | 2025-05-24 | 2025-05-31 | PG-10587, PG-10592 |  |  |  |  | 391.75d | 0d | Surfa Coats (Painting) [130000 h] | 130,000 | 12498 |
| PG-10590 |  | Final Coat Painting | 17.5d | 2025-05-31 | 2025-06-20 | PG-10588, PG-10599 |  |  |  |  | 391.75d | 36.67d | Surfa Coats (Painting) [125000 h] | 125,000 | 12500 |
|  | 1.3.1.1.4.14.2 | **Wall Finishing works - Civil** |  | 2025-04-09 | 2025-06-20 |  |  |  |  |  |  |  |  |  |  |
| PG-10591 |  | Balcony Railing Fixing works | 4d | 2025-04-09 A | 2025-04-15 A | PG-10155 | 100% |  | 2025-04-09 | 2025-04-14 |  |  | L&T [165000 h] | 165,000 | 12502 |
| PG-10593 |  | Dadoing - Wet area | 5d | 2025-05-01 | 2025-05-07 | PG-10305 |  |  |  |  | 355.08d | 0d | L&T [168000 h] | 168,000 | 12504 |
| PG-10592 |  | UPVC Windows & Sliding doors | 5d | 2025-05-19 | 2025-05-24 | PG-10591, PG-10598 FF+5d |  |  |  |  | 355.08d | 0d | Fenesta (UPVC Windows) [430000 h] | 430,000 | 12503 |
| PG-10594 |  | Painting Works - Putty, Primer and 1st | 6d | 2025-05-24 | 2025-05-31 | PG-10592 |  |  |  |  | 355.08d | 0d | Surfa Coats (Painting) [188000 h] | 188,000 | 12505 |
| PG-10595 |  | Final Coat Painting | 17.5d | 2025-05-31 | 2025-06-20 | PG-10599 |  |  |  |  | 355.08d | 0d | Surfa Coats (Painting) [172000 h] | 172,000 | 12506 |
|  | 1.3.1.1.4.14.3 | **Floor Finishing Works - Civil** |  | 2025-04-09 | 2025-05-31 |  |  |  |  |  |  |  |  |  |  |
| PG-10596 |  | Waterproofing for sunken areas | 3d | 2025-04-09 A | 2025-04-12 A | PG-10155 | 100% |  |  |  |  |  | L&T [64000 h] | 64,000 | 12508 |
| PG-10597 |  | Floor Tiling - Wet area | 5d | 2025-05-07 | 2025-05-13 | PG-10596, PG-10593 |  |  |  |  | 355.08d | 0d | L&T [126000 h] | 126,000 | 12509 |
| PG-10598 |  | Floor Tiling - Dry area | 5d | 2025-05-13 | 2025-05-19 | PG-10597 FF+5d |  |  |  |  | 355.08d | 0d | L&T [335000 h] | 335,000 | 12510 |
| PG-10599 |  | Wooden doors | 5d | 2025-05-26 | 2025-05-31 | PG-10594 FF |  |  |  |  | 355.08d | 0d | Morph (Wooden Doors) [330000 h] | 330,000 | 12511 |
|  | 1.3.1.1.4.15 | **Floor 12** |  | 2025-04-22 | 2025-07-02 |  |  |  |  |  |  |  |  |  |  |
|  | 1.3.1.1.4.15.1 | **Ceiling Finishing works - Civil** |  | 2025-04-30 | 2025-07-02 |  |  |  |  |  |  |  |  |  |  |
| PG-10600 |  | Gypsum Plastering | 6d | 2025-04-30 | 2025-05-07 | PG-10319 |  |  |  |  | 394.61d | 0d | L&T [195000 h] | 195,000 | 12527 |
| PG-10601 |  | Cornice fixing | 4d | 2025-05-16 | 2025-05-21 | PG-10316 FF+6d |  |  |  |  | 394.61d | 12.7d | Interiors (False celing) [62000 h] | 62,000 | 12528 |
| PG-10603 |  | Toilet False ceiling | 4d | 2025-05-24 | 2025-05-29 | PG-10611 FF+5d |  |  |  |  | 371.75d | 24.67d | Interiors (False celing) [86000 h] | 86,000 | 12530 |
| PG-10602 |  | Painting Works - Putty, Primer and 1st | 6d | 2025-06-04 | 2025-06-11 | PG-10601, PG-10606 |  |  |  |  | 381.91d | 0d | Surfa Coats (Painting) [130000 h] | 130,000 | 12529 |
| PG-10604 |  | Final Coat Painting | 17.67d | 2025-06-11 | 2025-07-02 | PG-10602, PG-10613 |  |  |  |  | 381.91d | 34.83d | Surfa Coats (Painting) [125000 h] | 125,000 | 12531 |

| ID | WBS | Activity | Duration | Start | Finish | Predecessors | Complete | Remaining | Planned start | Planned finish | Total float | Free float | Resources | Cost | MSP Activity ID |
| --- | --- | --- | --- | --- | --- | --- | --- | --- | --- | --- | --- | --- | --- | --- | --- |
|  | 1.3.1.1.4.15.2 | **Wall Finishing works - Civil** |  | 2025-04-22 | 2025-07-02 |  |  |  |  |  |  |  |  |  |  |
| PG-10605 |  | Balcony Railing Fixing works | 4d | 2025-04-22 A | 2025-04-25 | PG-10160 | 81% | 0.76d | 2025-04-22 | 2025-04-26 | 376.24d | 29.16d | L&T [165000 h] | 165,000 | 12533 |
| PG-10607 |  | Dadoing - Wet area | 5d | 2025-05-12 | 2025-05-17 | PG-10314 |  |  |  |  | 347.08d | 0d | L&T [168000 h] | 168,000 | 12535 |
| PG-10606 |  | UPVC Windows & Sliding doors | 5d | 2025-05-29 | 2025-06-04 | PG-10605, PG-10612 FF+5d |  |  |  |  | 347.08d | 0d | Fenesta (UPVC Windows) [430000 h] | 430,000 | 12534 |
| PG-10608 |  | Painting Works - Putty, Primer and 1st | 6d | 2025-06-04 | 2025-06-11 | PG-10606 |  |  |  |  | 347.08d | 0d | Surfa Coats (Painting) [188000 h] | 188,000 | 12536 |
| PG-10609 |  | Final Coat Painting | 17.67d | 2025-06-11 | 2025-07-02 | PG-10613 |  |  |  |  | 347.08d | 0d | Surfa Coats (Painting) [172000 h] | 172,000 | 12537 |
|  | 1.3.1.1.4.15.3 | **Floor Finishing Works - Civil** |  | 2025-04-22 | 2025-06-11 |  |  |  |  |  |  |  |  |  |  |
| PG-10610 |  | Waterproofing for sunken areas | 3d | 2025-04-22 A | 2025-04-25 | PG-10160 | 97% | 0.08d |  |  | 366.92d | 19.84d | L&T [64000 h] | 64,000 | 12539 |
| PG-10611 |  | Floor Tiling - Wet area | 5d | 2025-05-17 | 2025-05-23 | PG-10610, PG-10607 |  |  |  |  | 347.08d | 0d | L&T [126000 h] | 126,000 | 12540 |
| PG-10612 |  | Floor Tiling - Dry area | 5d | 2025-05-23 | 2025-05-29 | PG-10611 FF+5d |  |  |  |  | 347.08d | 0d | L&T [335000 h] | 335,000 | 12541 |
| PG-10613 |  | Wooden doors | 5d | 2025-06-05 | 2025-06-11 | PG-10608 FF |  |  |  |  | 347.08d | 0d | Morph (Wooden Doors) [330000 h] | 330,000 | 12542 |
|  | 1.3.1.1.4.16 | **Floor 13** |  | 2025-05-03 | 2025-07-19 |  |  |  |  |  |  |  |  |  |  |
|  | 1.3.1.1.4.16.1 | **Ceiling Finishing works - Civil** |  | 2025-05-13 | 2025-07-19 |  |  |  |  |  |  |  |  |  |  |
| PG-10614 |  | Gypsum Plastering | 6d | 2025-05-13 | 2025-05-20 | PG-10328 |  |  |  |  | 379.33d | 0d | L&T [195000 h] | 195,000 | 12558 |
| PG-10615 |  | Cornice fixing | 4d | 2025-05-29 | 2025-06-03 | PG-10325 FF+6d |  |  |  |  | 379.33d | 12d | Interiors (False celing) [62000 h] | 62,000 | 12559 |
| PG-10617 |  | Toilet False ceiling | 4d | 2025-06-06 | 2025-06-11 | PG-10625 FF+5d |  |  |  |  | 361.16d | 26.5d | Interiors (False celing) [86000 h] | 86,000 | 12561 |
| PG-10616 |  | Painting Works - Putty, Primer and 1st | 6d | 2025-06-17 | 2025-06-24 | PG-10615, PG-10620 |  |  |  |  | 367.33d | 0d | Surfa Coats (Painting) [130000 h] | 130,000 | 12560 |
| PG-10618 |  | Final Coat Painting | 21.5d | 2025-06-24 | 2025-07-19 | PG-10616, PG-10627 |  |  |  |  | 367.33d | 32.67d | Surfa Coats (Painting) [125000 h] | 125,000 | 12562 |
|  | 1.3.1.1.4.16.2 | **Wall Finishing works - Civil** |  | 2025-05-03 | 2025-07-17 |  |  |  |  |  |  |  |  |  |  |
| PG-10619 |  | Balcony Railing Fixing works | 4d | 2025-05-03 | 2025-05-08 | PG-10165 |  |  |  |  | 363.66d | 29d | L&T [165000 h] | 165,000 | 12564 |
| PG-10621 |  | Dadoing - Wet area | 5d | 2025-05-24 | 2025-05-30 | PG-10323 |  |  |  |  | 334.66d | 0d | L&T [168000 h] | 168,000 | 12566 |
| PG-10620 |  | UPVC Windows & Sliding doors | 5d | 2025-06-11 | 2025-06-17 | PG-10619, PG-10626 FF+5d |  |  |  |  | 334.66d | 0d | Fenesta (UPVC Windows) [430000 h] | 430,000 | 12565 |
| PG-10622 |  | Painting Works - Putty, Primer and 1st | 6d | 2025-06-17 | 2025-06-24 | PG-10620 |  |  |  |  | 334.66d | 0d | Surfa Coats (Painting) [188000 h] | 188,000 | 12567 |
| PG-10623 |  | Final Coat Painting | 19.5d | 2025-06-24 | 2025-07-17 | PG-10627 |  |  |  |  | 334.66d | 0d | Surfa Coats (Painting) [172000 h] | 172,000 | 12568 |

| ID | WBS | Activity | Duration | Start | Finish | Predecessors | Total float | Free float | Resources | Cost | MSP Activity ID |
| --- | --- | --- | --- | --- | --- | --- | --- | --- | --- | --- | --- |
|  | 1.3.1.1.4.16.3 | **Floor Finishing Works - Civil** |  | 2025-05-03 | 2025-06-24 |  |  |  |  |  |  |
| PG-10624 |  | Waterproofing for sunken areas | 3d | 2025-05-03 | 2025-05-07 | PG-10165 | 354.66d | 20d | L&T [64000 h] | 64,000 | 12570 |
| PG-10625 |  | Floor Tiling - Wet area | 5d | 2025-05-30 | 2025-06-05 | PG-10624, PG-10621 | 334.66d | 0d | L&T [126000 h] | 126,000 | 12571 |
| PG-10626 |  | Floor Tiling - Dry area | 5d | 2025-06-05 | 2025-06-11 | PG-10625 FF+5d | 334.66d | 0d | L&T [335000 h] | 335,000 | 12572 |
| PG-10627 |  | Wooden doors | 5d | 2025-06-18 | 2025-06-24 | PG-10622 FF | 334.66d | 0d | Morph (Wooden Doors) [330000 h] | 330,000 | 12573 |
|  | 1.3.1.1.4.17 | **Floor 14** |  | 2025-05-16 | 2025-07-30 |  |  |  |  |  |  |
|  | 1.3.1.1.4.17.1 | **Ceiling Finishing works - Civil** |  | 2025-05-26 | 2025-07-30 |  |  |  |  |  |  |
| PG-10628 |  | Gypsum Plastering | 6d | 2025-05-26 | 2025-06-02 | PG-10337 | 370.33d | 0d | L&T [195000 h] | 195,000 | 12589 |
| PG-10629 |  | Cornice fixing | 4d | 2025-06-11 | 2025-06-16 | PG-10334 FF+6d | 370.33d | 12d | Interiors (False celing) [62000 h] | 62,000 | 12590 |
| PG-10631 |  | Toilet False ceiling | 4d | 2025-06-19 | 2025-06-24 | PG-10639 FF+5d | 350.66d | 27d | Interiors (False celing) [86000 h] | 86,000 | 12592 |
| PG-10630 |  | Painting Works - Putty, Primer and 1st | 6d | 2025-06-30 | 2025-07-07 | PG-10629, PG-10634 | 358.33d | 0d | Surfa Coats (Painting) [130000 h] | 130,000 | 12591 |
| PG-10632 |  | Final Coat Painting | 19.5d | 2025-07-07 | 2025-07-30 | PG-10630, PG-10641 | 358.33d | 34.67d | Surfa Coats (Painting) [125000 h] | 125,000 | 12593 |
|  | 1.3.1.1.4.17.2 | **Wall Finishing works - Civil** |  | 2025-05-16 | 2025-07-30 |  |  |  |  |  |  |
| PG-10633 |  | Balcony Railing Fixing works | 4d | 2025-05-16 | 2025-05-21 | PG-10170 | 352.66d | 29d | L&T [165000 h] | 165,000 | 12595 |
| PG-10635 |  | Dadoing - Wet area | 5d | 2025-06-06 | 2025-06-12 | PG-10332 | 323.66d | 0d | L&T [168000 h] | 168,000 | 12597 |
| PG-10634 |  | UPVC Windows & Sliding doors | 5d | 2025-06-24 | 2025-06-30 | PG-10633, PG-10640 FF+5d | 323.66d | 0d | Fenesta (UPVC Windows) [430000 h] | 430,000 | 12596 |
| PG-10636 |  | Painting Works - Putty, Primer and 1st | 6d | 2025-06-30 | 2025-07-07 | PG-10634 | 323.66d | 0d | Surfa Coats (Painting) [188000 h] | 188,000 | 12598 |
| PG-10637 |  | Final Coat Painting | 19.5d | 2025-07-07 | 2025-07-30 | PG-10641 | 323.66d | 0d | Surfa Coats (Painting) [172000 h] | 172,000 | 12599 |
|  | 1.3.1.1.4.17.3 | **Floor Finishing Works - Civil** |  | 2025-05-16 | 2025-07-07 |  |  |  |  |  |  |
| PG-10638 |  | Waterproofing for sunken areas | 3d | 2025-05-16 | 2025-05-20 | PG-10170 | 343.66d | 20d | L&T [64000 h] | 64,000 | 12601 |
| PG-10639 |  | Floor Tiling - Wet area | 5d | 2025-06-12 | 2025-06-18 | PG-10638, PG-10635 | 323.66d | 0d | L&T [126000 h] | 126,000 | 12602 |
| PG-10640 |  | Floor Tiling - Dry area | 5d | 2025-06-18 | 2025-06-24 | PG-10639 FF+5d | 323.66d | 0d | L&T [335000 h] | 335,000 | 12603 |
| PG-10641 |  | Wooden doors | 5d | 2025-07-01 | 2025-07-07 | PG-10636 FF | 323.66d | 0d | Morph (Wooden Doors) [330000 h] | 330,000 | 12604 |
|  | 1.3.1.1.4.18 | **Floor 15** |  | 2025-05-29 | 2025-08-11 |  |  |  |  |  |  |
|  | 1.3.1.1.4.18.1 | **Ceiling Finishing works - Civil** |  | 2025-06-07 | 2025-08-11 |  |  |  |  |  |  |
| PG-10642 |  | Gypsum Plastering | 6d | 2025-06-07 | 2025-06-14 | PG-10346 | 360.33d | 0d | L&T [195000 h] | 195,000 | 12620 |
| PG-10643 |  | Cornice fixing | 4d | 2025-06-24 | 2025-06-28 | PG-10343 FF+6d | 360.33d | 12d | Interiors (False celing) [62000 h] | 62,000 | 12621 |
| PG-10645 |  | Toilet False ceiling | 4d | 2025-07-02 | 2025-07-07 | PG-10653 FF+5d | 339.66d | 26d | Interiors (False celing) [86000 h] | 86,000 | 12623 |
| PG-10644 |  | Painting Works - Putty, Primer and 1st | 6d | 2025-07-12 | 2025-07-19 | PG-10643, PG-10648 | 348.33d | 0d | Surfa Coats (Painting) [130000 h] | 130,000 | 12622 |
| PG-10646 |  | Final Coat Painting | 18.5d | 2025-07-19 | 2025-08-11 | PG-10644, PG-10655 | 348.33d | 34.67d | Surfa Coats (Painting) [125000 h] | 125,000 | 12624 |

| ID | WBS | Activity | Duration | Start | Finish | Predecessors | Total float | Free float | Resources | Cost | MSP Activity ID |
| --- | --- | --- | --- | --- | --- | --- | --- | --- | --- | --- | --- |
|  | 1.3.1.1.4.18.2 | **Wall Finishing works - Civil** |  | 2025-05-29 | 2025-08-11 |  |  |  |  |  |  |
| PG-10647 |  | Balcony Railing Fixing works | 4d | 2025-05-29 | 2025-06-03 | PG-10175 | 160.16d | 29d | L&T [165000 h] | 165,000 | 12626 |
| PG-10649 |  | Dadoing - Wet area | 5d | 2025-06-19 | 2025-06-25 | PG-10341 | 131.16d | 0d | L&T [168000 h] | 168,000 | 12628 |
| PG-10648 |  | UPVC Windows & Sliding doors | 5d | 2025-07-07 | 2025-07-12 | PG-10647, PG-10654 FF+5d | 131.16d | 0d | Fenesta (UPVC Windows) [430000 h] | 430,000 | 12627 |
| PG-10650 |  | Painting Works - Putty, Primer and 1st | 6d | 2025-07-12 | 2025-07-19 | PG-10648 | 131.16d | 0d | Surfa Coats (Painting) [188000 h] | 188,000 | 12629 |
| PG-10651 |  | Final Coat Painting | 18.5d | 2025-07-19 | 2025-08-11 | PG-10655 | 313.66d | 0d | Surfa Coats (Painting) [172000 h] | 172,000 | 12630 |
|  | 1.3.1.1.4.18.3 | **Floor Finishing Works - Civil** |  | 2025-05-29 | 2025-07-19 |  |  |  |  |  |  |
| PG-10652 |  | Waterproofing for sunken areas | 3d | 2025-05-29 | 2025-06-02 | PG-10175 | 151.16d | 20d | L&T [64000 h] | 64,000 | 12632 |
| PG-10653 |  | Floor Tiling - Wet area | 5d | 2025-06-25 | 2025-07-01 | PG-10652, PG-10649 | 131.16d | 0d | L&T [126000 h] | 126,000 | 12633 |
| PG-10654 |  | Floor Tiling - Dry area | 5d | 2025-07-01 | 2025-07-07 | PG-10653 FF+5d | 131.16d | 0d | L&T [335000 h] | 335,000 | 12634 |
| PG-10655 |  | Wooden doors | 5d | 2025-07-14 | 2025-07-19 | PG-10650 FF | 131.16d | 0d | Morph (Wooden Doors) [330000 h] | 330,000 | 12635 |
|  | 1.3.1.1.4.19 | **Floor 16** |  | 2025-06-11 | 2025-08-25 |  |  |  |  |  |  |
|  | 1.3.1.1.4.19.1 | **Ceiling Finishing works - Civil** |  | 2025-06-20 | 2025-08-25 |  |  |  |  |  |  |
| PG-10656 |  | Gypsum Plastering | 6d | 2025-06-20 | 2025-06-27 | PG-10355 | 349.33d | 0d | L&T [195000 h] | 195,000 | 12651 |
| PG-10657 |  | Cornice fixing | 4d | 2025-07-07 | 2025-07-11 | PG-10352 FF+6d | 349.33d | 12d | Interiors (False celing) [62000 h] | 62,000 | 12652 |
| PG-10659 |  | Toilet False ceiling | 4d | 2025-07-15 | 2025-07-19 | PG-10667 FF+5d | 328.66d | 26d | Interiors (False celing) [86000 h] | 86,000 | 12654 |
| PG-10658 |  | Painting Works - Putty, Primer and 1st | 6d | 2025-07-25 | 2025-08-01 | PG-10657, PG-10662 | 337.33d | 0d | Surfa Coats (Painting) [130000 h] | 130,000 | 12653 |
| PG-10660 |  | Final Coat Painting | 18.5d | 2025-08-01 | 2025-08-25 | PG-10658, PG-10669 | 337.33d | 34.67d | Surfa Coats (Painting) [125000 h] | 125,000 | 12655 |
|  | 1.3.1.1.4.19.2 | **Wall Finishing works - Civil** |  | 2025-06-11 | 2025-08-25 |  |  |  |  |  |  |
| PG-10661 |  | Balcony Railing Fixing works | 4d | 2025-06-11 | 2025-06-16 | PG-10180 | 331.66d | 29d | L&T [165000 h] | 165,000 | 12657 |
| PG-10663 |  | Dadoing - Wet area | 5d | 2025-07-02 | 2025-07-08 | PG-10350 | 302.66d | 0d | L&T [168000 h] | 168,000 | 12659 |
| PG-10662 |  | UPVC Windows & Sliding doors | 5d | 2025-07-19 | 2025-07-25 | PG-10661, PG-10668 FF+5d | 302.66d | 0d | Fenesta (UPVC Windows) [430000 h] | 430,000 | 12658 |
| PG-10664 |  | Painting Works - Putty, Primer and 1st | 6d | 2025-07-25 | 2025-08-01 | PG-10662 | 302.66d | 0d | Surfa Coats (Painting) [188000 h] | 188,000 | 12660 |
| PG-10665 |  | Final Coat Painting | 18.5d | 2025-08-01 | 2025-08-25 | PG-10669 | 302.66d | 0d | Surfa Coats (Painting) [172000 h] | 172,000 | 12661 |

| ID | WBS | Activity | Duration | Start | Finish | Predecessors | Total float | Free float | Resources | Cost | MSP Activity ID |
| --- | --- | --- | --- | --- | --- | --- | --- | --- | --- | --- | --- |
|  | 1.3.1.1.4.19.3 | **Floor Finishing Works - Civil** |  | 2025-06-11 | 2025-08-01 |  |  |  |  |  |  |
| PG-10666 |  | Waterproofing for sunken areas | 3d | 2025-06-11 | 2025-06-14 | PG-10180 | 322.66d | 20d | L&T [64000 h] | 64,000 | 12663 |
| PG-10667 |  | Floor Tiling - Wet area | 5d | 2025-07-08 | 2025-07-14 | PG-10666, PG-10663 | 302.66d | 0d | L&T [126000 h] | 126,000 | 12664 |
| PG-10668 |  | Floor Tiling - Dry area | 5d | 2025-07-14 | 2025-07-19 | PG-10667 FF+5d | 302.66d | 0d | L&T [335000 h] | 335,000 | 12665 |
| PG-10669 |  | Wooden doors | 5d | 2025-07-26 | 2025-08-01 | PG-10664 FF | 302.66d | 0d | Morph (Wooden Doors) [330000 h] | 330,000 | 12666 |
|  | 1.3.1.1.4.20 | **Floor 17** |  | 2025-06-24 | 2025-09-06 |  |  |  |  |  |  |
|  | 1.3.1.1.4.20.1 | **Ceiling Finishing works - Civil** |  | 2025-07-03 | 2025-09-06 |  |  |  |  |  |  |
| PG-10670 |  | Gypsum Plastering | 6d | 2025-07-03 | 2025-07-10 | PG-10364 | 338.33d | 0d | L&T [195000 h] | 195,000 | 12682 |
| PG-10671 |  | Cornice fixing | 4d | 2025-07-19 | 2025-07-24 | PG-10361 FF+6d | 338.33d | 12d | Interiors (False celing) [62000 h] | 62,000 | 12683 |
| PG-10673 |  | Toilet False ceiling | 4d | 2025-07-28 | 2025-08-01 | PG-10681 FF+5d | 317.66d | 26d | Interiors (False celing) [86000 h] | 86,000 | 12685 |
| PG-10672 |  | Painting Works - Putty, Primer and 1st | 6d | 2025-08-07 | 2025-08-14 | PG-10671, PG-10676 | 326.33d | 0d | Surfa Coats (Painting) [130000 h] | 130,000 | 12684 |
| PG-10674 |  | Final Coat Painting | 18.5d | 2025-08-14 | 2025-09-06 | PG-10672, PG-10683 | 326.33d | 34.67d | Surfa Coats (Painting) [125000 h] | 125,000 | 12686 |
|  | 1.3.1.1.4.20.2 | **Wall Finishing works - Civil** |  | 2025-06-24 | 2025-09-06 |  |  |  |  |  |  |
| PG-10675 |  | Balcony Railing Fixing works | 4d | 2025-06-24 | 2025-06-28 | PG-10185 | 320.66d | 29d | L&T [165000 h] | 165,000 | 12688 |
| PG-10677 |  | Dadoing - Wet area | 5d | 2025-07-15 | 2025-07-21 | PG-10359 | 291.66d | 0d | L&T [168000 h] | 168,000 | 12690 |
| PG-10676 |  | UPVC Windows & Sliding doors | 5d | 2025-08-01 | 2025-08-07 | PG-10675, PG-10682 FF+5d | 291.66d | 0d | Fenesta (UPVC Windows) [430000 h] | 430,000 | 12689 |
| PG-10678 |  | Painting Works - Putty, Primer and 1st | 6d | 2025-08-07 | 2025-08-14 | PG-10676 | 291.66d | 0d | Surfa Coats (Painting) [188000 h] | 188,000 | 12691 |
| PG-10679 |  | Final Coat Painting | 18.5d | 2025-08-14 | 2025-09-06 | PG-10683 | 291.66d | 0d | Surfa Coats (Painting) [172000 h] | 172,000 | 12692 |
|  | 1.3.1.1.4.20.3 | **Floor Finishing Works - Civil** |  | 2025-06-24 | 2025-08-14 |  |  |  |  |  |  |
| PG-10680 |  | Waterproofing for sunken areas | 3d | 2025-06-24 | 2025-06-27 | PG-10185 | 311.66d | 20d | L&T [64000 h] | 64,000 | 12694 |
| PG-10681 |  | Floor Tiling - Wet area | 5d | 2025-07-21 | 2025-07-26 | PG-10680, PG-10677 | 291.66d | 0d | L&T [126000 h] | 126,000 | 12695 |
| PG-10682 |  | Floor Tiling - Dry area | 5d | 2025-07-26 | 2025-08-01 | PG-10681 FF+5d | 291.66d | 0d | L&T [335000 h] | 335,000 | 12696 |
| PG-10683 |  | Wooden doors | 5d | 2025-08-08 | 2025-08-14 | PG-10678 FF | 291.66d | 0d | Morph (Wooden Doors) [330000 h] | 330,000 | 12697 |
|  | 1.3.1.1.4.21 | **Floor 18** |  | 2025-07-07 | 2025-09-19 |  |  |  |  |  |  |
|  | 1.3.1.1.4.21.1 | **Ceiling Finishing works - Civil** |  | 2025-07-16 | 2025-09-19 |  |  |  |  |  |  |
| PG-10684 |  | Gypsum Plastering | 6d | 2025-07-16 | 2025-07-23 | PG-10373 | 327.33d | 0d | L&T [195000 h] | 195,000 | 12713 |
| PG-10685 |  | Cornice fixing | 4d | 2025-08-01 | 2025-08-06 | PG-10370 FF+6d | 327.33d | 12d | Interiors (False celing) [62000 h] | 62,000 | 12714 |
| PG-10687 |  | Toilet False ceiling | 4d | 2025-08-09 | 2025-08-14 | PG-10695 FF+5d | 306.66d | 26d | Interiors (False celing) [86000 h] | 86,000 | 12716 |
| PG-10686 |  | Painting Works - Putty, Primer and 1st | 6d | 2025-08-21 | 2025-08-28 | PG-10685, PG-10690 | 315.33d | 0d | Surfa Coats (Painting) [130000 h] | 130,000 | 12715 |
| PG-10688 |  | Final Coat Painting | 18.5d | 2025-08-28 | 2025-09-19 | PG-10686, PG-10697 | 315.33d | 34.67d | Surfa Coats (Painting) [125000 h] | 125,000 | 12717 |

| ID | WBS | Activity | Duration | Start | Finish | Predecessors | Total float | Free float | Resources | Cost | MSP Activity ID |
| --- | --- | --- | --- | --- | --- | --- | --- | --- | --- | --- | --- |
|  | 1.3.1.1.4.21.2 | **Wall Finishing works - Civil** |  | 2025-07-07 | 2025-09-19 |  |  |  |  |  |  |
| PG-10689 |  | Balcony Railing Fixing works | 4d | 2025-07-07 | 2025-07-11 | PG-10190 | 309.66d | 29d | L&T [165000 h] | 165,000 | 12719 |
| PG-10691 |  | Dadoing - Wet area | 5d | 2025-07-28 | 2025-08-02 | PG-10368 | 280.66d | 0d | L&T [168000 h] | 168,000 | 12721 |
| PG-10690 |  | UPVC Windows & Sliding doors | 5d | 2025-08-14 | 2025-08-21 | PG-10689, PG-10696 FF+5d | 280.66d | 0d | Fenesta (UPVC Windows) [430000 h] | 430,000 | 12720 |
| PG-10692 |  | Painting Works - Putty, Primer and 1st | 6d | 2025-08-21 | 2025-08-28 | PG-10690 | 280.66d | 0d | Surfa Coats (Painting) [188000 h] | 188,000 | 12722 |
| PG-10693 |  | Final Coat Painting | 18.5d | 2025-08-28 | 2025-09-19 | PG-10697 | 280.66d | 0d | Surfa Coats (Painting) [172000 h] | 172,000 | 12723 |
|  | 1.3.1.1.4.21.3 | **Floor Finishing Works - Civil** |  | 2025-07-07 | 2025-08-28 |  |  |  |  |  |  |
| PG-10694 |  | Waterproofing for sunken areas | 3d | 2025-07-07 | 2025-07-10 | PG-10190 | 300.66d | 20d | L&T [64000 h] | 64,000 | 12725 |
| PG-10695 |  | Floor Tiling - Wet area | 5d | 2025-08-02 | 2025-08-08 | PG-10694, PG-10691 | 280.66d | 0d | L&T [126000 h] | 126,000 | 12726 |
| PG-10696 |  | Floor Tiling - Dry area | 5d | 2025-08-08 | 2025-08-14 | PG-10695 FF+5d | 280.66d | 0d | L&T [335000 h] | 335,000 | 12727 |
| PG-10697 |  | Wooden doors | 5d | 2025-08-22 | 2025-08-28 | PG-10692 FF | 280.66d | 0d | Morph (Wooden Doors) [330000 h] | 330,000 | 12728 |
|  | 1.3.1.1.4.22 | **Floor 19** |  | 2025-07-29 | 2025-10-15 |  |  |  |  |  |  |
|  | 1.3.1.1.4.22.1 | **Ceiling Finishing works - Civil** |  | 2025-08-07 | 2025-10-15 |  |  |  |  |  |  |
| PG-10698 |  | Gypsum Plastering | 6d | 2025-08-07 | 2025-08-14 | PG-10382 | 175.83d | 0d | L&T [195000 h] | 195,000 | 12744 |
| PG-10699 |  | Cornice fixing | 4d | 2025-08-25 | 2025-08-29 | PG-10379 FF+6d | 175.83d | 0d | Interiors (False celing) [62000 h] | 62,000 | 12745 |
| PG-10701 |  | Toilet False ceiling | 4d | 2025-09-02 | 2025-09-06 | PG-10709 FF+5d | 287.66d | 28d | Interiors (False celing) [86000 h] | 86,000 | 12747 |
| PG-10700 |  | Painting Works - Putty, Primer and 1st | 6d | 2025-09-12 | 2025-09-19 | PG-10699, PG-10704 | 163.83d | 0d | Surfa Coats (Painting) [130000 h] | 130,000 | 12746 |
| PG-10702 |  | Final Coat Painting | 20.5d | 2025-09-19 | 2025-10-15 | PG-10700, PG-10711 | 294.33d | 34.67d | Surfa Coats (Painting) [125000 h] | 125,000 | 12748 |
|  | 1.3.1.1.4.22.2 | **Wall Finishing works - Civil** |  | 2025-07-29 | 2025-10-15 |  |  |  |  |  |  |
| PG-10703 |  | Balcony Railing Fixing works | 4d | 2025-07-29 | 2025-08-02 | PG-10367 FS+7d | 192.83d | 29d | L&T [165000 h] | 165,000 | 12750 |
| PG-10705 |  | Dadoing - Wet area | 5d | 2025-08-20 | 2025-08-26 | PG-10377 | 163.83d | 0d | L&T [168000 h] | 168,000 | 12752 |
| PG-10704 |  | UPVC Windows & Sliding doors | 5d | 2025-09-06 | 2025-09-12 | PG-10703, PG-10710 FF+5d | 163.83d | 0d | Fenesta (UPVC Windows) [430000 h] | 430,000 | 12751 |
| PG-10706 |  | Painting Works - Putty, Primer and 1st | 6d | 2025-09-12 | 2025-09-19 | PG-10704 | 259.66d | 0d | Surfa Coats (Painting) [188000 h] | 188,000 | 12753 |
| PG-10707 |  | Final Coat Painting | 20.5d | 2025-09-19 | 2025-10-15 | PG-10711 | 259.66d | 0d | Surfa Coats (Painting) [172000 h] | 172,000 | 12754 |

| ID | WBS | Activity | Duration | Start | Finish | Predecessors | Total float | Free float | Resources | Cost | MSP Activity ID |
| --- | --- | --- | --- | --- | --- | --- | --- | --- | --- | --- | --- |
|  | 1.3.1.1.4.22.3 | **Floor Finishing Works - Civil** |  | 2025-07-29 | 2025-09-19 |  |  |  |  |  |  |
| PG-10708 |  | Waterproofing for sunken areas | 3d | 2025-07-29 | 2025-08-01 | PG-10367 FS+7d | 183.83d | 20d | L&T [64000 h] | 64,000 | 12756 |
| PG-10709 |  | Floor Tiling - Wet area | 5d | 2025-08-26 | 2025-09-01 | PG-10708, PG-10705 | 163.83d | 0d | L&T [126000 h] | 126,000 | 12757 |
| PG-10710 |  | Floor Tiling - Dry area | 5d | 2025-09-01 | 2025-09-06 | PG-10709 FF+5d | 163.83d | 0d | L&T [335000 h] | 335,000 | 12758 |
| PG-10711 |  | Wooden doors | 5d | 2025-09-13 | 2025-09-19 | PG-10706 FF | 259.66d | 0d | Morph (Wooden Doors) [330000 h] | 330,000 | 12759 |
|  | 1.3.1.1.4.23 | **Floor 20** |  | 2025-08-21 | 2025-11-06 |  |  |  |  |  |  |
|  | 1.3.1.1.4.23.1 | **Ceiling Finishing works - Civil** |  | 2025-08-30 | 2025-11-06 |  |  |  |  |  |  |
| PG-10712 |  | Gypsum Plastering | 6d | 2025-08-30 | 2025-09-06 | PG-10391 | 287.16d | 0d | L&T [195000 h] | 195,000 | 12762 |
| PG-10713 |  | Cornice fixing | 4d | 2025-09-16 | 2025-09-20 | PG-10388 FF+6d | 287.16d | 12d | Interiors (False celing) [62000 h] | 62,000 | 12763 |
| PG-10715 |  | Toilet False ceiling | 4d | 2025-09-24 | 2025-09-29 | PG-10723 FF+5d | 267.16d | 26.67d | Interiors (False celing) [86000 h] | 86,000 | 12765 |
| PG-10714 |  | Painting Works - Putty, Primer and 1st | 6d | 2025-10-06 | 2025-10-13 | PG-10713, PG-10718 | 275.16d | 0d | Surfa Coats (Painting) [130000 h] | 130,000 | 12764 |
| PG-10716 |  | Final Coat Painting | 19.67d | 2025-10-13 | 2025-11-06 | PG-10714, PG-10725 | 275.16d | 34.67d | Surfa Coats (Painting) [125000 h] | 125,000 | 12766 |
|  | 1.3.1.1.4.23.2 | **Wall Finishing works - Civil** |  | 2025-08-21 | 2025-11-06 |  |  |  |  |  |  |
| PG-10717 |  | Balcony Railing Fixing works | 4d | 2025-08-21 | 2025-08-26 | PG-10376 FS+7d | 269.49d | 29d | L&T [165000 h] | 165,000 | 12768 |
| PG-10719 |  | Dadoing - Wet area | 5d | 2025-09-11 | 2025-09-17 | PG-10386 | 240.49d | 0d | L&T [168000 h] | 168,000 | 12770 |
| PG-10718 |  | UPVC Windows & Sliding doors | 5d | 2025-09-29 | 2025-10-06 | PG-10717, PG-10724 FF+5d | 240.49d | 0d | Fenesta (UPVC Windows) [430000 h] | 430,000 | 12769 |
| PG-10720 |  | Painting Works - Putty, Primer and 1st | 6d | 2025-10-06 | 2025-10-13 | PG-10718 | 240.49d | 0d | Surfa Coats (Painting) [188000 h] | 188,000 | 12771 |
| PG-10721 |  | Final Coat Painting | 19.67d | 2025-10-13 | 2025-11-06 | PG-10725 | 240.49d | 0d | Surfa Coats (Painting) [172000 h] | 172,000 | 12772 |
|  | 1.3.1.1.4.23.3 | **Floor Finishing Works - Civil** |  | 2025-08-21 | 2025-10-13 |  |  |  |  |  |  |
| PG-10722 |  | Waterproofing for sunken areas | 3d | 2025-08-21 | 2025-08-25 | PG-10376 FS+7d | 260.49d | 20d | L&T [64000 h] | 64,000 | 12774 |
| PG-10723 |  | Floor Tiling - Wet area | 5d | 2025-09-17 | 2025-09-23 | PG-10722, PG-10719 | 240.49d | 0d | L&T [126000 h] | 126,000 | 12775 |
| PG-10724 |  | Floor Tiling - Dry area | 5d | 2025-09-23 | 2025-09-29 | PG-10723 FF+5d | 240.49d | 0d | L&T [335000 h] | 335,000 | 12776 |
| PG-10725 |  | Wooden doors | 5d | 2025-10-07 | 2025-10-13 | PG-10720 FF | 240.49d | 0d | Morph (Wooden Doors) [330000 h] | 330,000 | 12777 |
|  | 1.3.1.1.4.24 | **Floor 21** |  | 2025-09-12 | 2025-11-28 |  |  |  |  |  |  |
|  | 1.3.1.1.4.24.1 | **Ceiling Finishing works - Civil** |  | 2025-09-22 | 2025-11-28 |  |  |  |  |  |  |
| PG-10726 |  | Gypsum Plastering | 6d | 2025-09-22 | 2025-09-29 | PG-10400 | 268.16d | 0d | L&T [195000 h] | 195,000 | 12806 |
| PG-10727 |  | Cornice fixing | 4d | 2025-10-09 | 2025-10-14 | PG-10397 FF+6d | 268.16d | 12d | Interiors (False celing) [62000 h] | 62,000 | 12807 |
| PG-10729 |  | Toilet False ceiling | 4d | 2025-10-17 | 2025-10-22 | PG-10737 FF+5d | 248.49d | 27d | Interiors (False celing) [86000 h] | 86,000 | 12809 |
| PG-10728 |  | Painting Works - Putty, Primer and 1st | 6d | 2025-10-28 | 2025-11-05 | PG-10727, PG-10732 | 256.16d | 0d | Surfa Coats (Painting) [130000 h] | 130,000 | 12808 |
| PG-10730 |  | Final Coat Painting | 19.67d | 2025-11-05 | 2025-11-28 | PG-10728, PG-10739 | 256.16d | 34.67d | Surfa Coats (Painting) [125000 h] | 125,000 | 12810 |

| ID | WBS | Activity | Duration | Start | Finish | Predecessors | Total float | Free float | Resources | Cost | MSP Activity ID |
| --- | --- | --- | --- | --- | --- | --- | --- | --- | --- | --- | --- |
|  | 1.3.1.1.4.24.2 | **Wall Finishing works - Civil** |  | 2025-09-12 | 2025-11-28 |  |  |  |  |  |  |
| PG-10731 |  | Balcony Railing Fixing works | 4d | 2025-09-12 | 2025-09-17 | PG-10385 FS+7d | 250.49d | 29d | L&T [165000 h] | 165,000 | 12812 |
| PG-10733 |  | Dadoing - Wet area | 5d | 2025-10-04 | 2025-10-10 | PG-10395 | 221.49d | 0d | L&T [168000 h] | 168,000 | 12814 |
| PG-10732 |  | UPVC Windows & Sliding doors | 5d | 2025-10-22 | 2025-10-28 | PG-10731, PG-10738 FF+5d | 221.49d | 0d | Fenesta (UPVC Windows) [430000 h] | 430,000 | 12813 |
| PG-10734 |  | Painting Works - Putty, Primer and 1st | 6d | 2025-10-28 | 2025-11-05 | PG-10732 | 221.49d | 0d | Surfa Coats (Painting) [188000 h] | 188,000 | 12815 |
| PG-10735 |  | Final Coat Painting | 19.67d | 2025-11-05 | 2025-11-28 | PG-10739 | 221.49d | 0d | Surfa Coats (Painting) [172000 h] | 172,000 | 12816 |
|  | 1.3.1.1.4.24.3 | **Floor Finishing Works - Civil** |  | 2025-09-12 | 2025-11-05 |  |  |  |  |  |  |
| PG-10736 |  | Waterproofing for sunken areas | 3d | 2025-09-12 | 2025-09-16 | PG-10385 FS+7d | 241.49d | 20d | L&T [64000 h] | 64,000 | 12818 |
| PG-10737 |  | Floor Tiling - Wet area | 5d | 2025-10-10 | 2025-10-16 | PG-10736, PG-10733 | 221.49d | 0d | L&T [126000 h] | 126,000 | 12819 |
| PG-10738 |  | Floor Tiling - Dry area | 5d | 2025-10-16 | 2025-10-22 | PG-10737 FF+5d | 221.49d | 0d | L&T [335000 h] | 335,000 | 12820 |
| PG-10739 |  | Wooden doors | 5d | 2025-10-29 | 2025-11-05 | PG-10734 FF | 221.49d | 0d | Morph (Wooden Doors) [330000 h] | 330,000 | 12821 |
|  | 1.3.1.1.4.25 | **Floor 22** |  | 2025-10-06 | 2025-12-20 |  |  |  |  |  |  |
|  | 1.3.1.1.4.25.1 | **Ceiling Finishing works - Civil** |  | 2025-10-15 | 2025-12-20 |  |  |  |  |  |  |
| PG-10740 |  | Gypsum Plastering | 6d | 2025-10-15 | 2025-10-22 | PG-10409 | 249.16d | 0d | L&T [195000 h] | 195,000 | 12837 |
| PG-10741 |  | Cornice fixing | 4d | 2025-10-31 | 2025-11-06 | PG-10406 FF+6d | 249.16d | 12d | Interiors (False celing) [62000 h] | 62,000 | 12838 |
| PG-10743 |  | Toilet False ceiling | 4d | 2025-11-10 | 2025-11-14 | PG-10751 FF+5d | 228.49d | 27d | Interiors (False celing) [86000 h] | 86,000 | 12840 |
| PG-10742 |  | Painting Works - Putty, Primer and 1st | 6d | 2025-11-20 | 2025-11-27 | PG-10741, PG-10746 | 237.16d | 0d | Surfa Coats (Painting) [130000 h] | 130,000 | 12839 |
| PG-10744 |  | Final Coat Painting | 19.5d | 2025-11-27 | 2025-12-20 | PG-10742, PG-10753 | 237.16d | 35.67d | Surfa Coats (Painting) [125000 h] | 125,000 | 12841 |
|  | 1.3.1.1.4.25.2 | **Wall Finishing works - Civil** |  | 2025-10-06 | 2025-12-20 |  |  |  |  |  |  |
| PG-10745 |  | Balcony Railing Fixing works | 4d | 2025-10-06 | 2025-10-10 | PG-10394 FS+7d | 230.49d | 29d | L&T [165000 h] | 165,000 | 12843 |
| PG-10747 |  | Dadoing - Wet area | 5d | 2025-10-27 | 2025-11-03 | PG-10404 | 201.49d | 0d | L&T [168000 h] | 168,000 | 12845 |
| PG-10746 |  | UPVC Windows & Sliding doors | 5d | 2025-11-14 | 2025-11-20 | PG-10745, PG-10752 FF+5d | 201.49d | 0d | Fenesta (UPVC Windows) [430000 h] | 430,000 | 12844 |
| PG-10748 |  | Painting Works - Putty, Primer and 1st | 6d | 2025-11-20 | 2025-11-27 | PG-10746 | 201.49d | 0d | Surfa Coats (Painting) [188000 h] | 188,000 | 12846 |
| PG-10749 |  | Final Coat Painting | 19.5d | 2025-11-27 | 2025-12-20 | PG-10753 | 201.49d | 0d | Surfa Coats (Painting) [172000 h] | 172,000 | 12847 |

| ID | WBS | Activity | Duration | Start | Finish | Predecessors | Total float | Free float | Resources | Cost | MSP Activity ID |
| --- | --- | --- | --- | --- | --- | --- | --- | --- | --- | --- | --- |
|  | 1.3.1.1.4.25.3 | **Floor Finishing Works - Civil** |  | 2025-10-06 | 2025-11-27 |  |  |  |  |  |  |
| PG-10750 |  | Waterproofing for sunken areas | 3d | 2025-10-06 | 2025-10-09 | PG-10394 FS+7d | 221.49d | 20d | L&T [64000 h] | 64,000 | 12849 |
| PG-10751 |  | Floor Tiling - Wet area | 5d | 2025-11-03 | 2025-11-08 | PG-10750, PG-10747 | 201.49d | 0d | L&T [126000 h] | 126,000 | 12850 |
| PG-10752 |  | Floor Tiling - Dry area | 5d | 2025-11-08 | 2025-11-14 | PG-10751 FF+5d | 201.49d | 0d | L&T [335000 h] | 335,000 | 12851 |
| PG-10753 |  | Wooden doors | 5d | 2025-11-21 | 2025-11-27 | PG-10748 FF | 201.49d | 0d | Morph (Wooden Doors) [330000 h] | 330,000 | 12852 |
|  | 1.3.1.1.4.26 | **Floor 23** |  | 2025-10-28 | 2026-01-12 |  |  |  |  |  |  |
|  | 1.3.1.1.4.26.1 | **Ceiling Finishing works - Civil** |  | 2025-11-07 | 2026-01-12 |  |  |  |  |  |  |
| PG-10754 |  | Gypsum Plastering | 6d | 2025-11-07 | 2025-11-14 | PG-10418 | 230.33d | 0d | L&T [195000 h] | 195,000 | 12868 |
| PG-10755 |  | Cornice fixing | 4d | 2025-11-24 | 2025-11-28 | PG-10415 FF+6d | 230.33d | 12d | Interiors (False celing) [62000 h] | 62,000 | 12869 |
| PG-10757 |  | Toilet False ceiling | 4d | 2025-12-02 | 2025-12-06 | PG-10765 FF+5d | 209.99d | 24.5d | Interiors (False celing) [86000 h] | 86,000 | 12871 |
| PG-10756 |  | Painting Works - Putty, Primer and 1st | 6d | 2025-12-12 | 2025-12-19 | PG-10755, PG-10760 | 218.33d | 0d | Surfa Coats (Painting) [130000 h] | 130,000 | 12870 |
| PG-10758 |  | Final Coat Painting | 19.5d | 2025-12-19 | 2026-01-12 | PG-10756, PG-10767 | 218.33d | 32.83d | Surfa Coats (Painting) [125000 h] | 125,000 | 12872 |
|  | 1.3.1.1.4.26.2 | **Wall Finishing works - Civil** |  | 2025-10-28 | 2026-01-09 |  |  |  |  |  |  |
| PG-10759 |  | Balcony Railing Fixing works | 4d | 2025-10-28 | 2025-11-03 | PG-10403 FS+7d | 214.49d | 29d | L&T [165000 h] | 165,000 | 12874 |
| PG-10761 |  | Dadoing - Wet area | 5d | 2025-11-19 | 2025-11-25 | PG-10413 | 185.49d | 0d | L&T [168000 h] | 168,000 | 12876 |
| PG-10760 |  | UPVC Windows & Sliding doors | 5d | 2025-12-06 | 2025-12-12 | PG-10759, PG-10766 FF+5d | 185.49d | 0d | Fenesta (UPVC Windows) [430000 h] | 430,000 | 12875 |
| PG-10762 |  | Painting Works - Putty, Primer and 1st | 6d | 2025-12-12 | 2025-12-19 | PG-10760 | 185.49d | 0d | Surfa Coats (Painting) [188000 h] | 188,000 | 12877 |
| PG-10763 |  | Final Coat Painting | 17.5d | 2025-12-19 | 2026-01-09 | PG-10767 | 185.49d | 0d | Surfa Coats (Painting) [172000 h] | 172,000 | 12878 |
|  | 1.3.1.1.4.26.3 | **Floor Finishing Works - Civil** |  | 2025-10-28 | 2025-12-19 |  |  |  |  |  |  |
| PG-10764 |  | Waterproofing for sunken areas | 3d | 2025-10-28 | 2025-10-31 | PG-10403 FS+7d | 205.49d | 20d | L&T [64000 h] | 64,000 | 12880 |
| PG-10765 |  | Floor Tiling - Wet area | 5d | 2025-11-25 | 2025-12-01 | PG-10764, PG-10761 | 185.49d | 0d | L&T [126000 h] | 126,000 | 12881 |
| PG-10766 |  | Floor Tiling - Dry area | 5d | 2025-12-01 | 2025-12-06 | PG-10765 FF+5d | 185.49d | 0d | L&T [335000 h] | 335,000 | 12882 |
| PG-10767 |  | Wooden doors | 5d | 2025-12-13 | 2025-12-19 | PG-10762 FF | 185.49d | 0d | Morph (Wooden Doors) [330000 h] | 330,000 | 12883 |
|  | 1.3.1.1.4.27 | **External Finishing works** |  | 2025-08-04 | 2025-12-02 |  |  |  |  |  |  |
| PG-10768 |  | External walls tie rod hole plugging with GP2 | 30d | 2025-08-04 | 2025-09-09 | PG-10196 | 249.66d | 0d | L&T [1200000 h] | 1,200,000 | 38099 |
| PG-10769 |  | External walls grinding works | 40d | 2025-08-28 | 2025-10-15 | PG-10768 FF+30d | 249.66d | 0d | L&T [1600000 h] | 1,600,000 | 38100 |
| PG-10770 |  | Texture and painting works | 45d | 2025-10-09 | 2025-12-02 | PG-10769 FF+40d | 249.66d | 0d | Surfa Coats (Painting) [1170000 h] | 1,170,000 | 38101 |

| ID | WBS | Activity | Duration | Start | Finish | Predecessors | Total float | Free float | Resources | Cost | MSP Activity ID |
| --- | --- | --- | --- | --- | --- | --- | --- | --- | --- | --- | --- |
|  | 1.3.1.1.5 | **Corridor & Fire Staircase Finishing works** |  | 2025-10-11 | 2026-07-27 |  |  |  |  |  |  |
|  | 1.3.1.1.5.1 | **Ceiling Finishing works - Civil** |  | 2025-10-11 | 2026-01-22 |  |  |  |  |  |  |
| PG-10771 |  | Gypsum Plastering | 6d | 2025-10-11 | 2025-10-18 | PG-10382 FF+60d | 44.83d | 0d | L&T [195000 h] | 195,000 | 37925 |
| PG-10772 |  | Cornice fixing | 4d | 2025-10-17 | 2025-10-22 | PG-10699 FF+45d | 175.83d | 12d | Interiors (False celing) [62000 h] | 62,000 | 37926 |
| PG-10773 |  | Painting Works - Putty, Primer and 1st | 6d | 2025-11-06 | 2025-11-13 | PG-10700 FF+45d, PG-10772 | 163.83d | 0d | Surfa Coats (Painting) [130000 h] | 130,000 | 37927 |
| PG-10774 |  | False ceiling | 30d | 2025-11-13 | 2025-12-18 | PG-10773 | 163.83d | 0d | Interiors (False celing) [660000 h] | 660,000 | 37928 |
| PG-10775 |  | Final Coat Painting | 29.67d | 2025-12-18 | 2026-01-22 | PG-10774 | 178.83d | 157.83d | Surfa Coats (Painting) [125000 h] | 125,000 | 37929 |
|  | 1.3.1.1.5.2 | **Wall Finishing works - Civil** |  | 2025-11-18 | 2026-07-27 |  |  |  |  |  |  |
| PG-10776 |  | UPVC Windows & Sliding doors | 5d | 2025-11-18 | 2025-11-24 | PG-10704 FF+60d | 169.83d | 0d | Fenesta (UPVC Windows) [430000 h] | 430,000 | 37932 |
| PG-10777 |  | Wall Cladding Upto 1.2 Mts | 20d | 2025-12-05 | 2025-12-29 | PG-10776 FF+30d | 169.83d | 6d | L&T [800000 h] | 800,000 | 37933 |
| PG-10778 |  | Painting Works - Texture & one coat Painting works | 15d | 2026-01-05 | 2026-01-22 | PG-10777, PG-10774 FF+30d | 163.83d | 142.83d | Surfa Coats (Painting) [390000 h] | 390,000 | 37934 |
| PG-10779 |  | Final Coat Painting | 20.33d | 2026-07-03 | 2026-07-27 | PG-10781, PG-10778 FF+15d, PG-10013 | 21d | 0d | Surfa Coats (Painting) [172000 h] | 172,000 | 37935 |
|  | 1.3.1.1.5.3 | **Floor Finishing Works - Civil** |  | 2025-10-18 | 2025-11-18 |  |  |  |  |  |  |
| PG-10780 |  | Fire Doors installation | 10d | 2025-10-18 | 2025-10-30 | PG-10771 | 214.49d | 0d | Shakthi Hormann (Fire Doors) [500000 h] | 500,000 | 37941 |
| PG-10781 |  | Verified tile flooring works | 15d | 2025-10-30 | 2025-11-18 | PG-10780 | 214.49d | 193.49d | L&T [600000 h] | 600,000 | 37939 |
|  | 1.3.1.1.5.4 | **Fire Staircase Finishing Works - Civil** |  | 2025-10-18 | 2026-02-09 |  |  |  |  |  |  |
| PG-10782 |  | Staircase Railing Fixing works | 20d | 2025-10-18 | 2025-11-12 | PG-10771 | 44.83d | 0d | L&T [800000 h] | 800,000 | 42530 |
| PG-10783 |  | Wall and ceiling Gypsum plastering | 30d | 2025-10-30 | 2025-12-05 | PG-10782 FF+20d | 44.83d | 0d | L&T [1200000 h] | 1,200,000 | 42533 |
| PG-10784 |  | Staircase Flooring and Skirting Works | 40d | 2025-11-18 | 2026-01-03 | PG-10783 FF+25d | 44.83d | 0d | L&T [1600000 h] | 1,600,000 | 42532 |
| PG-10785 |  | UPVC Window fixing works | 15d | 2026-01-03 | 2026-01-21 | PG-10784 FF+15d | 44.83d | 0d | Fenesta (UPVC Windows) [900000 h] | 900,000 | 42534 |
| PG-10786 |  | Staircase Painting works | 20d | 2026-01-15 | 2026-02-09 | PG-10785 FF+15d | 44.83d | 0d | Surfa Coats (Painting) [520000 h] | 520,000 | 42531 |
|  | 1.3.1.1.6 | **MEP Civil Works (Shaft, Lift Shaft & OHT )** |  | 2025-07-21 | 2026-01-09 |  |  |  |  |  |  |
|  | 1.3.1.1.6.1 | **Lift Shaft Works** |  | 2025-07-21 | 2026-01-09 |  |  |  |  |  |  |
| PG-10787 |  | Tie rod hole packing | 8d | 2025-07-21 | 2025-07-30 | PG-10193 | 122.33d | 0d | L&T [320000 h] | 320,000 | 37898 |
| PG-10788 |  | Grinding works | 5d | 2025-07-30 | 2025-08-05 | PG-10787 | 122.33d | 0d | L&T [200000 h] | 200,000 | 37899 |
| PG-10789 |  | Lift pit waterproofing works | 21d | 2025-08-05 | 2025-08-30 | PG-10788 | 122.33d | 0d | Otis (Lifts) [672000 h] | 672,000 | 37902 |
| PG-10790 |  | Shaft door opening finishing | 7d | 2025-08-30 | 2025-09-08 | PG-10789 | 122.33d | 0d | L&T [280000 h] | 280,000 | 37900 |
| PG-10791 |  | Painting works | 8d | 2025-09-08 | 2025-09-17 | PG-10790 | 122.33d | 0d | Surfa Coats (Painting) [256000 h] | 256,000 | 37901 |
| PG-10792 |  | Lift Wall Cladding Works | 15.33d | 2025-12-23 | 2026-01-09 | PG-10827 | 141.97d | 35d | Otis (Lifts) [491000 h] | 491,000 | 37922 |

| ID | WBS | Activity | Duration | Start | Finish | Predecessors | Total float | Free float | Resources | Cost | MSP Activity ID |
| --- | --- | --- | --- | --- | --- | --- | --- | --- | --- | --- | --- |
|  | 1.3.1.1.6.2 | **Electrical Shaft works** |  | 2025-07-21 | 2025-08-23 |  |  |  |  |  |  |
| PG-10793 |  | Tie rod hole packing | 8d | 2025-07-21 | 2025-07-30 | PG-10193 | 261.16d | 0d | L&T [320000 h] | 320,000 | 37874 |
| PG-10794 |  | Grinding works | 5d | 2025-07-30 | 2025-08-05 | PG-10793 | 261.16d | 0d | L&T [200000 h] | 200,000 | 37875 |
| PG-10795 |  | Shaft door opening finishing | 7d | 2025-08-05 | 2025-08-13 | PG-10794 | 261.16d | 0d | L&T [280000 h] | 280,000 | 37890 |
| PG-10796 |  | Painting works | 8d | 2025-08-13 | 2025-08-23 | PG-10795 | 261.16d | 0d | Surfa Coats (Painting) [256000 h] | 256,000 | 37876 |
|  | 1.3.1.1.6.3 | **FPS Shaft works** |  | 2025-07-21 | 2025-08-23 |  |  |  |  |  |  |
| PG-10797 |  | Tie rod hole packing | 8d | 2025-07-21 | 2025-07-30 | PG-10193 | 260.83d | 0d | L&T [320000 h] | 320,000 | 37880 |
| PG-10798 |  | Grinding works | 5d | 2025-07-30 | 2025-08-05 | PG-10797 | 260.83d | 0d | L&T [200000 h] | 200,000 | 37881 |
| PG-10799 |  | Shaft door opening finishing | 7d | 2025-08-05 | 2025-08-13 | PG-10798 | 260.83d | 0d | L&T [280000 h] | 280,000 | 37891 |
| PG-10800 |  | Painting works | 8d | 2025-08-13 | 2025-08-23 | PG-10799 | 260.83d | 0d | Surfa Coats (Painting) [256000 h] | 256,000 | 37882 |
|  | 1.3.1.1.6.4 | **PHE Shaft works** |  | 2025-07-21 | 2025-08-23 |  |  |  |  |  |  |
| PG-10801 |  | Tie rod hole packing | 8d | 2025-07-21 | 2025-07-30 | PG-10193 | 219.49d | 0d | L&T [320000 h] | 320,000 | 37893 |
| PG-10802 |  | Grinding works | 5d | 2025-07-30 | 2025-08-05 | PG-10801 | 219.49d | 0d | L&T [200000 h] | 200,000 | 37894 |
| PG-10803 |  | Shaft door opening finishing | 7d | 2025-08-05 | 2025-08-13 | PG-10802 | 219.49d | 0d | L&T [280000 h] | 280,000 | 37895 |
| PG-10804 |  | Painting works | 8d | 2025-08-13 | 2025-08-23 | PG-10803 | 219.49d | 0d | Surfa Coats (Painting) [256000 h] | 256,000 | 37896 |
|  | 1.3.1.1.6.5 | **Data & Communication Shaft** |  | 2025-07-21 | 2025-08-21 |  |  |  |  |  |  |
| PG-10805 |  | Tie rod hole packing | 8d | 2025-07-21 | 2025-07-30 | PG-10193 | 255.83d | 0d | L&T [320000 h] | 320,000 | 37886 |
| PG-10806 |  | Grinding works | 5d | 2025-07-30 | 2025-08-05 | PG-10805 | 255.83d | 0d | L&T [200000 h] | 200,000 | 37887 |
| PG-10807 |  | Shaft door opening finishing | 5d | 2025-08-05 | 2025-08-11 | PG-10806 | 255.83d | 0d | L&T [200000 h] | 200,000 | 37888 |
| PG-10808 |  | Painting works | 8d | 2025-08-11 | 2025-08-21 | PG-10807 | 255.83d | 0d | Surfa Coats (Painting) [256000 h] | 256,000 | 37889 |
|  | 1.3.1.1.6.6 | **OHT Works** |  | 2025-08-01 | 2025-09-20 |  |  |  |  |  |  |
| PG-10809 |  | Tank materials Supply & Shifting | 10d | 2025-08-01 | 2025-08-13 | PG-10025, PG-10193 | 217.83d | 0d | Santech (Plumbing) [320000 h] | 320,000 | 43247 |
| PG-10810 |  | Assembling OHT FRP Tank | 10d | 2025-08-13 | 2025-08-26 | PG-10809 | 217.83d | 0d | Santech (Plumbing) [320000 h] | 320,000 | 43248 |
| PG-10811 |  | Installation of OHT Tank | 15d | 2025-08-26 | 2025-09-12 | PG-10810 | 217.83d | 0d | Santech (Plumbing) [480000 h] | 480,000 | 43249 |
| PG-10812 |  | Water tightness works and checking | 7d | 2025-09-12 | 2025-09-20 | PG-10811 | 217.83d | 0d | Santech (Plumbing) [224000 h] | 224,000 | 43250 |

| ID | WBS | Activity | Duration | Start | Finish | Predecessors | Planned start | Planned finish | Total float | Free float | Resources | Cost | MSP Activity ID |
| --- | --- | --- | --- | --- | --- | --- | --- | --- | --- | --- | --- | --- | --- |
|  | 1.3.1.1.7 | **MEP Shaft works** |  | 2025-08-21 | 2025-11-14 |  |  |  |  |  |  |  |  |
|  | 1.3.1.1.7.1 | **Electrical** |  | 2025-08-23 | 2025-10-04 |  |  |  |  |  |  |  |  |
| PG-10813 |  | Tray Works | 10d | 2025-08-23 | 2025-09-04 | PG-10796 |  |  | 261.16d | 0d | Elexir (Electrical) [320000 h] | 320,000 | 19844 |
| PG-10814 |  | Cable & Conducting works | 10d | 2025-09-04 | 2025-09-16 | PG-10813 |  |  | 261.16d | 0d | Elexir (Electrical) [320000 h] | 320,000 | 19846 |
| PG-10815 |  | Wiring/DB/connector box installation and termination works | 15d | 2025-09-16 | 2025-10-04 | PG-10814 |  |  | 261.16d | 0d | Elexir (Electrical) [480000 h] | 480,000 | 19845 |
|  | 1.3.1.1.7.2 | **FPS** |  | 2025-08-23 | 2025-10-04 |  |  |  |  |  |  |  |  |
| PG-10816 |  | Shaft MS Piping & fixtures installation | 20d | 2025-08-23 | 2025-09-16 | PG-10800 |  |  | 260.83d | 0d | Nexus (Fire) [640000 h] | 640,000 | 19848 |
| PG-10817 |  | Tray / cabling / conducting & wiring works | 15d | 2025-09-16 | 2025-10-04 | PG-10816 |  |  | 260.83d | 0d | Elexir (Electrical) [480000 h] | 480,000 | 19847 |
|  | 1.3.1.1.7.3 | **Data & Communication** |  | 2025-08-21 | 2025-10-10 |  |  |  |  |  |  |  |  |
| PG-10818 |  | Tray Works | 12d | 2025-08-21 | 2025-09-04 | PG-10808 |  |  | 255.83d | 0d | Elexir (Electrical) [384000 h] | 384,000 | 19850 |
| PG-10819 |  | Tray / cabling / conducting & wiring works | 15d | 2025-09-04 | 2025-09-22 | PG-10818 |  |  | 255.83d | 0d | Elexir (Electrical) [480000 h] | 480,000 | 19851 |
| PG-10820 |  | Wiring/DB/connector box installation and termination works | 15d | 2025-09-22 | 2025-10-10 | PG-10819 |  |  | 255.83d | 0d | Elexir (Electrical) [480000 h] | 480,000 | 19852 |
|  | 1.3.1.1.7.4 | **PHE** |  | 2025-08-23 | 2025-11-14 |  |  |  |  |  |  |  |  |
| PG-10821 |  | Bracket fixing works | 7d | 2025-08-23 | 2025-09-01 | PG-10804 |  |  | 219.49d | 0d | Santech (Plumbing) [224000 h] | 224,000 | 19855 |
| PG-10822 |  | Piping Works | 15d | 2025-09-01 | 2025-09-18 | PG-10821 |  |  | 219.49d | 1.67d | Santech (Plumbing) [480000 h] | 480,000 | 19856 |
| PG-10823 |  | Terrace Ring main & OHT Connection works | 40d | 2025-09-20 | 2025-11-08 | PG-10197, PG-10822, PG-10812 |  |  | 217.83d | 0d | Santech (Plumbing) [1280000 h] | 1,280,000 | 43354 |
| PG-10824 |  | Commissioning | 5.67d | 2025-11-08 | 2025-11-14 | PG-10823 |  |  | 217.83d | 0d | Santech (Plumbing) [181000 h] | 181,000 | 19854 |
|  | 1.3.1.1.8 | **Lift Installation and Testing works** |  | 2025-08-05 | 2026-03-27 |  |  |  |  |  |  |  |  |
| PG-10825 |  | Lift Shaft Survey works | 10d | 2025-08-05 | 2025-08-18 | PG-10788 |  |  | 148.83d | 26.5d | Otis (Lifts) [400000 h] | 400,000 | 37919 |
| PG-10826 |  | Guide Rails fixing works | 40d | 2025-09-17 | 2025-11-05 | PG-10029, PG-10825, PG-10791 |  |  | 122.33d | 15.36d | Otis (Lifts) [3400000 h] | 3,400,000 | 37918 |
| PG-10827 |  | Lift Frame fixing works | 24.67d | 2025-11-24 | 2025-12-23 | PG-10826, PG-10030 | 2025-11-24 | 2025-12-22 | 106.97d | 0d | Otis (Lifts) [987000 h] | 987,000 | 37917 |
| PG-10828 |  | CAR Assembly works | 20d | 2025-12-23 | 2026-01-15 | PG-10827 |  |  | 106.97d | 0d | L&T [800000 h] | 800,000 | 37920 |
| PG-10829 |  | Lift Machine Room Works | 30d | 2026-01-15 | 2026-02-20 | PG-10828 |  |  | 106.97d | 0d | Otis (Lifts) [1200000 h] | 1,200,000 | 37921 |
| PG-10830 |  | Slow Speed & High Speed Testing works | 30d | 2026-02-20 | 2026-03-27 | PG-10792, PG-10829 |  |  | 106.97d | 0d | L&T [1200000 h] | 1,200,000 | 37871 |

| ID | WBS | Activity | Duration | Start | Finish | Predecessors | Complete | Planned start | Planned finish | Total float | Free float | Resources | Cost | MSP Activity ID |
| --- | --- | --- | --- | --- | --- | --- | --- | --- | --- | --- | --- | --- | --- | --- |
|  | 1.3.1.1.9 | **Electrical Panel Works** |  | 2025-07-19 | 2026-02-25 |  |  |  |  |  |  |  |  |  |
|  | 1.3.1.1.9.1 | **Civil Finishing Works** |  | 2025-07-19 | 2025-09-03 |  |  |  |  |  |  |  |  |  |
| PG-10831 |  | Wall Tie rod hole packing & Grinding works. | 15d | 2025-07-19 | 2025-08-06 | PG-10655 |  |  |  | 131.16d | 0d | L&T [600000 h] | 600,000 | 42046 |
| PG-10832 |  | Window, Louver and Door fixing works | 7d | 2025-08-06 | 2025-08-14 | PG-10831 |  |  |  | 131.16d | 0d | Fenesta (UPVC Windows) [420000 h] | 420,000 | 42047 |
| PG-10833 |  | Pedestal works | 10d | 2025-08-14 | 2025-08-27 | PG-10832 |  |  |  | 131.16d | 0d | Elexir (Electrical) [320000 h] | 320,000 | 42048 |
| PG-10834 |  | Painting works | 6d | 2025-08-27 | 2025-09-03 | PG-10833 |  |  |  | 131.16d | 0d | Surfa Coats (Painting) [224000 h] | 224,000 | 42049 |
|  | 1.3.1.1.9.2 | **Electrical Panel works** |  | 2025-09-03 | 2026-02-25 |  |  |  |  |  |  |  |  |  |
| PG-10835 |  | Electrical Panel assembly works | 58.5d | 2025-09-03 | 2025-11-12 | PG-10032, PG-10834 |  |  |  | 131.16d | 0d | Elexir (Electrical) [1872000 h] | 1,872,000 | 42053 |
| PG-10836 |  | Electrical Panel installation and cable termination. | 59.67d | 2025-11-12 | 2026-01-21 | PG-10835 |  |  |  | 131.16d | 0d | Elexir (Electrical) [1909000 h] | 1,909,000 | 42051 |
| PG-10837 |  | Electrical Panel Testing and commissioning works | 29.5d | 2026-01-21 | 2026-02-25 | PG-10836 |  |  |  | 131.16d | 0d | Elexir (Electrical) [944000 h] | 944,000 | 42050 |
|  | 1.3.1.1.10 | **Entrance Lobby works** |  | 2026-02-09 | 2026-06-29 |  |  |  |  |  |  |  |  |  |
| PG-10838 |  | Flooring Works | 30.67d | 2026-02-09 | 2026-03-17 | PG-10786 |  |  |  | 44.83d | 0d | L&T [1227000 h] | 1,227,000 | 43033 |
| PG-10839 |  | Glass Door and False ceiling Works | 29.83d | 2026-03-17 | 2026-04-21 | PG-10838 |  |  |  | 44.83d | 0d | Interiors (False celing) [656000 h] | 656,000 | 43034 |
| PG-10841 |  | Canopy Works | 25.67d | 2026-03-17 | 2026-04-16 | PG-10838 |  |  |  | 63.66d | 18.83d | L&T [1027000 h] | 1,027,000 | 46267 |
| PG-10840 |  | Painting Works | 14.67d | 2026-04-21 | 2026-05-08 | PG-10839 |  |  |  | 44.83d | 0d | Surfa Coats (Painting) [381000 h] | 381,000 | 43035 |
| PG-10842 |  | Interior Works | 44.83d | 2026-05-08 | 2026-06-29 | PG-10841, PG-10840 |  |  |  | 44.83d | 23.83d | L&T [1793000 h] | 1,793,000 | 43036 |
|  | 1.3.1.1.11 | **Lightening Arrester works** |  | 2025-12-02 | 2025-12-15 |  |  |  |  |  |  |  |  |  |
| PG-10843 |  | Conductor will be lifted with RCC Works, But Terrace works will be done once Parapet Painting done | 10.5d | 2025-12-02 | 2025-12-15 | PG-10770 |  |  |  | 249.66d | 0d | Surfa Coats (Painting) [273000 h] | 273,000 | 43130 |
|  | 1.3.1.2 | **Tower 2 ( 2B+G+26 ) TYP 4 Units - 106 Units** |  | 2023-10-16 | 2026-08-04 |  |  |  |  |  |  |  |  |  |
|  | 1.3.1.2.1 | **Foundation works** |  | 2023-10-16 | 2024-04-11 |  |  |  |  |  |  |  |  |  |
| PG-10844 |  | Setting out - Marking | 3d | 2023-10-16 A | 2023-10-19 A | PG-11725 FS+7d | 100% |  |  |  |  | L&T [120000 h] | 120,000 | 11496 |
| PG-10845 |  | Excavation Works | 45d | 2023-10-19 A | 2023-12-12 A | PG-10844 | 100% |  |  |  |  | L&T [1800000 h] | 1,800,000 | 11497 |
| PG-10846 |  | Piling Works - 177 Nos | 45d | 2023-12-06 A | 2024-01-30 A | PG-10845 FF+40d | 100% | 2023-12-06 | 2024-01-29 |  |  | L&T [1800000 h] | 1,800,000 | 11498 |
| PG-10847 |  | Backfilling and Consolidation | 19.67d | 2024-01-19 A | 2024-02-13 A | PG-10846 FF+12d | 100% | 2024-01-18 | 2024-02-10 |  |  | L&T [787000 h] | 787,000 | 45983 |
| PG-10848 |  | Waterproofing & PCC works | 15d | 2024-02-09 A | 2024-02-27 A | PG-10847 FF+12d | 100% | 2024-02-08 | 2024-02-26 |  |  | L&T [600000 h] | 600,000 | 11499 |
| PG-10849 |  | Raft Reinforcement | 15d | 2024-02-27 A | 2024-03-15 A | PG-10848 FF+15d | 100% | 2024-02-26 | 2024-03-14 |  |  | L&T [600000 h] | 600,000 | 11500 |
| PG-10850 |  | Raft Formwork | 8d | 2024-03-23 A | 2024-04-02 A | PG-10849 FF+15d | 100% | 2024-03-22 | 2024-04-01 |  |  | L&T [320000 h] | 320,000 | 11501 |
| PG-10851 |  | Raft Concreting | 3d | 2024-04-08 A | 2024-04-11 A | PG-10850 FF+8d | 100% | 2024-04-06 | 2024-04-10 |  |  | L&T [120000 h] | 120,000 | 11502 |

| ID | WBS | Activity | Duration | Start | Finish | Predecessors | Complete | Planned start | Planned finish | Resources | Cost | MSP Activity ID |
| --- | --- | --- | --- | --- | --- | --- | --- | --- | --- | --- | --- | --- |
|  | 1.3.1.2.2 | **Structure works** |  | 2024-04-11 | 2025-09-24 |  |  |  |  |  |  |  |
|  | 1.3.1.2.2.1 | **LBF** |  | 2024-04-11 | 2024-05-09 |  |  |  |  |  |  |  |
|  | 1.3.1.2.2.1.1 | **Columns / shear walls** |  | 2024-04-11 | 2024-04-27 |  |  |  |  |  |  |  |
| PG-10852 |  | Reinforcement | 4d | 2024-04-11 A | 2024-04-16 A | PG-10851 | 100% | 2024-04-10 | 2024-04-15 | L&T [700000 h] | 700,000 | 11506 |
| PG-10854 |  | Concrete | 9.5d | 2024-04-16 A | 2024-04-27 A | PG-10853 FF+5d | 100% | 2024-04-15 | 2024-04-25 | L&T [340000 h] | 340,000 | 11508 |
| PG-10853 |  | Formwork | 4d | 2024-04-17 A | 2024-04-22 A | PG-10852 FF+5d | 100% | 2024-04-16 | 2024-04-20 | L&T [320000 h] | 320,000 | 11507 |
|  | 1.3.1.2.2.1.2 | **Slab, Beams & Staircase** |  | 2024-04-27 | 2024-05-09 |  |  |  |  |  |  |  |
| PG-10855 |  | Formwork | 3d | 2024-04-27 A | 2024-05-01 A | PG-10854 | 100% | 2024-04-26 | 2024-04-30 | L&T [220000 h] | 220,000 | 11510 |
| PG-10856 |  | Reinforcement | 3d | 2024-05-03 A | 2024-05-07 A | PG-10855 FF+5d | 100% | 2024-05-02 | 2024-05-06 | L&T [520000 h] | 520,000 | 11511 |
| PG-10857 |  | Concrete | 1d | 2024-05-08 A | 2024-05-09 A | PG-10856 FS+1d | 100% | 2024-05-07 | 2024-05-08 | L&T [880000 h] | 880,000 | 11512 |
|  | 1.3.1.2.2.2 | **UBF** |  | 2024-05-09 | 2024-06-06 |  |  |  |  |  |  |  |
|  | 1.3.1.2.2.2.1 | **Columns / shear walls** |  | 2024-05-09 | 2024-05-25 |  |  |  |  |  |  |  |
| PG-10858 |  | Reinforcement | 4d | 2024-05-09 A | 2024-05-14 A | PG-10857 | 100% | 2024-05-08 | 2024-05-13 | L&T [700000 h] | 700,000 | 11515 |
| PG-10860 |  | Concrete | 9.5d | 2024-05-14 A | 2024-05-25 A | PG-10859 FF+5d | 100% | 2024-05-13 | 2024-05-23 | L&T [340000 h] | 340,000 | 11517 |
| PG-10859 |  | Formwork | 4d | 2024-05-15 A | 2024-05-20 A | PG-10858 FF+5d | 100% | 2024-05-14 | 2024-05-18 | L&T [320000 h] | 320,000 | 11516 |
|  | 1.3.1.2.2.2.2 | **Slab, Beams & Staircase** |  | 2024-05-25 | 2024-06-06 |  |  |  |  |  |  |  |
| PG-10861 |  | Formwork | 3d | 2024-05-25 A | 2024-05-29 A | PG-10860 | 100% | 2024-05-24 | 2024-05-28 | L&T [220000 h] | 220,000 | 11519 |
| PG-10862 |  | Reinforcement | 3d | 2024-05-31 A | 2024-06-04 A | PG-10861 FF+5d | 100% | 2024-05-30 | 2024-06-03 | L&T [520000 h] | 520,000 | 11520 |
| PG-10863 |  | Concrete | 1d | 2024-06-05 A | 2024-06-06 A | PG-10862 FS+1d | 100% | 2024-06-04 | 2024-06-05 | L&T [880000 h] | 880,000 | 11521 |
|  | 1.3.1.2.2.3 | **Ground Floor** |  | 2024-06-06 | 2024-06-29 |  |  |  |  |  |  |  |
|  | 1.3.1.2.2.3.1 | **Columns / shear walls** |  | 2024-06-06 | 2024-06-19 |  |  |  |  |  |  |  |
| PG-10864 |  | Reinforcement | 4d | 2024-06-06 A | 2024-06-11 A | PG-10863 | 100% | 2024-06-05 | 2024-06-10 | L&T [700000 h] | 700,000 | 11524 |
| PG-10866 |  | Concrete | 7.5d | 2024-06-10 A | 2024-06-19 A | PG-10865 FF+3d | 100% | 2024-06-08 | 2024-06-17 | L&T [340000 h] | 340,000 | 11526 |
| PG-10865 |  | Formwork | 4d | 2024-06-11 A | 2024-06-15 A | PG-10864 FF+4d | 100% | 2024-06-10 | 2024-06-14 | L&T [320000 h] | 320,000 | 11525 |

| ID | WBS | Activity | Duration | Start | Finish | Predecessors | Complete | Planned start | Planned finish | Resources | Cost | MSP Activity ID |
| --- | --- | --- | --- | --- | --- | --- | --- | --- | --- | --- | --- | --- |
|  | 1.3.1.2.2.3.2 | **Slab, Beams & Staircase** |  | 2024-06-19 | 2024-06-29 |  |  |  |  |  |  |  |
| PG-10867 |  | Formwork | 3d | 2024-06-19 A | 2024-06-22 A | PG-10866 | 100% | 2024-06-18 | 2024-06-21 | L&T [220000 h] | 220,000 | 11528 |
| PG-10868 |  | Reinforcement | 3d | 2024-06-24 A | 2024-06-27 A | PG-10867 FF+4d | 100% | 2024-06-22 | 2024-06-26 | L&T [520000 h] | 520,000 | 11529 |
| PG-10869 |  | Concrete | 1d | 2024-06-28 A | 2024-06-29 A | PG-10868 FS+1d | 100% | 2024-06-27 | 2024-06-28 | L&T [880000 h] | 880,000 | 11530 |
|  | 1.3.1.2.2.4 | **Floor 01** |  | 2024-06-29 | 2024-07-23 |  |  |  |  |  |  |  |
|  | 1.3.1.2.2.4.1 | **Columns / shear walls** |  | 2024-06-29 | 2024-07-12 |  |  |  |  |  |  |  |
| PG-10870 |  | Reinforcement | 4d | 2024-06-29 A | 2024-07-04 A | PG-10869 | 100% | 2024-06-28 | 2024-07-03 | L&T [700000 h] | 700,000 | 11533 |
| PG-10872 |  | Concrete | 7.5d | 2024-07-03 A | 2024-07-12 A | PG-10871 FF+3d | 100% | 2024-07-02 | 2024-07-10 | L&T [340000 h] | 340,000 | 11535 |
| PG-10871 |  | Formwork | 4d | 2024-07-04 A | 2024-07-09 A | PG-10870 FF+4d | 100% | 2024-07-03 | 2024-07-08 | L&T [320000 h] | 320,000 | 11534 |
|  | 1.3.1.2.2.4.2 | **Slab, Beams & Staircase** |  | 2024-07-12 | 2024-07-23 |  |  |  |  |  |  |  |
| PG-10873 |  | Formwork | 3d | 2024-07-12 A | 2024-07-16 A | PG-10872 | 100% | 2024-07-11 | 2024-07-15 | L&T [220000 h] | 220,000 | 11537 |
| PG-10874 |  | Reinforcement | 3d | 2024-07-17 A | 2024-07-20 A | PG-10873 FF+4d | 100% | 2024-07-16 | 2024-07-19 | L&T [520000 h] | 520,000 | 11538 |
| PG-10875 |  | Concrete | 1d | 2024-07-22 A | 2024-07-23 A | PG-10874 FS+1d | 100% | 2024-07-20 | 2024-07-22 | L&T [880000 h] | 880,000 | 11539 |
|  | 1.3.1.2.2.5 | **Floor 02** |  | 2024-07-23 | 2024-08-17 |  |  |  |  |  |  |  |
|  | 1.3.1.2.2.5.1 | **Columns / shear walls** |  | 2024-07-23 | 2024-08-05 |  |  |  |  |  |  |  |
| PG-10876 |  | Reinforcement | 4d | 2024-07-23 A | 2024-07-27 A | PG-10875 | 100% | 2024-07-22 | 2024-07-26 | L&T [700000 h] | 700,000 | 11542 |
| PG-10877 |  | Formwork | 4d | 2024-07-27 A | 2024-08-01 A | PG-10876 FF+4d | 100% | 2024-07-26 | 2024-07-31 | L&T [320000 h] | 320,000 | 11543 |
| PG-10878 |  | Concrete | 3.67d | 2024-07-31 A | 2024-08-05 A | PG-10877 FF+3d | 100% | 2024-07-30 | 2024-08-02 | L&T [340000 h] | 340,000 | 11544 |
|  | 1.3.1.2.2.5.2 | **Slab, Beams & Staircase** |  | 2024-08-05 | 2024-08-17 |  |  |  |  |  |  |  |
| PG-10879 |  | Formwork | 3d | 2024-08-05 A | 2024-08-08 A | PG-10878 | 100% | 2024-08-03 | 2024-08-07 | L&T [220000 h] | 220,000 | 11546 |
| PG-10880 |  | Reinforcement | 3d | 2024-08-09 A | 2024-08-14 A | PG-10879 FF+4d | 100% | 2024-08-08 | 2024-08-12 | L&T [520000 h] | 520,000 | 11547 |
| PG-10881 |  | Concrete | 1d | 2024-08-16 A | 2024-08-17 A | PG-10880 FS+1d | 100% | 2024-08-13 | 2024-08-14 | L&T [880000 h] | 880,000 | 11548 |
|  | 1.3.1.2.2.6 | **Floor 03** |  | 2024-08-17 | 2024-09-10 |  |  |  |  |  |  |  |
|  | 1.3.1.2.2.6.1 | **Columns / shear walls** |  | 2024-08-17 | 2024-08-30 |  |  |  |  |  |  |  |
| PG-10882 |  | Reinforcement | 4d | 2024-08-17 A | 2024-08-22 A | PG-10881 | 100% | 2024-08-14 | 2024-08-20 | L&T [700000 h] | 700,000 | 11551 |
| PG-10883 |  | Formwork | 4d | 2024-08-22 A | 2024-08-27 A | PG-10882 FF+4d | 100% | 2024-08-20 | 2024-08-24 | L&T [320000 h] | 320,000 | 11552 |
| PG-10884 |  | Concrete | 3.67d | 2024-08-26 A | 2024-08-30 A | PG-10883 FF+3d | 100% | 2024-08-23 | 2024-08-27 | L&T [340000 h] | 340,000 | 11553 |

| ID | WBS | Activity | Duration | Start | Finish | Predecessors | Complete | Planned start | Planned finish | Resources | Cost | MSP Activity ID |
| --- | --- | --- | --- | --- | --- | --- | --- | --- | --- | --- | --- | --- |
|  | 1.3.1.2.2.6.2 | **Slab, Beams & Staircase** |  | 2024-08-30 | 2024-09-10 |  |  |  |  |  |  |  |
| PG-10885 |  | Formwork | 3d | 2024-08-30 A | 2024-09-03 A | PG-10884 | 100% | 2024-08-28 | 2024-08-31 | L&T [220000 h] | 220,000 | 11555 |
| PG-10886 |  | Reinforcement | 3d | 2024-09-04 A | 2024-09-07 A | PG-10885 FF+4d | 100% | 2024-09-02 | 2024-09-05 | L&T [520000 h] | 520,000 | 11556 |
| PG-10887 |  | Concrete | 1d | 2024-09-09 A | 2024-09-10 A | PG-10886 FS+1d | 100% | 2024-09-06 | 2024-09-07 | L&T [880000 h] | 880,000 | 11557 |
|  | 1.3.1.2.2.7 | **Floor 04** |  | 2024-09-10 | 2024-09-30 |  |  |  |  |  |  |  |
|  | 1.3.1.2.2.7.1 | **Columns / shear walls** |  | 2024-09-10 | 2024-09-19 |  |  |  |  |  |  |  |
| PG-10888 |  | Reinforcement | 4d | 2024-09-10 A | 2024-09-14 A | PG-10887 | 100% | 2024-09-07 | 2024-09-12 | L&T [700000 h] | 700,000 | 11560 |
| PG-10889 |  | Formwork | 4d | 2024-09-14 A | 2024-09-19 A | PG-10888 FF+4d | 100% | 2024-09-12 | 2024-09-17 | L&T [320000 h] | 320,000 | 11561 |
|  | 1.3.1.2.2.7.2 | **Slab, Beams & Staircase** |  | 2024-09-20 | 2024-09-30 |  |  |  |  |  |  |  |
| PG-10890 |  | Formwork | 3d | 2024-09-20 A | 2024-09-24 A | PG-10889 FF+4d | 100% | 2024-09-18 | 2024-09-21 | L&T [220000 h] | 220,000 | 11563 |
| PG-10891 |  | Reinforcement | 3d | 2024-09-25 A | 2024-09-28 A | PG-10890 FF+4d | 100% | 2024-09-23 | 2024-09-26 | L&T [520000 h] | 520,000 | 11564 |
| PG-10892 |  | Concrete | 1d | 2024-09-28 A | 2024-09-30 A | PG-10891 | 100% | 2024-09-26 | 2024-09-27 | L&T [880000 h] | 880,000 | 11565 |
|  | 1.3.1.2.2.8 | **Floor 05** |  | 2024-09-30 | 2024-10-21 |  |  |  |  |  |  |  |
|  | 1.3.1.2.2.8.1 | **Columns / shear walls** |  | 2024-09-30 | 2024-10-10 |  |  |  |  |  |  |  |
| PG-10893 |  | Reinforcement | 4d | 2024-09-30 A | 2024-10-05 A | PG-10892 | 100% | 2024-09-27 | 2024-10-03 | L&T [700000 h] | 700,000 | 11568 |
| PG-10894 |  | Formwork | 4d | 2024-10-05 A | 2024-10-10 A | PG-10893 FF+4d | 100% | 2024-10-03 | 2024-10-08 | L&T [320000 h] | 320,000 | 11569 |
|  | 1.3.1.2.2.8.2 | **Slab, Beams & Staircase** |  | 2024-10-11 | 2024-10-21 |  |  |  |  |  |  |  |
| PG-10895 |  | Formwork | 3d | 2024-10-11 A | 2024-10-15 A | PG-10894 FF+4d | 100% | 2024-10-09 | 2024-10-12 | L&T [220000 h] | 220,000 | 11571 |
| PG-10896 |  | Reinforcement | 3d | 2024-10-16 A | 2024-10-19 A | PG-10895 FF+4d | 100% | 2024-10-14 | 2024-10-17 | L&T [520000 h] | 520,000 | 11572 |
| PG-10897 |  | Concrete | 1d | 2024-10-19 A | 2024-10-21 A | PG-10896 | 100% | 2024-10-17 | 2024-10-18 | L&T [880000 h] | 880,000 | 11573 |
|  | 1.3.1.2.2.9 | **Floor 06** |  | 2024-10-21 | 2024-11-06 |  |  |  |  |  |  |  |
|  | 1.3.1.2.2.9.1 | **Columns / shear walls** |  | 2024-10-21 | 2024-10-30 |  |  |  |  |  |  |  |
| PG-10898 |  | Reinforcement | 4d | 2024-10-21 A | 2024-10-25 A | PG-10897 | 100% | 2024-10-18 | 2024-10-23 | L&T [700000 h] | 700,000 | 11576 |
| PG-10899 |  | Formwork | 4d | 2024-10-25 A | 2024-10-30 A | PG-10898 FF+4d | 100% | 2024-10-23 | 2024-10-28 | L&T [320000 h] | 320,000 | 11577 |

| ID | WBS | Activity | Duration | Start | Finish | Predecessors | Complete | Planned start | Planned finish | Resources | Cost | MSP Activity ID |
| --- | --- | --- | --- | --- | --- | --- | --- | --- | --- | --- | --- | --- |
|  | 1.3.1.2.2.9.2 | **Slab, Beams & Staircase** |  | 2024-10-29 | 2024-11-06 |  |  |  |  |  |  |  |
| PG-10900 |  | Formwork | 3d | 2024-10-29 A | 2024-11-02 A | PG-10899 FF+2d | 100% | 2024-10-26 | 2024-10-30 | L&T [220000 h] | 220,000 | 11579 |
| PG-10901 |  | Reinforcement | 3d | 2024-10-31 A | 2024-11-05 A | PG-10900 FF+2d | 100% | 2024-10-29 | 2024-11-02 | L&T [520000 h] | 520,000 | 11580 |
| PG-10902 |  | Concrete | 1d | 2024-11-05 A | 2024-11-06 A | PG-10901 | 100% | 2024-11-02 | 2024-11-04 | L&T [880000 h] | 880,000 | 11581 |
|  | 1.3.1.2.2.10 | **Floor 07** |  | 2024-11-06 | 2024-11-22 |  |  |  |  |  |  |  |
|  | 1.3.1.2.2.10.1 | **Columns / shear walls** |  | 2024-11-06 | 2024-11-16 |  |  |  |  |  |  |  |
| PG-10903 |  | Reinforcement | 4d | 2024-11-06 A | 2024-11-11 A | PG-10902 | 100% | 2024-11-04 | 2024-11-08 | L&T [700000 h] | 700,000 | 11584 |
| PG-10904 |  | Formwork | 4d | 2024-11-11 A | 2024-11-16 A | PG-10903 FF+4d | 100% | 2024-11-08 | 2024-11-13 | L&T [320000 h] | 320,000 | 11585 |
|  | 1.3.1.2.2.10.2 | **Slab, Beams & Staircase** |  | 2024-11-15 | 2024-11-22 |  |  |  |  |  |  |  |
| PG-10905 |  | Formwork | 3d | 2024-11-15 A | 2024-11-19 A | PG-10904 FF+2d | 100% | 2024-11-12 | 2024-11-15 | L&T [220000 h] | 220,000 | 11587 |
| PG-10906 |  | Reinforcement | 3d | 2024-11-18 A | 2024-11-21 A | PG-10905 FF+2d | 100% | 2024-11-14 | 2024-11-18 | L&T [520000 h] | 520,000 | 11588 |
| PG-10907 |  | Concrete | 1d | 2024-11-21 A | 2024-11-22 A | PG-10906 | 100% | 2024-11-18 | 2024-11-19 | L&T [880000 h] | 880,000 | 11589 |
|  | 1.3.1.2.2.11 | **Floor 08** |  | 2024-11-22 | 2024-12-07 |  |  |  |  |  |  |  |
|  | 1.3.1.2.2.11.1 | **Columns / shear walls** |  | 2024-11-22 | 2024-12-02 |  |  |  |  |  |  |  |
| PG-10908 |  | Reinforcement | 4d | 2024-11-22 A | 2024-11-27 A | PG-10907 | 100% | 2024-11-19 | 2024-11-23 | L&T [700000 h] | 700,000 | 11592 |
| PG-10909 |  | Formwork | 4d | 2024-11-27 A | 2024-12-02 A | PG-10908 FF+4d | 100% | 2024-11-23 | 2024-11-28 | L&T [320000 h] | 320,000 | 11593 |
|  | 1.3.1.2.2.11.2 | **Slab, Beams & Staircase** |  | 2024-11-30 | 2024-12-07 |  |  |  |  |  |  |  |
| PG-10910 |  | Formwork | 3d | 2024-11-30 A | 2024-12-04 A | PG-10909 FF+2d | 100% | 2024-11-27 | 2024-11-30 | L&T [220000 h] | 220,000 | 11595 |
| PG-10911 |  | Reinforcement | 3d | 2024-12-03 A | 2024-12-06 A | PG-10910 FF+2d | 100% | 2024-11-29 | 2024-12-03 | L&T [520000 h] | 520,000 | 11596 |
| PG-10912 |  | Concrete | 1d | 2024-12-06 A | 2024-12-07 A | PG-10911 | 100% | 2024-12-03 | 2024-12-04 | L&T [880000 h] | 880,000 | 11597 |
|  | 1.3.1.2.2.12 | **Floor 09** |  | 2024-12-07 | 2024-12-23 |  |  |  |  |  |  |  |
|  | 1.3.1.2.2.12.1 | **Columns / shear walls** |  | 2024-12-07 | 2024-12-17 |  |  |  |  |  |  |  |
| PG-10913 |  | Reinforcement | 4d | 2024-12-07 A | 2024-12-12 A | PG-10912 | 100% | 2024-12-04 | 2024-12-09 | L&T [700000 h] | 700,000 | 11600 |
| PG-10914 |  | Formwork | 4d | 2024-12-12 A | 2024-12-17 A | PG-10913 FF+4d | 100% | 2024-12-09 | 2024-12-13 | L&T [320000 h] | 320,000 | 11601 |

| ID | WBS | Activity | Duration | Start | Finish | Predecessors | Complete | Planned start | Planned finish | Resources | Cost | MSP Activity ID |
| --- | --- | --- | --- | --- | --- | --- | --- | --- | --- | --- | --- | --- |
|  | 1.3.1.2.2.12.2 | **Slab, Beams & Staircase** |  | 2024-12-16 | 2024-12-23 |  |  |  |  |  |  |  |
| PG-10915 |  | Formwork | 3d | 2024-12-16 A | 2024-12-19 A | PG-10914 FF+2d | 100% | 2024-12-12 | 2024-12-16 | L&T [220000 h] | 220,000 | 11603 |
| PG-10916 |  | Reinforcement | 3d | 2024-12-18 A | 2024-12-21 A | PG-10915 FF+2d | 100% | 2024-12-14 | 2024-12-18 | L&T [520000 h] | 520,000 | 11604 |
| PG-10917 |  | Concrete | 1d | 2024-12-21 A | 2024-12-23 A | PG-10916 | 100% | 2024-12-18 | 2024-12-19 | L&T [880000 h] | 880,000 | 11605 |
|  | 1.3.1.2.2.13 | **Floor 10** |  | 2024-12-23 | 2025-01-07 |  |  |  |  |  |  |  |
|  | 1.3.1.2.2.13.1 | **Columns / shear walls** |  | 2024-12-23 | 2025-01-01 |  |  |  |  |  |  |  |
| PG-10918 |  | Reinforcement | 4d | 2024-12-23 A | 2024-12-27 A | PG-10917 | 100% | 2024-12-19 | 2024-12-24 | L&T [700000 h] | 700,000 | 11608 |
| PG-10919 |  | Formwork | 4d | 2024-12-27 A | 2025-01-01 A | PG-10918 FF+4d | 100% | 2024-12-24 | 2024-12-28 | L&T [320000 h] | 320,000 | 11609 |
|  | 1.3.1.2.2.13.2 | **Slab, Beams & Staircase** |  | 2024-12-31 | 2025-01-07 |  |  |  |  |  |  |  |
| PG-10920 |  | Formwork | 3d | 2024-12-31 A | 2025-01-03 A | PG-10919 FF+2d | 100% | 2024-12-27 | 2024-12-31 | L&T [220000 h] | 220,000 | 11611 |
| PG-10921 |  | Reinforcement | 3d | 2025-01-02 A | 2025-01-06 A | PG-10920 FF+2d | 100% | 2024-12-30 | 2025-01-02 | L&T [520000 h] | 520,000 | 11612 |
| PG-10922 |  | Concrete | 1d | 2025-01-06 A | 2025-01-07 A | PG-10921 | 100% | 2025-01-02 | 2025-01-03 | L&T [880000 h] | 880,000 | 11613 |
|  | 1.3.1.2.2.14 | **Floor 11** |  | 2025-01-07 | 2025-01-23 |  |  |  |  |  |  |  |
|  | 1.3.1.2.2.14.1 | **Columns / shear walls** |  | 2025-01-07 | 2025-01-17 |  |  |  |  |  |  |  |
| PG-10923 |  | Reinforcement | 4d | 2025-01-07 A | 2025-01-11 A | PG-10922 | 100% | 2025-01-03 | 2025-01-08 | L&T [700000 h] | 700,000 | 11616 |
| PG-10924 |  | Formwork | 4d | 2025-01-11 A | 2025-01-17 A | PG-10923 FF+4d | 100% | 2025-01-08 | 2025-01-13 | L&T [320000 h] | 320,000 | 11617 |
|  | 1.3.1.2.2.14.2 | **Slab, Beams & Staircase** |  | 2025-01-16 | 2025-01-23 |  |  |  |  |  |  |  |
| PG-10925 |  | Formwork | 3d | 2025-01-16 A | 2025-01-20 A | PG-10924 FF+2d | 100% | 2025-01-11 | 2025-01-15 | L&T [220000 h] | 220,000 | 11619 |
| PG-10926 |  | Reinforcement | 3d | 2025-01-18 A | 2025-01-22 A | PG-10925 FF+2d | 100% | 2025-01-14 | 2025-01-17 | L&T [520000 h] | 520,000 | 11620 |
| PG-10927 |  | Concrete | 1d | 2025-01-22 A | 2025-01-23 A | PG-10926 | 100% | 2025-01-17 | 2025-01-18 | L&T [880000 h] | 880,000 | 11621 |
|  | 1.3.1.2.2.15 | **Floor 12** |  | 2025-01-23 | 2025-02-07 |  |  |  |  |  |  |  |
|  | 1.3.1.2.2.15.1 | **Columns / shear walls** |  | 2025-01-23 | 2025-02-01 |  |  |  |  |  |  |  |
| PG-10928 |  | Reinforcement | 4d | 2025-01-23 A | 2025-01-28 A | PG-10927 | 100% | 2025-01-18 | 2025-01-23 | L&T [700000 h] | 700,000 | 11624 |
| PG-10929 |  | Formwork | 4d | 2025-01-28 A | 2025-02-01 A | PG-10928 FF+4d | 100% | 2025-01-23 | 2025-01-28 | L&T [320000 h] | 320,000 | 11625 |

| ID | WBS | Activity | Duration | Start | Finish | Predecessors | Complete | Planned start | Planned finish | Resources | Cost | MSP Activity ID |
| --- | --- | --- | --- | --- | --- | --- | --- | --- | --- | --- | --- | --- |
|  | 1.3.1.2.2.15.2 | **Slab, Beams & Staircase** |  | 2025-01-31 | 2025-02-07 |  |  |  |  |  |  |  |
| PG-10930 |  | Formwork | 3d | 2025-01-31 A | 2025-02-04 A | PG-10929 FF+2d | 100% | 2025-01-27 | 2025-01-30 | L&T [220000 h] | 220,000 | 11627 |
| PG-10931 |  | Reinforcement | 3d | 2025-02-03 A | 2025-02-06 A | PG-10930 FF+2d | 100% | 2025-01-29 | 2025-02-01 | L&T [520000 h] | 520,000 | 11628 |
| PG-10932 |  | Concrete | 1d | 2025-02-06 A | 2025-02-07 A | PG-10931 | 100% | 2025-02-01 | 2025-02-03 | L&T [880000 h] | 880,000 | 11629 |
|  | 1.3.1.2.2.16 | **Floor 13** |  | 2025-02-07 | 2025-02-22 |  |  |  |  |  |  |  |
|  | 1.3.1.2.2.16.1 | **Columns / shear walls** |  | 2025-02-07 | 2025-02-17 |  |  |  |  |  |  |  |
| PG-10933 |  | Reinforcement | 4d | 2025-02-07 A | 2025-02-12 A | PG-10932 | 100% | 2025-02-03 | 2025-02-07 | L&T [700000 h] | 700,000 | 11632 |
| PG-10934 |  | Formwork | 4d | 2025-02-12 A | 2025-02-17 A | PG-10933 FF+4d | 100% | 2025-02-07 | 2025-02-12 | L&T [320000 h] | 320,000 | 11633 |
|  | 1.3.1.2.2.16.2 | **Slab, Beams & Staircase** |  | 2025-02-15 | 2025-02-22 |  |  |  |  |  |  |  |
| PG-10935 |  | Formwork | 3d | 2025-02-15 A | 2025-02-19 A | PG-10934 FF+2d | 100% | 2025-02-11 | 2025-02-14 | L&T [220000 h] | 220,000 | 11635 |
| PG-10936 |  | Reinforcement | 3d | 2025-02-18 A | 2025-02-21 A | PG-10935 FF+2d | 100% | 2025-02-13 | 2025-02-17 | L&T [520000 h] | 520,000 | 11636 |
| PG-10937 |  | Concrete | 1d | 2025-02-21 A | 2025-02-22 A | PG-10936 | 100% | 2025-02-17 | 2025-02-18 | L&T [880000 h] | 880,000 | 11637 |
|  | 1.3.1.2.2.17 | **Floor 14** |  | 2025-02-22 | 2025-03-11 |  |  |  |  |  |  |  |
|  | 1.3.1.2.2.17.1 | **Columns / shear walls** |  | 2025-02-22 | 2025-03-05 |  |  |  |  |  |  |  |
| PG-10938 |  | Reinforcement | 4d | 2025-02-22 A | 2025-02-27 A | PG-10937 | 100% | 2025-02-18 | 2025-02-22 | L&T [700000 h] | 700,000 | 11640 |
| PG-10939 |  | Formwork | 4d | 2025-02-27 A | 2025-03-05 A | PG-10938 FF+4d | 100% | 2025-02-22 | 2025-02-27 | L&T [320000 h] | 320,000 | 11641 |
|  | 1.3.1.2.2.17.2 | **Slab, Beams & Staircase** |  | 2025-03-04 | 2025-03-11 |  |  |  |  |  |  |  |
| PG-10940 |  | Formwork | 3d | 2025-03-04 A | 2025-03-07 A | PG-10939 FF+2d | 100% | 2025-02-26 | 2025-03-01 | L&T [220000 h] | 220,000 | 11643 |
| PG-10941 |  | Reinforcement | 3d | 2025-03-06 A | 2025-03-10 A | PG-10940 FF+2d | 100% | 2025-02-28 | 2025-03-04 | L&T [520000 h] | 520,000 | 11644 |
| PG-10942 |  | Concrete | 1d | 2025-03-10 A | 2025-03-11 A | PG-10941 | 100% | 2025-03-04 | 2025-03-05 | L&T [880000 h] | 880,000 | 11645 |
|  | 1.3.1.2.2.18 | **Floor 15** |  | 2025-03-11 | 2025-03-27 |  |  |  |  |  |  |  |
|  | 1.3.1.2.2.18.1 | **Columns / shear walls** |  | 2025-03-11 | 2025-03-20 |  |  |  |  |  |  |  |
| PG-10943 |  | Reinforcement | 4d | 2025-03-11 A | 2025-03-15 A | PG-10942 | 100% | 2025-03-05 | 2025-03-10 | L&T [700000 h] | 700,000 | 11648 |
| PG-10944 |  | Formwork | 4d | 2025-03-15 A | 2025-03-20 A | PG-10943 FF+4d | 100% | 2025-03-10 | 2025-03-14 | L&T [320000 h] | 320,000 | 11649 |

| ID | WBS | Activity | Duration | Start | Finish | Predecessors | Complete | Remaining | Planned start | Planned finish | Total float | Free float | Resources | Cost | MSP Activity ID |
| --- | --- | --- | --- | --- | --- | --- | --- | --- | --- | --- | --- | --- | --- | --- | --- |
|  | 1.3.1.2.2.18.2 | **Slab, Beams & Staircase** |  | 2025-03-19 | 2025-03-27 |  |  |  |  |  |  |  |  |  |  |
| PG-10945 |  | Formwork | 3d | 2025-03-19 A | 2025-03-22 A | PG-10944 FF+2d | 100% |  | 2025-03-13 | 2025-03-17 |  |  | L&T [220000 h] | 220,000 | 11651 |
| PG-10946 |  | Reinforcement | 3d | 2025-03-21 A | 2025-03-26 A | PG-10945 FF+2d | 100% |  | 2025-03-15 | 2025-03-19 |  |  | L&T [520000 h] | 520,000 | 11652 |
| PG-10947 |  | Concrete | 1d | 2025-03-26 A | 2025-03-27 A | PG-10946 | 100% |  | 2025-03-25 | 2025-03-26 |  |  | L&T [880000 h] | 880,000 | 11653 |
|  | 1.3.1.2.2.19 | **Floor 16** |  | 2025-03-27 | 2025-04-09 |  |  |  |  |  |  |  |  |  |  |
|  | 1.3.1.2.2.19.1 | **Columns / shear walls** |  | 2025-03-27 | 2025-04-03 |  |  |  |  |  |  |  |  |  |  |
| PG-10948 |  | Reinforcement | 4d | 2025-03-27 A | 2025-04-01 A | PG-10947 | 100% |  | 2025-03-26 | 2025-03-31 |  |  | L&T [700000 h] | 700,000 | 11656 |
| PG-10949 |  | Formwork | 4d | 2025-03-29 A | 2025-04-03 A | PG-10948 FF+2d | 100% |  | 2025-03-28 | 2025-04-02 |  |  | L&T [320000 h] | 320,000 | 11657 |
|  | 1.3.1.2.2.19.2 | **Slab, Beams & Staircase** |  | 2025-04-02 | 2025-04-09 |  |  |  |  |  |  |  |  |  |  |
| PG-10950 |  | Formwork | 3d | 2025-04-02 A | 2025-04-05 A | PG-10949 FF+2d | 100% |  | 2025-04-01 | 2025-04-04 |  |  | L&T [220000 h] | 220,000 | 11659 |
| PG-10951 |  | Reinforcement | 3d | 2025-04-04 A | 2025-04-08 A | PG-10950 FF+2d | 100% |  | 2025-04-03 | 2025-04-07 |  |  | L&T [520000 h] | 520,000 | 11660 |
| PG-10952 |  | Concrete | 1d | 2025-04-08 A | 2025-04-09 A | PG-10951 | 100% |  |  |  |  |  | L&T [880000 h] | 880,000 | 11661 |
|  | 1.3.1.2.2.20 | **Floor 17** |  | 2025-04-09 | 2025-04-22 |  |  |  |  |  |  |  |  |  |  |
|  | 1.3.1.2.2.20.1 | **Columns / shear walls** |  | 2025-04-09 | 2025-04-16 |  |  |  |  |  |  |  |  |  |  |
| PG-10953 |  | Reinforcement | 4d | 2025-04-09 A | 2025-04-14 A | PG-10952 | 100% |  |  |  |  |  | L&T [700000 h] | 700,000 | 11664 |
| PG-10954 |  | Formwork | 4d | 2025-04-11 A | 2025-04-16 A | PG-10953 FF+2d | 100% |  |  |  |  |  | L&T [320000 h] | 320,000 | 11665 |
|  | 1.3.1.2.2.20.2 | **Slab, Beams & Staircase** |  | 2025-04-15 | 2025-04-22 |  |  |  |  |  |  |  |  |  |  |
| PG-10955 |  | Formwork | 3d | 2025-04-15 A | 2025-04-18 A | PG-10954 FF+2d | 100% |  |  |  |  |  | L&T [220000 h] | 220,000 | 11667 |
| PG-10956 |  | Reinforcement | 3d | 2025-04-17 A | 2025-04-21 A | PG-10955 FF+2d | 100% |  |  |  |  |  | L&T [520000 h] | 520,000 | 11668 |
| PG-10957 |  | Concrete | 1d | 2025-04-21 A | 2025-04-22 A | PG-10956 | 100% |  |  |  |  |  | L&T [880000 h] | 880,000 | 11669 |
|  | 1.3.1.2.2.21 | **Floor 18** |  | 2025-04-22 | 2025-05-03 |  |  |  |  |  |  |  |  |  |  |
|  | 1.3.1.2.2.21.1 | **Columns / shear walls** |  | 2025-04-22 | 2025-04-28 |  |  |  |  |  |  |  |  |  |  |
| PG-10958 |  | Reinforcement | 4d | 2025-04-22 A | 2025-04-25 | PG-10957 | 84% | 0.65d | 2025-04-22 | 2025-04-26 | 15.18d | 0.28d | L&T [700000 h] | 700,000 | 11672 |
| PG-10959 |  | Formwork | 4d | 2025-04-24 A | 2025-04-28 | PG-10958 FF+2d | 27% | 2.93d | 2025-04-24 | 2025-04-29 | 14.9d | 0d | L&T [320000 h] | 320,000 | 11673 |

| ID | WBS | Activity | Duration | Start | Finish | Predecessors | Total float | Free float | Resources | Cost | MSP Activity ID |
| --- | --- | --- | --- | --- | --- | --- | --- | --- | --- | --- | --- |
|  | 1.3.1.2.2.21.2 | **Slab, Beams & Staircase** |  | 2025-04-26 | 2025-05-03 |  |  |  |  |  |  |
| PG-10960 |  | Formwork | 3d | 2025-04-26 | 2025-04-30 | PG-10959 FF+2d | 14.9d | 0d | L&T [220000 h] | 220,000 | 11675 |
| PG-10961 |  | Reinforcement | 3d | 2025-04-29 | 2025-05-02 | PG-10960 FF+2d | 14.9d | 0d | L&T [520000 h] | 520,000 | 11676 |
| PG-10962 |  | Concrete | 1d | 2025-05-02 | 2025-05-03 | PG-10961 | 14.9d | 0d | L&T [880000 h] | 880,000 | 11677 |
|  | 1.3.1.2.2.22 | **Floor 19** |  | 2025-05-03 | 2025-05-16 |  |  |  |  |  |  |
|  | 1.3.1.2.2.22.1 | **Columns / shear walls** |  | 2025-05-03 | 2025-05-10 |  |  |  |  |  |  |
| PG-10963 |  | Reinforcement | 4d | 2025-05-03 | 2025-05-08 | PG-10962 | 14.9d | 0d | L&T [700000 h] | 700,000 | 11680 |
| PG-10964 |  | Formwork | 4d | 2025-05-06 | 2025-05-10 | PG-10963 FF+2d | 14.9d | 0d | L&T [320000 h] | 320,000 | 11681 |
|  | 1.3.1.2.2.22.2 | **Slab, Beams & Staircase** |  | 2025-05-09 | 2025-05-16 |  |  |  |  |  |  |
| PG-10965 |  | Formwork | 3d | 2025-05-09 | 2025-05-13 | PG-10964 FF+2d | 14.9d | 0d | L&T [220000 h] | 220,000 | 11683 |
| PG-10966 |  | Reinforcement | 3d | 2025-05-12 | 2025-05-15 | PG-10965 FF+2d | 14.9d | 0d | L&T [520000 h] | 520,000 | 11684 |
| PG-10967 |  | Concrete | 1d | 2025-05-15 | 2025-05-16 | PG-10966 | 14.9d | 0d | L&T [880000 h] | 880,000 | 11685 |
|  | 1.3.1.2.2.23 | **Floor 20** |  | 2025-05-16 | 2025-05-29 |  |  |  |  |  |  |
|  | 1.3.1.2.2.23.1 | **Columns / shear walls** |  | 2025-05-16 | 2025-05-23 |  |  |  |  |  |  |
| PG-10968 |  | Reinforcement | 4d | 2025-05-16 | 2025-05-21 | PG-10967 | 14.9d | 0d | L&T [700000 h] | 700,000 | 11688 |
| PG-10969 |  | Formwork | 4d | 2025-05-19 | 2025-05-23 | PG-10968 FF+2d | 14.9d | 0d | L&T [320000 h] | 320,000 | 11689 |
|  | 1.3.1.2.2.23.2 | **Slab, Beams & Staircase** |  | 2025-05-22 | 2025-05-29 |  |  |  |  |  |  |
| PG-10970 |  | Formwork | 3d | 2025-05-22 | 2025-05-26 | PG-10969 FF+2d | 14.9d | 0d | L&T [220000 h] | 220,000 | 11691 |
| PG-10971 |  | Reinforcement | 3d | 2025-05-24 | 2025-05-28 | PG-10970 FF+2d | 14.9d | 0d | L&T [520000 h] | 520,000 | 11692 |
| PG-10972 |  | Concrete | 1d | 2025-05-28 | 2025-05-29 | PG-10971 | 14.9d | 0d | L&T [880000 h] | 880,000 | 11693 |
|  | 1.3.1.2.2.24 | **Floor 21** |  | 2025-05-29 | 2025-06-11 |  |  |  |  |  |  |
|  | 1.3.1.2.2.24.1 | **Columns / shear walls** |  | 2025-05-29 | 2025-06-05 |  |  |  |  |  |  |
| PG-10973 |  | Reinforcement | 4d | 2025-05-29 | 2025-06-03 | PG-10972 | 14.9d | 0d | L&T [700000 h] | 700,000 | 11696 |
| PG-10974 |  | Formwork | 4d | 2025-05-31 | 2025-06-05 | PG-10973 FF+2d | 14.9d | 0d | L&T [320000 h] | 320,000 | 11697 |

| ID | WBS | Activity | Duration | Start | Finish | Predecessors | Total float | Free float | Resources | Cost | MSP Activity ID |
| --- | --- | --- | --- | --- | --- | --- | --- | --- | --- | --- | --- |
|  | 1.3.1.2.2.24.2 | **Slab, Beams & Staircase** |  | 2025-06-04 | 2025-06-11 |  |  |  |  |  |  |
| PG-10975 |  | Formwork | 3d | 2025-06-04 | 2025-06-07 | PG-10974 FF+2d | 14.9d | 0d | L&T [220000 h] | 220,000 | 11699 |
| PG-10976 |  | Reinforcement | 3d | 2025-06-06 | 2025-06-10 | PG-10975 FF+2d | 14.9d | 0d | L&T [520000 h] | 520,000 | 11700 |
| PG-10977 |  | Concrete | 1d | 2025-06-10 | 2025-06-11 | PG-10976 | 14.9d | 0d | L&T [880000 h] | 880,000 | 11701 |
|  | 1.3.1.2.2.25 | **Floor 22** |  | 2025-06-11 | 2025-06-24 |  |  |  |  |  |  |
|  | 1.3.1.2.2.25.1 | **Columns / shear walls** |  | 2025-06-11 | 2025-06-18 |  |  |  |  |  |  |
| PG-10978 |  | Reinforcement | 4d | 2025-06-11 | 2025-06-16 | PG-10977 | 14.9d | 0d | L&T [700000 h] | 700,000 | 11704 |
| PG-10979 |  | Formwork | 4d | 2025-06-13 | 2025-06-18 | PG-10978 FF+2d | 14.9d | 0d | L&T [320000 h] | 320,000 | 11705 |
|  | 1.3.1.2.2.25.2 | **Slab, Beams & Staircase** |  | 2025-06-17 | 2025-06-24 |  |  |  |  |  |  |
| PG-10980 |  | Formwork | 3d | 2025-06-17 | 2025-06-20 | PG-10979 FF+2d | 14.9d | 0d | L&T [220000 h] | 220,000 | 11707 |
| PG-10981 |  | Reinforcement | 3d | 2025-06-19 | 2025-06-23 | PG-10980 FF+2d | 14.9d | 0d | L&T [520000 h] | 520,000 | 11708 |
| PG-10982 |  | Concrete | 1d | 2025-06-23 | 2025-06-24 | PG-10981 | 14.9d | 0d | L&T [880000 h] | 880,000 | 11709 |
|  | 1.3.1.2.2.26 | **Floor 23** |  | 2025-06-24 | 2025-07-07 |  |  |  |  |  |  |
|  | 1.3.1.2.2.26.1 | **Columns / shear walls** |  | 2025-06-24 | 2025-07-01 |  |  |  |  |  |  |
| PG-10983 |  | Reinforcement | 4d | 2025-06-24 | 2025-06-28 | PG-10982 | 14.9d | 0d | L&T [700000 h] | 700,000 | 11712 |
| PG-10984 |  | Formwork | 4d | 2025-06-26 | 2025-07-01 | PG-10983 FF+2d | 14.9d | 0d | L&T [320000 h] | 320,000 | 11713 |
|  | 1.3.1.2.2.26.2 | **Slab, Beams & Staircase** |  | 2025-06-30 | 2025-07-07 |  |  |  |  |  |  |
| PG-10985 |  | Formwork | 3d | 2025-06-30 | 2025-07-03 | PG-10984 FF+2d | 14.9d | 0d | L&T [220000 h] | 220,000 | 11715 |
| PG-10986 |  | Reinforcement | 3d | 2025-07-02 | 2025-07-05 | PG-10985 FF+2d | 14.9d | 0d | L&T [520000 h] | 520,000 | 11716 |
| PG-10987 |  | Concrete | 1d | 2025-07-05 | 2025-07-07 | PG-10986 | 14.9d | 0d | L&T [880000 h] | 880,000 | 11717 |
|  | 1.3.1.2.2.27 | **Floor 24** |  | 2025-07-07 | 2025-07-19 |  |  |  |  |  |  |
|  | 1.3.1.2.2.27.1 | **Columns / shear walls** |  | 2025-07-07 | 2025-07-14 |  |  |  |  |  |  |
| PG-10988 |  | Reinforcement | 4d | 2025-07-07 | 2025-07-11 | PG-10987 | 14.9d | 0d | L&T [700000 h] | 700,000 | 11720 |
| PG-10989 |  | Formwork | 4d | 2025-07-09 | 2025-07-14 | PG-10988 FF+2d | 14.9d | 0d | L&T [320000 h] | 320,000 | 11721 |

| ID | WBS | Activity | Duration | Start | Finish | Predecessors | Total float | Free float | Resources | Cost | MSP Activity ID |
| --- | --- | --- | --- | --- | --- | --- | --- | --- | --- | --- | --- |
|  | 1.3.1.2.2.27.2 | **Slab, Beams & Staircase** |  | 2025-07-12 | 2025-07-19 |  |  |  |  |  |  |
| PG-10990 |  | Formwork | 3d | 2025-07-12 | 2025-07-16 | PG-10989 FF+2d | 14.9d | 0d | L&T [220000 h] | 220,000 | 11723 |
| PG-10991 |  | Reinforcement | 3d | 2025-07-15 | 2025-07-18 | PG-10990 FF+2d | 14.9d | 0d | L&T [520000 h] | 520,000 | 11724 |
| PG-10992 |  | Concrete | 1d | 2025-07-18 | 2025-07-19 | PG-10991 | 14.9d | 0d | L&T [880000 h] | 880,000 | 11725 |
|  | 1.3.1.2.2.28 | **Floor 25** |  | 2025-07-19 | 2025-08-01 |  |  |  |  |  |  |
|  | 1.3.1.2.2.28.1 | **Columns / shear walls** |  | 2025-07-19 | 2025-07-26 |  |  |  |  |  |  |
| PG-10993 |  | Reinforcement | 4d | 2025-07-19 | 2025-07-24 | PG-10992 | 14.9d | 0d | L&T [700000 h] | 700,000 | 11728 |
| PG-10994 |  | Formwork | 4d | 2025-07-22 | 2025-07-26 | PG-10993 FF+2d | 14.9d | 0d | L&T [320000 h] | 320,000 | 11729 |
|  | 1.3.1.2.2.28.2 | **Slab, Beams & Staircase** |  | 2025-07-25 | 2025-08-01 |  |  |  |  |  |  |
| PG-10995 |  | Formwork | 3d | 2025-07-25 | 2025-07-29 | PG-10994 FF+2d | 14.9d | 0d | L&T [220000 h] | 220,000 | 11731 |
| PG-10996 |  | Reinforcement | 3d | 2025-07-28 | 2025-07-31 | PG-10995 FF+2d | 14.9d | 0d | L&T [520000 h] | 520,000 | 11732 |
| PG-10997 |  | Concrete | 1d | 2025-07-31 | 2025-08-01 | PG-10996 | 14.9d | 0d | L&T [880000 h] | 880,000 | 11733 |
|  | 1.3.1.2.2.29 | **Floor 26** |  | 2025-08-01 | 2025-08-14 |  |  |  |  |  |  |
|  | 1.3.1.2.2.29.1 | **Columns / shear walls** |  | 2025-08-01 | 2025-08-08 |  |  |  |  |  |  |
| PG-10998 |  | Reinforcement | 4d | 2025-08-01 | 2025-08-06 | PG-10997 | 14.9d | 0d | L&T [700000 h] | 700,000 | 11736 |
| PG-10999 |  | Formwork | 4d | 2025-08-04 | 2025-08-08 | PG-10998 FF+2d | 14.9d | 0d | L&T [320000 h] | 320,000 | 11737 |
|  | 1.3.1.2.2.29.2 | **Slab, Beams & Staircase** |  | 2025-08-07 | 2025-08-14 |  |  |  |  |  |  |
| PG-11000 |  | Formwork | 3d | 2025-08-07 | 2025-08-11 | PG-10999 FF+2d | 14.9d | 0d | L&T [220000 h] | 220,000 | 11739 |
| PG-11001 |  | Reinforcement | 3d | 2025-08-09 | 2025-08-13 | PG-11000 FF+2d | 14.9d | 0d | L&T [520000 h] | 520,000 | 11740 |
| PG-11002 |  | Concrete | 1d | 2025-08-13 | 2025-08-14 | PG-11001 | 14.9d | 0d | L&T [880000 h] | 880,000 | 11741 |
|  | 1.3.1.2.2.30 | **Above Terrace Floor** |  | 2025-08-14 | 2025-09-24 |  |  |  |  |  |  |
|  | 1.3.1.2.2.30.1 | **Columns / shear walls/Parapet Walls** |  | 2025-08-14 | 2025-08-29 |  |  |  |  |  |  |
| PG-11003 |  | Reinforcement | 4d | 2025-08-14 | 2025-08-20 | PG-11002, PG-10997, PG-10992, PG-10987 | 120.4d | 0d | L&T [160000 h] | 160,000 | 11744 |
| PG-11004 |  | Formwork | 5d | 2025-08-18 | 2025-08-23 | PG-11003 FF+3d | 120.4d | 0d | L&T [200000 h] | 200,000 | 11745 |
| PG-11005 |  | Concrete | 4.67d | 2025-08-23 | 2025-08-29 | PG-11004 | 120.4d | 0d | L&T [187000 h] | 187,000 | 11746 |

| ID | WBS | Activity | Duration | Start | Finish | Predecessors | Complete | Planned start | Planned finish | Total float | Free float | Resources | Cost | MSP Activity ID |
| --- | --- | --- | --- | --- | --- | --- | --- | --- | --- | --- | --- | --- | --- | --- |
|  | 1.3.1.2.2.30.2 | **Slab, Beams & Staircase Head rooms, Lift headroom** |  | 2025-08-21 | 2025-09-24 |  |  |  |  |  |  |  |  |  |
| PG-11009 |  | Terrace Waterproofing and Protective finishing. | 28.67d | 2025-08-21 | 2025-09-24 | PG-11008 FF+10d |  |  |  | 213.07d | 0d | L&T [1147000 h] | 1,147,000 | 11751 |
| PG-11006 |  | Formwork | 5d | 2025-08-29 | 2025-09-04 | PG-11005 |  |  |  | 213.07d | 0d | L&T [200000 h] | 200,000 | 11748 |
| PG-11007 |  | Reinforcement | 5d | 2025-09-04 | 2025-09-10 | PG-11006 FF+5d |  |  |  | 213.07d | 0d | L&T [200000 h] | 200,000 | 11749 |
| PG-11008 |  | Concrete | 2d | 2025-09-10 | 2025-09-12 | PG-11007 |  |  |  | 213.07d | 0d | L&T [80000 h] | 80,000 | 11750 |
|  | 1.3.1.2.3 | **MEP Internal works** |  | 2024-10-21 | 2026-02-23 |  |  |  |  |  |  |  |  |  |
|  | 1.3.1.2.3.1 | **LBF** |  | 2024-10-21 | 2025-01-04 |  |  |  |  |  |  |  |  |  |
| PG-11010 |  | Surface Drainage System (Chambers and Pipeline for Sump) | 15d | 2024-10-21 A | 2024-11-08 A | PG-10897 | 100% | 2024-10-18 | 2024-11-06 |  |  | L&T [600000 h] | 600,000 | 13654 |
| PG-11011 |  | Pump fixing for collection sump | 1.67d | 2024-12-03 A | 2024-12-04 A | PG-11261 | 100% | 2024-11-29 | 2024-11-30 |  |  | L&T [67000 h] | 67,000 | 13655 |
| PG-11012 |  | FPS Piping and Sprinkler Fixing works | 9.67d | 2024-12-21 A | 2025-01-02 A | PG-11011, PG-11264 FF+5d | 100% | 2024-12-17 | 2024-12-27 |  |  | Nexus (Fire) [309000 h] | 309,000 | 13656 |
| PG-11013 |  | Electrical Conducting and Light Fixing works | 9.5d | 2024-12-25 A | 2025-01-04 A | PG-11264 FF+7d | 100% | 2024-12-20 | 2024-12-31 |  |  | Elexir (Electrical) [304000 h] | 304,000 | 13657 |
|  | 1.3.1.2.3.2 | **UBF** |  | 2024-12-16 | 2025-01-11 |  |  |  |  |  |  |  |  |  |
| PG-11014 |  | Piping for Rainwater and Soil lines in Ceiling | 20d | 2024-12-16 A | 2025-01-08 A | PG-11264 FF+10d | 100% | 2024-12-11 | 2025-01-03 |  |  | Santech (Plumbing) [640000 h] | 640,000 | 13659 |
| PG-11015 |  | FPS Piping and Sprinkler Fixing works | 9.67d | 2024-12-27 A | 2025-01-08 A | PG-11012 FF+5d | 100% | 2024-12-23 | 2025-01-02 |  |  | Nexus (Fire) [309000 h] | 309,000 | 13660 |
| PG-11016 |  | Electrical Conducting and Light Fixing works | 8.5d | 2025-01-01 A | 2025-01-11 A | PG-11013 FF+5d | 100% | 2024-12-27 | 2025-01-06 |  |  | Elexir (Electrical) [272000 h] | 272,000 | 13661 |
|  | 1.3.1.2.3.3 | **Ground Floor** |  | 2024-10-21 | 2025-01-11 |  |  |  |  |  |  |  |  |  |
|  | 1.3.1.2.3.3.1 | **PHE Works** |  | 2024-10-21 | 2025-01-11 |  |  |  |  |  |  |  |  |  |
| PG-11017 |  | 1st Fix - Piping works | 12d | 2024-10-21 A | 2024-11-05 A | PG-10897 | 100% | 2024-10-18 | 2024-11-02 |  |  | Santech (Plumbing) [245000 h] | 245,000 | 13664 |
| PG-11018 |  | 2nd Fix - diverter fixing & Pressure testing | 10d | 2024-10-30 A | 2024-11-12 A | PG-11017 FF+6d | 100% | 2024-10-28 | 2024-11-09 |  |  | Santech (Plumbing) [124000 h] | 124,000 | 13665 |
| PG-11019 |  | Final Fix - CP & Sanitary fixtures | 9.5d | 2025-01-01 A | 2025-01-11 A | PG-11274, PG-11280 FF+6d | 100% | 2024-12-27 | 2025-01-07 |  |  | Santech (Plumbing) [330000 h] | 330,000 | 13666 |
|  | 1.3.1.2.3.3.2 | **Fire Fighting Works** |  | 2024-10-30 | 2025-01-11 |  |  |  |  |  |  |  |  |  |
| PG-11020 |  | 1st Fix - Piping and Shaft hydrant works | 11.67d | 2024-10-30 A | 2024-11-14 A | PG-11271 FF+6d | 100% | 2024-10-28 | 2024-11-11 |  |  | Nexus (Fire) [162000 h] | 162,000 | 13668 |
| PG-11021 |  | 2nd Fix - Sprinkler fixing & Pressure testing | 9.67d | 2024-12-09 A | 2024-12-20 A | PG-11279 FF+6d | 100% | 2024-12-05 | 2024-12-16 |  |  | Nexus (Fire) [145000 h] | 145,000 | 13669 |
| PG-11022 |  | Final Fix - Smoke & heat detectors, FHC , FAS Etc. | 9.5d | 2025-01-01 A | 2025-01-11 A | PG-11021, PG-11280 FF+6d | 100% | 2024-12-27 | 2025-01-07 |  |  | Nexus (Fire) [185000 h] | 185,000 | 13670 |

| ID | WBS | Activity | Duration | Start | Finish | Predecessors | Complete | Planned start | Planned finish | Resources | Cost | MSP Activity ID |
| --- | --- | --- | --- | --- | --- | --- | --- | --- | --- | --- | --- | --- |
|  | 1.3.1.2.3.3.3 | **Electrical Works** |  | 2024-10-21 | 2025-01-11 |  |  |  |  |  |  |  |
| PG-11023 |  | 1st Fix - GI wire pulling | 8d | 2024-10-21 A | 2024-10-30 A | PG-10897 | 100% | 2024-10-18 | 2024-10-28 | Elexir (Electrical) [165000 h] | 165,000 | 13672 |
| PG-11024 |  | 2nd Fix - Wiring works | 14.67d | 2024-12-02 A | 2024-12-19 A | PG-11279 FF+5d | 100% | 2024-11-28 | 2024-12-14 | Elexir (Electrical) [248000 h] | 248,000 | 13673 |
| PG-11025 |  | Final Fix - Electrical Fixtures | 5.67d | 2025-01-04 A | 2025-01-11 A | PG-11024, PG-11280 FF+6d | 100% | 2025-01-01 | 2025-01-07 | Elexir (Electrical) [205000 h] | 205,000 | 13674 |
|  | 1.3.1.2.3.4 | **Floor 1** |  | 2024-11-06 | 2025-01-29 |  |  |  |  |  |  |  |
|  | 1.3.1.2.3.4.1 | **PHE Works** |  | 2024-11-06 | 2025-01-29 |  |  |  |  |  |  |  |
| PG-11026 |  | 1st Fix - Piping works | 12d | 2024-11-06 A | 2024-11-21 A | PG-10902 | 100% | 2024-11-04 | 2024-11-18 | Santech (Plumbing) [245000 h] | 245,000 | 13677 |
| PG-11027 |  | 2nd Fix - diverter fixing & Pressure testing | 10d | 2024-11-16 A | 2024-11-28 A | PG-11026 FF+6d | 100% | 2024-11-13 | 2024-11-25 | Santech (Plumbing) [124000 h] | 124,000 | 13678 |
| PG-11028 |  | Final Fix - CP & Sanitary fixtures | 10.5d | 2025-01-16 A | 2025-01-29 A | PG-11288, PG-11294 FF+6d | 100% | 2025-01-10 | 2025-01-22 | Santech (Plumbing) [330000 h] | 330,000 | 13679 |
|  | 1.3.1.2.3.4.2 | **Fire Fighting Works** |  | 2024-11-15 | 2025-01-29 |  |  |  |  |  |  |  |
| PG-11029 |  | 1st Fix - Piping and Shaft hydrant works | 11.67d | 2024-11-15 A | 2024-11-29 A | PG-11285 FF+6d | 100% | 2024-11-13 | 2024-11-26 | Nexus (Fire) [162000 h] | 162,000 | 13681 |
| PG-11030 |  | 2nd Fix - Sprinkler fixing & Pressure testing | 9.67d | 2024-12-25 A | 2025-01-06 A | PG-11293 FF+6d | 100% | 2024-12-20 | 2024-12-31 | Nexus (Fire) [145000 h] | 145,000 | 13682 |
| PG-11031 |  | Final Fix - Smoke & heat detectors, FHC , FAS Etc. | 10.5d | 2025-01-16 A | 2025-01-29 A | PG-11030, PG-11294 FF+6d | 100% | 2025-01-10 | 2025-01-22 | Nexus (Fire) [185000 h] | 185,000 | 13683 |
|  | 1.3.1.2.3.4.3 | **Electrical Works** |  | 2024-11-06 | 2025-01-28 |  |  |  |  |  |  |  |
| PG-11032 |  | 1st Fix - GI wire pulling | 8d | 2024-11-06 A | 2024-11-15 A | PG-10902 | 100% | 2024-11-04 | 2024-11-13 | Elexir (Electrical) [165000 h] | 165,000 | 13685 |
| PG-11033 |  | 2nd Fix - Wiring works | 14.67d | 2024-12-18 A | 2025-01-04 A | PG-11293 FF+5d | 100% | 2024-12-13 | 2024-12-30 | Elexir (Electrical) [248000 h] | 248,000 | 13686 |
| PG-11034 |  | Final Fix - Electrical Fixtures | 5.5d | 2025-01-22 A | 2025-01-28 A | PG-11033, PG-11294 FF+6d | 100% | 2025-01-16 | 2025-01-22 | Elexir (Electrical) [205000 h] | 205,000 | 13687 |
|  | 1.3.1.2.3.5 | **Floor 2** |  | 2024-11-22 | 2025-02-12 |  |  |  |  |  |  |  |
|  | 1.3.1.2.3.5.1 | **PHE Works** |  | 2024-11-22 | 2025-02-11 |  |  |  |  |  |  |  |
| PG-11035 |  | 1st Fix - Piping works | 12d | 2024-11-22 A | 2024-12-06 A | PG-10907 | 100% | 2024-11-19 | 2024-12-03 | Santech (Plumbing) [245000 h] | 245,000 | 13690 |
| PG-11036 |  | 2nd Fix - diverter fixing & Pressure testing | 10d | 2024-12-02 A | 2024-12-13 A | PG-11035 FF+6d | 100% | 2024-11-28 | 2024-12-10 | Santech (Plumbing) [124000 h] | 124,000 | 13691 |
| PG-11037 |  | Final Fix - CP & Sanitary fixtures | 9.5d | 2025-01-31 A | 2025-02-11 A | PG-11302, PG-11308 FF+6d | 100% | 2025-01-27 | 2025-02-06 | Santech (Plumbing) [330000 h] | 330,000 | 13692 |
|  | 1.3.1.2.3.5.2 | **Fire Fighting Works** |  | 2024-12-02 | 2025-02-12 |  |  |  |  |  |  |  |
| PG-11038 |  | 1st Fix - Piping and Shaft hydrant works | 11.67d | 2024-12-02 A | 2024-12-16 A | PG-11299 FF+6d | 100% | 2024-11-28 | 2024-12-11 | Nexus (Fire) [162000 h] | 162,000 | 13694 |
| PG-11039 |  | 2nd Fix - Sprinkler fixing & Pressure testing | 9.67d | 2025-01-09 A | 2025-01-20 A | PG-11307 FF+6d | 100% | 2025-01-04 | 2025-01-15 | Nexus (Fire) [145000 h] | 145,000 | 13695 |
| PG-11040 |  | Final Fix - Smoke & heat detectors, FHC , FAS Etc. | 9.5d | 2025-01-31 A | 2025-02-12 A | PG-11039, PG-11308 FF+6d | 100% | 2025-01-27 | 2025-02-06 | Nexus (Fire) [185000 h] | 185,000 | 13696 |

| ID | WBS | Activity | Duration | Start | Finish | Predecessors | Complete | Planned start | Planned finish | Resources | Cost | MSP Activity ID |
| --- | --- | --- | --- | --- | --- | --- | --- | --- | --- | --- | --- | --- |
|  | 1.3.1.2.3.5.3 | **Electrical Works** |  | 2024-11-22 | 2025-02-12 |  |  |  |  |  |  |  |
| PG-11041 |  | 1st Fix - GI wire pulling | 8d | 2024-11-22 A | 2024-12-02 A | PG-10907 | 100% | 2024-11-19 | 2024-11-28 | Elexir (Electrical) [165000 h] | 165,000 | 13698 |
| PG-11042 |  | 2nd Fix - Wiring works | 14.67d | 2025-01-02 A | 2025-01-20 A | PG-11307 FF+5d | 100% | 2024-12-28 | 2025-01-14 | Elexir (Electrical) [248000 h] | 248,000 | 13699 |
| PG-11043 |  | Final Fix - Electrical Fixtures | 5.5d | 2025-02-05 A | 2025-02-12 A | PG-11042, PG-11308 FF+6d | 100% | 2025-01-31 | 2025-02-06 | Elexir (Electrical) [205000 h] | 205,000 | 13700 |
|  | 1.3.1.2.3.6 | **Floor 3** |  | 2024-12-07 | 2025-03-01 |  |  |  |  |  |  |  |
|  | 1.3.1.2.3.6.1 | **PHE Works** |  | 2024-12-07 | 2025-02-28 |  |  |  |  |  |  |  |
| PG-11044 |  | 1st Fix - Piping works | 12d | 2024-12-07 A | 2024-12-21 A | PG-10912 | 100% | 2024-12-04 | 2024-12-18 | Santech (Plumbing) [245000 h] | 245,000 | 13703 |
| PG-11045 |  | 2nd Fix - diverter fixing & Pressure testing | 10d | 2024-12-17 A | 2024-12-30 A | PG-11044 FF+6d | 100% | 2024-12-13 | 2024-12-25 | Santech (Plumbing) [124000 h] | 124,000 | 13704 |
| PG-11046 |  | Final Fix - CP & Sanitary fixtures | 11.5d | 2025-02-15 A | 2025-02-28 A | PG-11316, PG-11322 FF+6d | 100% | 2025-02-08 | 2025-02-21 | Santech (Plumbing) [330000 h] | 330,000 | 13705 |
|  | 1.3.1.2.3.6.2 | **Fire Fighting Works** |  | 2024-12-17 | 2025-03-01 |  |  |  |  |  |  |  |
| PG-11047 |  | 1st Fix - Piping and Shaft hydrant works | 11.67d | 2024-12-17 A | 2024-12-31 A | PG-11313 FF+6d | 100% | 2024-12-13 | 2024-12-26 | Nexus (Fire) [162000 h] | 162,000 | 13707 |
| PG-11048 |  | 2nd Fix - Sprinkler fixing & Pressure testing | 9.67d | 2025-01-24 A | 2025-02-05 A | PG-11321 FF+6d | 100% | 2025-01-20 | 2025-01-30 | Nexus (Fire) [145000 h] | 145,000 | 13708 |
| PG-11049 |  | Final Fix - Smoke & heat detectors, FHC , FAS Etc. | 11.5d | 2025-02-15 A | 2025-03-01 A | PG-11048, PG-11322 FF+6d | 100% | 2025-02-08 | 2025-02-21 | Nexus (Fire) [185000 h] | 185,000 | 13709 |
|  | 1.3.1.2.3.6.3 | **Electrical Works** |  | 2024-12-07 | 2025-03-01 |  |  |  |  |  |  |  |
| PG-11050 |  | 1st Fix - GI wire pulling | 8d | 2024-12-07 A | 2024-12-17 A | PG-10912 | 100% | 2024-12-04 | 2024-12-13 | Elexir (Electrical) [165000 h] | 165,000 | 13711 |
| PG-11051 |  | 2nd Fix - Wiring works | 14.67d | 2025-01-17 A | 2025-02-03 A | PG-11321 FF+5d | 100% | 2025-01-13 | 2025-01-29 | Elexir (Electrical) [248000 h] | 248,000 | 13712 |
| PG-11052 |  | Final Fix - Electrical Fixtures | 6.5d | 2025-02-21 A | 2025-03-01 A | PG-11051, PG-11322 FF+6d | 100% | 2025-02-14 | 2025-02-21 | Elexir (Electrical) [205000 h] | 205,000 | 13713 |
|  | 1.3.1.2.3.7 | **Floor 4** |  | 2024-12-23 | 2025-03-19 |  |  |  |  |  |  |  |
|  | 1.3.1.2.3.7.1 | **PHE Works** |  | 2024-12-23 | 2025-03-19 |  |  |  |  |  |  |  |
| PG-11053 |  | 1st Fix - Piping works | 12d | 2024-12-23 A | 2025-01-06 A | PG-10917 | 100% | 2024-12-19 | 2025-01-02 | Santech (Plumbing) [245000 h] | 245,000 | 13716 |
| PG-11054 |  | 2nd Fix - diverter fixing & Pressure testing | 10d | 2025-01-01 A | 2025-01-13 A | PG-11053 FF+6d | 100% | 2024-12-28 | 2025-01-09 | Santech (Plumbing) [124000 h] | 124,000 | 13717 |
| PG-11055 |  | Final Fix - CP & Sanitary fixtures | 10.5d | 2025-03-06 A | 2025-03-19 A | PG-11330, PG-11336 FF+6d | 100% | 2025-02-26 | 2025-03-10 | Santech (Plumbing) [330000 h] | 330,000 | 13718 |
|  | 1.3.1.2.3.7.2 | **Fire Fighting Works** |  | 2025-01-02 | 2025-03-19 |  |  |  |  |  |  |  |
| PG-11056 |  | 1st Fix - Piping and Shaft hydrant works | 11.67d | 2025-01-02 A | 2025-01-16 A | PG-11327 FF+6d | 100% | 2024-12-28 | 2025-01-10 | Nexus (Fire) [162000 h] | 162,000 | 13720 |
| PG-11057 |  | 2nd Fix - Sprinkler fixing & Pressure testing | 9.67d | 2025-02-08 A | 2025-02-21 A | PG-11335 FF+6d | 100% | 2025-02-04 | 2025-02-14 | Nexus (Fire) [145000 h] | 145,000 | 13721 |
| PG-11058 |  | Final Fix - Smoke & heat detectors, FHC , FAS Etc. | 9.5d | 2025-03-07 A | 2025-03-19 A | PG-11057, PG-11336 FF+6d | 100% | 2025-02-27 | 2025-03-10 | Nexus (Fire) [185000 h] | 185,000 | 13722 |

| ID | WBS | Activity | Duration | Start | Finish | Predecessors | Complete | Planned start | Planned finish | Resources | Cost | MSP Activity ID |
| --- | --- | --- | --- | --- | --- | --- | --- | --- | --- | --- | --- | --- |
|  | 1.3.1.2.3.7.3 | **Electrical Works** |  | 2024-12-23 | 2025-03-19 |  |  |  |  |  |  |  |
| PG-11059 |  | 1st Fix - GI wire pulling | 8d | 2024-12-23 A | 2025-01-01 A | PG-10917 | 100% | 2024-12-19 | 2024-12-28 | Elexir (Electrical) [165000 h] | 165,000 | 13724 |
| PG-11060 |  | 2nd Fix - Wiring works | 14.67d | 2025-02-01 A | 2025-02-20 A | PG-11335 FF+5d | 100% | 2025-01-28 | 2025-02-13 | Elexir (Electrical) [248000 h] | 248,000 | 13725 |
| PG-11061 |  | Final Fix - Electrical Fixtures | 5.5d | 2025-03-12 A | 2025-03-19 A | PG-11060, PG-11336 FF+6d | 100% | 2025-03-04 | 2025-03-10 | Elexir (Electrical) [205000 h] | 205,000 | 13726 |
|  | 1.3.1.2.3.8 | **Floor 5** |  | 2025-01-07 | 2025-03-31 |  |  |  |  |  |  |  |
|  | 1.3.1.2.3.8.1 | **PHE Works** |  | 2025-01-07 | 2025-03-31 |  |  |  |  |  |  |  |
| PG-11062 |  | 1st Fix - Piping works | 12d | 2025-01-07 A | 2025-01-22 A | PG-10922 | 100% | 2025-01-03 | 2025-01-17 | Santech (Plumbing) [245000 h] | 245,000 | 13729 |
| PG-11063 |  | 2nd Fix - diverter fixing & Pressure testing | 10d | 2025-01-17 A | 2025-01-29 A | PG-11062 FF+6d | 100% | 2025-01-13 | 2025-01-24 | Santech (Plumbing) [124000 h] | 124,000 | 13730 |
| PG-11064 |  | Final Fix - CP & Sanitary fixtures | 10.5d | 2025-03-18 A | 2025-03-31 A | PG-11344, PG-11350 FF+6d | 100% | 2025-03-12 | 2025-03-24 | Santech (Plumbing) [330000 h] | 330,000 | 13731 |
|  | 1.3.1.2.3.8.2 | **Fire Fighting Works** |  | 2025-01-16 | 2025-03-31 |  |  |  |  |  |  |  |
| PG-11065 |  | 1st Fix - Piping and Shaft hydrant works | 11.67d | 2025-01-16 A | 2025-01-30 A | PG-11341 FF+6d | 100% | 2025-01-13 | 2025-01-25 | Nexus (Fire) [162000 h] | 162,000 | 13733 |
| PG-11066 |  | 2nd Fix - Sprinkler fixing & Pressure testing | 9.67d | 2025-02-25 A | 2025-03-08 A | PG-11349 FF+6d | 100% | 2025-02-19 | 2025-03-01 | Nexus (Fire) [145000 h] | 145,000 | 13734 |
| PG-11067 |  | Final Fix - Smoke & heat detectors, FHC , FAS Etc. | 10.5d | 2025-03-18 A | 2025-03-31 A | PG-11066, PG-11350 FF+6d | 100% | 2025-03-12 | 2025-03-24 | Nexus (Fire) [185000 h] | 185,000 | 13735 |
|  | 1.3.1.2.3.8.3 | **Electrical Works** |  | 2025-01-07 | 2025-03-31 |  |  |  |  |  |  |  |
| PG-11068 |  | 1st Fix - GI wire pulling | 8d | 2025-01-07 A | 2025-01-17 A | PG-10922 | 100% | 2025-01-03 | 2025-01-13 | Elexir (Electrical) [165000 h] | 165,000 | 13737 |
| PG-11069 |  | 2nd Fix - Wiring works | 14.67d | 2025-02-18 A | 2025-03-08 A | PG-11349 FF+5d | 100% | 2025-02-12 | 2025-02-28 | Elexir (Electrical) [248000 h] | 248,000 | 13738 |
| PG-11070 |  | Final Fix - Electrical Fixtures | 5.5d | 2025-03-24 A | 2025-03-31 A | PG-11069, PG-11350 FF+6d | 100% | 2025-03-22 | 2025-03-28 | Elexir (Electrical) [205000 h] | 205,000 | 13739 |
|  | 1.3.1.2.3.9 | **Floor 6** |  | 2025-01-23 | 2025-04-17 |  |  |  |  |  |  |  |
|  | 1.3.1.2.3.9.1 | **PHE Works** |  | 2025-01-23 | 2025-04-17 |  |  |  |  |  |  |  |
| PG-11071 |  | 1st Fix - Piping works | 12d | 2025-01-23 A | 2025-02-06 A | PG-10927 | 100% | 2025-01-18 | 2025-02-01 | Santech (Plumbing) [245000 h] | 245,000 | 13742 |
| PG-11072 |  | 2nd Fix - diverter fixing & Pressure testing | 10d | 2025-02-01 A | 2025-02-14 A | PG-11071 FF+6d | 100% | 2025-01-28 | 2025-02-08 | Santech (Plumbing) [124000 h] | 124,000 | 13743 |
| PG-11073 |  | Final Fix - CP & Sanitary fixtures | 11.5d | 2025-04-03 A | 2025-04-17 A | PG-11358, PG-11364 FF+6d | 100% | 2025-04-02 | 2025-04-16 | Santech (Plumbing) [330000 h] | 330,000 | 13744 |
|  | 1.3.1.2.3.9.2 | **Fire Fighting Works** |  | 2025-02-01 | 2025-04-17 |  |  |  |  |  |  |  |
| PG-11074 |  | 1st Fix - Piping and Shaft hydrant works | 12d | 2025-02-01 A | 2025-02-17 A | PG-11355 FF+6d | 100% | 2025-01-28 | 2025-02-11 | Nexus (Fire) [162000 h] | 162,000 | 13746 |
| PG-11075 |  | 2nd Fix - Sprinkler fixing & Pressure testing | 9.67d | 2025-03-13 A | 2025-03-25 A | PG-11363 FF+6d | 100% | 2025-03-06 | 2025-03-17 | Nexus (Fire) [145000 h] | 145,000 | 13747 |
| PG-11076 |  | Final Fix - Smoke & heat detectors, FHC , FAS Etc. | 10.5d | 2025-04-04 A | 2025-04-17 A | PG-11075, PG-11364 FF+6d | 100% | 2025-04-03 | 2025-04-16 | Nexus (Fire) [185000 h] | 185,000 | 13748 |

| ID | WBS | Activity | Duration | Start | Finish | Predecessors | Complete | Remaining | Planned start | Planned finish | Total float | Free float | Resources | Cost | MSP Activity ID |
| --- | --- | --- | --- | --- | --- | --- | --- | --- | --- | --- | --- | --- | --- | --- | --- |
|  | 1.3.1.2.3.9.3 | **Electrical Works** |  | 2025-01-23 | 2025-04-17 |  |  |  |  |  |  |  |  |  |  |
| PG-11077 |  | 1st Fix - GI wire pulling | 7.67d | 2025-01-23 A | 2025-01-31 A | PG-10927 | 100% |  | 2025-01-18 | 2025-01-27 |  |  | Elexir (Electrical) [165000 h] | 165,000 | 13750 |
| PG-11078 |  | 2nd Fix - Wiring works | 12.67d | 2025-03-08 A | 2025-03-24 A | PG-11363 FF+5d | 100% |  | 2025-03-01 | 2025-03-17 |  |  | Elexir (Electrical) [248000 h] | 248,000 | 13751 |
| PG-11079 |  | Final Fix - Electrical Fixtures | 5.5d | 2025-04-10 A | 2025-04-17 A | PG-11078, PG-11364 FF+6d | 100% |  | 2025-04-09 | 2025-04-16 |  |  | Elexir (Electrical) [205000 h] | 205,000 | 13752 |
|  | 1.3.1.2.3.10 | **Floor 7** |  | 2025-02-07 | 2025-05-01 |  |  |  |  |  |  |  |  |  |  |
|  | 1.3.1.2.3.10.1 | **PHE Works** |  | 2025-02-07 | 2025-05-01 |  |  |  |  |  |  |  |  |  |  |
| PG-11080 |  | 1st Fix - Piping works | 12d | 2025-02-07 A | 2025-02-21 A | PG-10932 | 100% |  | 2025-02-03 | 2025-02-17 |  |  | Santech (Plumbing) [245000 h] | 245,000 | 13755 |
| PG-11081 |  | 2nd Fix - diverter fixing & Pressure testing | 10d | 2025-02-17 A | 2025-02-28 A | PG-11080 FF+6d | 100% |  | 2025-02-12 | 2025-02-24 |  |  | Santech (Plumbing) [124000 h] | 124,000 | 13756 |
| PG-11082 |  | Final Fix - CP & Sanitary fixtures | 9.67d | 2025-04-19 A | 2025-05-01 | PG-11372, PG-11378 FF+6d | 56% | 4.25d | 2025-04-19 | 2025-04-30 | 405.33d | 0d | Santech (Plumbing) [330000 h] | 330,000 | 13757 |
|  | 1.3.1.2.3.10.2 | **Fire Fighting Works** |  | 2025-02-18 | 2025-05-01 |  |  |  |  |  |  |  |  |  |  |
| PG-11083 |  | 1st Fix - Piping and Shaft hydrant works | 11.83d | 2025-02-18 A | 2025-03-04 A | PG-11369 FF+6d | 100% |  | 2025-02-12 | 2025-02-25 |  |  | Nexus (Fire) [162000 h] | 162,000 | 13759 |
| PG-11084 |  | 2nd Fix - Sprinkler fixing & Pressure testing | 9.67d | 2025-03-27 A | 2025-04-09 A | PG-11377 FF+6d | 100% |  | 2025-03-27 | 2025-04-07 |  |  | Nexus (Fire) [145000 h] | 145,000 | 13760 |
| PG-11085 |  | Final Fix - Smoke & heat detectors, FHC , FAS Etc. | 9.67d | 2025-04-19 A | 2025-05-01 | PG-11084, PG-11378 FF+6d | 52% | 4.63d | 2025-04-19 | 2025-04-30 | 405.33d | 0d | Nexus (Fire) [185000 h] | 185,000 | 13761 |
|  | 1.3.1.2.3.10.3 | **Electrical Works** |  | 2025-02-07 | 2025-05-01 |  |  |  |  |  |  |  |  |  |  |
| PG-11086 |  | 1st Fix - GI wire pulling | 7.83d | 2025-02-07 A | 2025-02-17 A | PG-10932 | 100% |  | 2025-02-03 | 2025-02-12 |  |  | Elexir (Electrical) [165000 h] | 165,000 | 13763 |
| PG-11087 |  | 2nd Fix - Wiring works | 14.5d | 2025-03-21 A | 2025-04-08 A | PG-11377 FF+5d | 100% |  | 2025-03-15 | 2025-04-01 |  |  | Elexir (Electrical) [248000 h] | 248,000 | 13764 |
| PG-11088 |  | Final Fix - Electrical Fixtures | 5.67d | 2025-04-24 A | 2025-05-01 | PG-11087, PG-11378 FF+6d | 17% | 4.72d | 2025-04-24 | 2025-04-30 | 405.33d | 0d | Elexir (Electrical) [205000 h] | 205,000 | 13765 |
|  | 1.3.1.2.3.11 | **Floor 8** |  | 2025-02-22 | 2025-05-20 |  |  |  |  |  |  |  |  |  |  |
|  | 1.3.1.2.3.11.1 | **PHE Works** |  | 2025-02-22 | 2025-05-20 |  |  |  |  |  |  |  |  |  |  |
| PG-11089 |  | 1st Fix - Piping works | 12d | 2025-02-22 A | 2025-03-10 A | PG-10937 | 100% |  | 2025-02-18 | 2025-03-04 |  |  | Santech (Plumbing) [245000 h] | 245,000 | 13768 |
| PG-11090 |  | 2nd Fix - diverter fixing & Pressure testing | 10d | 2025-03-05 A | 2025-03-18 A | PG-11089 FF+6d | 100% |  | 2025-02-27 | 2025-03-11 |  |  | Santech (Plumbing) [124000 h] | 124,000 | 13769 |
| PG-11091 |  | Final Fix - CP & Sanitary fixtures | 10.5d | 2025-05-08 | 2025-05-20 | PG-11386, PG-11392 FF+6d |  |  |  |  | 389.34d | 0d | Santech (Plumbing) [330000 h] | 330,000 | 13770 |
|  | 1.3.1.2.3.11.2 | **Fire Fighting Works** |  | 2025-03-04 | 2025-05-20 |  |  |  |  |  |  |  |  |  |  |
| PG-11092 |  | 1st Fix - Piping and Shaft hydrant works | 12d | 2025-03-04 A | 2025-03-19 A | PG-11383 FF+6d | 100% |  | 2025-02-27 | 2025-03-13 |  |  | Nexus (Fire) [162000 h] | 162,000 | 13772 |
| PG-11093 |  | 2nd Fix - Sprinkler fixing & Pressure testing | 9.67d | 2025-04-14 A | 2025-04-25 A | PG-11391 FF+6d | 100% |  | 2025-04-12 | 2025-04-23 |  |  | Nexus (Fire) [145000 h] | 145,000 | 13773 |
| PG-11094 |  | Final Fix - Smoke & heat detectors, FHC , FAS Etc. | 9.5d | 2025-05-09 | 2025-05-20 | PG-11093, PG-11392 FF+6d |  |  |  |  | 389.34d | 0d | Nexus (Fire) [185000 h] | 185,000 | 13774 |

| ID | WBS | Activity | Duration | Start | Finish | Predecessors | Complete | Remaining | Planned start | Planned finish | Total float | Free float | Resources | Cost | MSP Activity ID |
| --- | --- | --- | --- | --- | --- | --- | --- | --- | --- | --- | --- | --- | --- | --- | --- |
|  | 1.3.1.2.3.11.3 | **Electrical Works** |  | 2025-02-22 | 2025-05-20 |  |  |  |  |  |  |  |  |  |  |
| PG-11095 |  | 1st Fix - GI wire pulling | 7.67d | 2025-02-22 A | 2025-03-04 A | PG-10937 | 100% |  | 2025-02-18 | 2025-02-26 |  |  | Elexir (Electrical) [165000 h] | 165,000 | 13776 |
| PG-11096 |  | 2nd Fix - Wiring works | 12.67d | 2025-04-09 A | 2025-04-24 A | PG-11391 FF+5d | 100% |  | 2025-04-08 | 2025-04-22 |  |  | Elexir (Electrical) [248000 h] | 248,000 | 13777 |
| PG-11097 |  | Final Fix - Electrical Fixtures | 5.5d | 2025-05-14 | 2025-05-20 | PG-11096, PG-11392 FF+6d |  |  |  |  | 389.34d | 0d | Elexir (Electrical) [205000 h] | 205,000 | 13778 |
|  | 1.3.1.2.3.12 | **Floor 9** |  | 2025-03-11 | 2025-05-29 |  |  |  |  |  |  |  |  |  |  |
|  | 1.3.1.2.3.12.1 | **PHE Works** |  | 2025-03-11 | 2025-05-29 |  |  |  |  |  |  |  |  |  |  |
| PG-11098 |  | 1st Fix - Piping works | 12d | 2025-03-11 A | 2025-03-24 A | PG-10942 | 100% |  | 2025-03-05 | 2025-03-19 |  |  | Santech (Plumbing) [245000 h] | 245,000 | 13781 |
| PG-11099 |  | 2nd Fix - diverter fixing & Pressure testing | 10d | 2025-03-19 A | 2025-03-31 A | PG-11098 FF+6d | 100% |  | 2025-03-14 | 2025-03-26 |  |  | Santech (Plumbing) [124000 h] | 124,000 | 13782 |
| PG-11100 |  | Final Fix - CP & Sanitary fixtures | 9.33d | 2025-05-19 | 2025-05-29 | PG-11400, PG-11406 FF+6d |  |  |  |  | 381.35d | 0d | Santech (Plumbing) [330000 h] | 330,000 | 13783 |
|  | 1.3.1.2.3.12.2 | **Fire Fighting Works** |  | 2025-03-21 | 2025-05-29 |  |  |  |  |  |  |  |  |  |  |
| PG-11101 |  | 1st Fix - Piping and Shaft hydrant works | 12d | 2025-03-21 A | 2025-04-04 A | PG-11397 FF+6d | 100% |  | 2025-03-15 | 2025-03-29 |  |  | Nexus (Fire) [162000 h] | 162,000 | 13785 |
| PG-11102 |  | 2nd Fix - Sprinkler fixing & Pressure testing | 9.67d | 2025-04-25 | 2025-05-07 | PG-11405 FF+6d |  |  |  |  | 390.52d | 9.17d | Nexus (Fire) [145000 h] | 145,000 | 13786 |
| PG-11103 |  | Final Fix - Smoke & heat detectors, FHC , FAS Etc. | 9.33d | 2025-05-19 | 2025-05-29 | PG-11102, PG-11406 FF+6d |  |  |  |  | 381.35d | 0d | Nexus (Fire) [185000 h] | 185,000 | 13787 |
|  | 1.3.1.2.3.12.3 | **Electrical Works** |  | 2025-03-11 | 2025-05-29 |  |  |  |  |  |  |  |  |  |  |
| PG-11104 |  | 1st Fix - GI wire pulling | 8.67d | 2025-03-11 A | 2025-03-21 A | PG-10942 | 100% |  | 2025-03-05 | 2025-03-14 |  |  | Elexir (Electrical) [165000 h] | 165,000 | 13789 |
| PG-11105 |  | 2nd Fix - Wiring works | 14.5d | 2025-04-21 A | 2025-05-08 | PG-11405 FF+5d | 22% | 11.31d | 2025-04-19 | 2025-05-06 | 394.02d | 12.67d | Elexir (Electrical) [248000 h] | 248,000 | 13790 |
| PG-11106 |  | Final Fix - Electrical Fixtures | 5.5d | 2025-05-22 | 2025-05-29 | PG-11105, PG-11406 FF+6d |  |  |  |  | 381.35d | 0d | Elexir (Electrical) [205000 h] | 205,000 | 13791 |
|  | 1.3.1.2.3.13 | **Floor 10** |  | 2025-03-27 | 2025-06-13 |  |  |  |  |  |  |  |  |  |  |
|  | 1.3.1.2.3.13.1 | **PHE Works** |  | 2025-03-27 | 2025-06-13 |  |  |  |  |  |  |  |  |  |  |
| PG-11107 |  | 1st Fix - Piping works | 12d | 2025-03-27 A | 2025-04-10 A | PG-10947 | 100% |  | 2025-03-26 | 2025-04-09 |  |  | Santech (Plumbing) [245000 h] | 245,000 | 13794 |
| PG-11108 |  | 2nd Fix - diverter fixing & Pressure testing | 10d | 2025-04-05 A | 2025-04-17 A | PG-11107 FF+6d | 100% |  | 2025-04-04 | 2025-04-16 |  |  | Santech (Plumbing) [124000 h] | 124,000 | 13795 |
| PG-11109 |  | Final Fix - CP & Sanitary fixtures | 10.5d | 2025-06-02 | 2025-06-13 | PG-11414, PG-11420 FF+6d |  |  |  |  | 367.93d | 0d | Santech (Plumbing) [330000 h] | 330,000 | 13796 |
|  | 1.3.1.2.3.13.2 | **Fire Fighting Works** |  | 2025-04-05 | 2025-06-13 |  |  |  |  |  |  |  |  |  |  |
| PG-11110 |  | 1st Fix - Piping and Shaft hydrant works | 12d | 2025-04-05 A | 2025-04-19 A | PG-11411 FF+6d | 100% |  | 2025-04-04 | 2025-04-18 |  |  | Nexus (Fire) [162000 h] | 162,000 | 13798 |
| PG-11111 |  | 2nd Fix - Sprinkler fixing & Pressure testing | 9.83d | 2025-05-12 | 2025-05-23 | PG-11419 FF+6d |  |  |  |  | 375.76d | 7.83d | Nexus (Fire) [145000 h] | 145,000 | 13799 |
| PG-11112 |  | Final Fix - Smoke & heat detectors, FHC , FAS Etc. | 10.5d | 2025-06-02 | 2025-06-13 | PG-11111, PG-11420 FF+6d |  |  |  |  | 367.93d | 0d | Nexus (Fire) [185000 h] | 185,000 | 13800 |

| ID | WBS | Activity | Duration | Start | Finish | Predecessors | Complete | Remaining | Planned start | Planned finish | Total float | Free float | Resources | Cost | MSP Activity ID |
| --- | --- | --- | --- | --- | --- | --- | --- | --- | --- | --- | --- | --- | --- | --- | --- |
|  | 1.3.1.2.3.13.3 | **Electrical Works** |  | 2025-03-27 | 2025-06-13 |  |  |  |  |  |  |  |  |  |  |
| PG-11113 |  | 1st Fix - GI wire pulling | 7.67d | 2025-03-27 A | 2025-04-05 A | PG-10947 | 100% |  | 2025-03-26 | 2025-04-04 |  |  | Elexir (Electrical) [165000 h] | 165,000 | 13802 |
| PG-11114 |  | 2nd Fix - Wiring works | 12.67d | 2025-05-07 | 2025-05-22 | PG-11419 FF+5d |  |  |  |  | 381.6d | 13.67d | Elexir (Electrical) [248000 h] | 248,000 | 13803 |
| PG-11115 |  | Final Fix - Electrical Fixtures | 5.67d | 2025-06-07 | 2025-06-13 | PG-11114, PG-11420 FF+6d |  |  |  |  | 367.93d | 0d | Elexir (Electrical) [205000 h] | 205,000 | 13804 |
|  | 1.3.1.2.3.14 | **Floor 11** |  | 2025-04-09 | 2025-06-28 |  |  |  |  |  |  |  |  |  |  |
|  | 1.3.1.2.3.14.1 | **PHE Works** |  | 2025-04-09 | 2025-06-28 |  |  |  |  |  |  |  |  |  |  |
| PG-11116 |  | 1st Fix - Piping works | 12d | 2025-04-09 A | 2025-04-23 A | PG-10952 | 100% |  |  |  |  |  | Santech (Plumbing) [245000 h] | 245,000 | 13807 |
| PG-11117 |  | 2nd Fix - diverter fixing & Pressure testing | 10d | 2025-04-18 A | 2025-04-30 | PG-11116 FF+6d | 63% | 3.7d | 2025-04-17 | 2025-04-29 | 355.75d | 0d | Santech (Plumbing) [124000 h] | 124,000 | 13808 |
| PG-11118 |  | Final Fix - CP & Sanitary fixtures | 10.5d | 2025-06-16 | 2025-06-28 | PG-11428, PG-11434 FF+6d |  |  |  |  | 355.75d | 0d | Santech (Plumbing) [330000 h] | 330,000 | 13809 |
|  | 1.3.1.2.3.14.2 | **Fire Fighting Works** |  | 2025-04-18 | 2025-06-28 |  |  |  |  |  |  |  |  |  |  |
| PG-11119 |  | 1st Fix - Piping and Shaft hydrant works | 11.83d | 2025-04-18 A | 2025-05-01 | PG-11425 FF+6d | 53% | 5.58d | 2025-04-17 | 2025-05-01 | 403.83d | 0d | Nexus (Fire) [162000 h] | 162,000 | 13811 |
| PG-11120 |  | 2nd Fix - Sprinkler fixing & Pressure testing | 10d | 2025-05-26 | 2025-06-06 | PG-11433 FF+6d |  |  |  |  | 363.58d | 7.83d | Nexus (Fire) [145000 h] | 145,000 | 13812 |
| PG-11121 |  | Final Fix - Smoke & heat detectors, FHC , FAS Etc. | 10.5d | 2025-06-16 | 2025-06-28 | PG-11120, PG-11434 FF+6d |  |  |  |  | 355.75d | 0d | Nexus (Fire) [185000 h] | 185,000 | 13813 |
|  | 1.3.1.2.3.14.3 | **Electrical Works** |  | 2025-04-09 | 2025-06-28 |  |  |  |  |  |  |  |  |  |  |
| PG-11122 |  | 1st Fix - GI wire pulling | 7.67d | 2025-04-09 A | 2025-04-18 A | PG-10952 | 100% |  |  |  |  |  | Elexir (Electrical) [165000 h] | 165,000 | 13815 |
| PG-11123 |  | 2nd Fix - Wiring works | 12.67d | 2025-05-22 | 2025-06-05 | PG-11433 FF+5d |  |  |  |  | 369.42d | 13.67d | Elexir (Electrical) [248000 h] | 248,000 | 13816 |
| PG-11124 |  | Final Fix - Electrical Fixtures | 5.67d | 2025-06-21 | 2025-06-28 | PG-11123, PG-11434 FF+6d |  |  |  |  | 355.75d | 0d | Elexir (Electrical) [205000 h] | 205,000 | 13817 |
|  | 1.3.1.2.3.15 | **Floor 12** |  | 2025-04-22 | 2025-07-10 |  |  |  |  |  |  |  |  |  |  |
|  | 1.3.1.2.3.15.1 | **PHE Works** |  | 2025-04-22 | 2025-07-10 |  |  |  |  |  |  |  |  |  |  |
| PG-11125 |  | 1st Fix - Piping works | 12d | 2025-04-22 A | 2025-05-06 | PG-10957 | 23% | 9.23d |  |  | 345.27d | 0d | Santech (Plumbing) [245000 h] | 245,000 | 13820 |
| PG-11126 |  | 2nd Fix - diverter fixing & Pressure testing | 10d | 2025-05-01 | 2025-05-13 | PG-11125 FF+6d |  |  |  |  | 345.27d | 0d | Santech (Plumbing) [124000 h] | 124,000 | 13821 |
| PG-11127 |  | Final Fix - CP & Sanitary fixtures | 9.5d | 2025-06-30 | 2025-07-10 | PG-11442, PG-11448 FF+6d |  |  |  |  | 345.27d | 0d | Santech (Plumbing) [330000 h] | 330,000 | 13822 |
|  | 1.3.1.2.3.15.2 | **Fire Fighting Works** |  | 2025-05-01 | 2025-07-10 |  |  |  |  |  |  |  |  |  |  |
| PG-11128 |  | 1st Fix - Piping and Shaft hydrant works | 11.33d | 2025-05-01 | 2025-05-14 | PG-11439 FF+6d |  |  | 2025-05-01 | 2025-05-15 | 393.14d | 0d | Nexus (Fire) [162000 h] | 162,000 | 13824 |
| PG-11129 |  | 2nd Fix - Sprinkler fixing & Pressure testing | 10d | 2025-06-07 | 2025-06-19 | PG-11447 FF+6d |  |  |  |  | 354.27d | 9d | Nexus (Fire) [145000 h] | 145,000 | 13825 |
| PG-11130 |  | Final Fix - Smoke & heat detectors, FHC , FAS Etc. | 9.5d | 2025-06-30 | 2025-07-10 | PG-11129, PG-11448 FF+6d |  |  |  |  | 345.27d | 0d | Nexus (Fire) [185000 h] | 185,000 | 13826 |

| ID | WBS | Activity | Duration | Start | Finish | Predecessors | Complete | Remaining | Total float | Free float | Resources | Cost | MSP Activity ID |
| --- | --- | --- | --- | --- | --- | --- | --- | --- | --- | --- | --- | --- | --- |
|  | 1.3.1.2.3.15.3 | **Electrical Works** |  | 2025-04-22 | 2025-07-10 |  |  |  |  |  |  |  |  |
| PG-11131 |  | 1st Fix - GI wire pulling | 7.83d | 2025-04-22 A | 2025-04-30 | PG-10957 | 38% | 4.86d | 393.14d | 0d | Elexir (Electrical) [165000 h] | 165,000 | 13828 |
| PG-11132 |  | 2nd Fix - Wiring works | 12.83d | 2025-06-03 | 2025-06-18 | PG-11447 FF+5d |  |  | 359.27d | 14d | Elexir (Electrical) [248000 h] | 248,000 | 13829 |
| PG-11133 |  | Final Fix - Electrical Fixtures | 5.5d | 2025-07-04 | 2025-07-10 | PG-11132, PG-11448 FF+6d |  |  | 345.27d | 0d | Elexir (Electrical) [205000 h] | 205,000 | 13830 |
|  | 1.3.1.2.3.16 | **Floor 13** |  | 2025-05-03 | 2025-07-24 |  |  |  |  |  |  |  |  |
|  | 1.3.1.2.3.16.1 | **PHE Works** |  | 2025-05-03 | 2025-07-24 |  |  |  |  |  |  |  |  |
| PG-11134 |  | 1st Fix - Piping works | 12d | 2025-05-03 | 2025-05-17 | PG-10962 |  |  | 334.57d | 0d | Santech (Plumbing) [245000 h] | 245,000 | 13833 |
| PG-11135 |  | 2nd Fix - diverter fixing & Pressure testing | 10d | 2025-05-13 | 2025-05-24 | PG-11134 FF+6d |  |  | 334.57d | 0d | Santech (Plumbing) [124000 h] | 124,000 | 13834 |
| PG-11136 |  | Final Fix - CP & Sanitary fixtures | 10.5d | 2025-07-11 | 2025-07-24 | PG-11456, PG-11462 FF+6d |  |  | 334.57d | 0d | Santech (Plumbing) [330000 h] | 330,000 | 13835 |
|  | 1.3.1.2.3.16.2 | **Fire Fighting Works** |  | 2025-05-13 | 2025-07-24 |  |  |  |  |  |  |  |  |
| PG-11137 |  | 1st Fix - Piping and Shaft hydrant works | 11.67d | 2025-05-13 | 2025-05-27 | PG-11453 FF+6d |  |  | 381.57d | 0d | Nexus (Fire) [162000 h] | 162,000 | 13837 |
| PG-11138 |  | 2nd Fix - Sprinkler fixing & Pressure testing | 10d | 2025-06-19 | 2025-07-01 | PG-11461 FF+6d |  |  | 343.57d | 9d | Nexus (Fire) [145000 h] | 145,000 | 13838 |
| PG-11139 |  | Final Fix - Smoke & heat detectors, FHC , FAS Etc. | 10.5d | 2025-07-11 | 2025-07-24 | PG-11138, PG-11462 FF+6d |  |  | 334.57d | 0d | Nexus (Fire) [185000 h] | 185,000 | 13839 |
|  | 1.3.1.2.3.16.3 | **Electrical Works** |  | 2025-05-03 | 2025-07-24 |  |  |  |  |  |  |  |  |
| PG-11140 |  | 1st Fix - GI wire pulling | 7.67d | 2025-05-03 | 2025-05-13 | PG-10962 |  |  | 381.57d | 0d | Elexir (Electrical) [165000 h] | 165,000 | 13841 |
| PG-11141 |  | 2nd Fix - Wiring works | 12.83d | 2025-06-16 | 2025-06-30 | PG-11461 FF+5d |  |  | 349.57d | 15d | Elexir (Electrical) [248000 h] | 248,000 | 13842 |
| PG-11142 |  | Final Fix - Electrical Fixtures | 5.5d | 2025-07-17 | 2025-07-24 | PG-11141, PG-11462 FF+6d |  |  | 334.57d | 0d | Elexir (Electrical) [205000 h] | 205,000 | 13843 |
|  | 1.3.1.2.3.17 | **Floor 14** |  | 2025-05-16 | 2025-08-06 |  |  |  |  |  |  |  |  |
|  | 1.3.1.2.3.17.1 | **PHE Works** |  | 2025-05-16 | 2025-08-06 |  |  |  |  |  |  |  |  |
| PG-11143 |  | 1st Fix - Piping works | 12d | 2025-05-16 | 2025-05-30 | PG-10967 |  |  | 323.57d | 0d | Santech (Plumbing) [245000 h] | 245,000 | 13846 |
| PG-11144 |  | 2nd Fix - diverter fixing & Pressure testing | 10d | 2025-05-26 | 2025-06-06 | PG-11143 FF+6d |  |  | 323.57d | 0d | Santech (Plumbing) [124000 h] | 124,000 | 13847 |
| PG-11145 |  | Final Fix - CP & Sanitary fixtures | 9.5d | 2025-07-25 | 2025-08-06 | PG-11470, PG-11476 FF+6d |  |  | 323.57d | 0d | Santech (Plumbing) [330000 h] | 330,000 | 13848 |
|  | 1.3.1.2.3.17.2 | **Fire Fighting Works** |  | 2025-05-27 | 2025-08-06 |  |  |  |  |  |  |  |  |
| PG-11146 |  | 1st Fix - Piping and Shaft hydrant works | 11.67d | 2025-05-27 | 2025-06-10 | PG-11467 FF+6d |  |  | 369.57d | 0d | Nexus (Fire) [162000 h] | 162,000 | 13850 |
| PG-11147 |  | 2nd Fix - Sprinkler fixing & Pressure testing | 10d | 2025-07-02 | 2025-07-14 | PG-11475 FF+6d |  |  | 333.57d | 10d | Nexus (Fire) [145000 h] | 145,000 | 13851 |
| PG-11148 |  | Final Fix - Smoke & heat detectors, FHC , FAS Etc. | 9.5d | 2025-07-25 | 2025-08-06 | PG-11147, PG-11476 FF+6d |  |  | 323.57d | 0d | Nexus (Fire) [185000 h] | 185,000 | 13852 |

| ID | WBS | Activity | Duration | Start | Finish | Predecessors | Total float | Free float | Resources | Cost | MSP Activity ID |
| --- | --- | --- | --- | --- | --- | --- | --- | --- | --- | --- | --- |
|  | 1.3.1.2.3.17.3 | **Electrical Works** |  | 2025-05-16 | 2025-08-06 |  |  |  |  |  |  |
| PG-11149 |  | 1st Fix - GI wire pulling | 8.67d | 2025-05-16 | 2025-05-27 | PG-10967 | 369.57d | 0d | Elexir (Electrical) [165000 h] | 165,000 | 13854 |
| PG-11150 |  | 2nd Fix - Wiring works | 12.83d | 2025-06-28 | 2025-07-12 | PG-11475 FF+5d | 338.57d | 15d | Elexir (Electrical) [248000 h] | 248,000 | 13855 |
| PG-11151 |  | Final Fix - Electrical Fixtures | 5.5d | 2025-07-30 | 2025-08-06 | PG-11150, PG-11476 FF+6d | 323.57d | 0d | Elexir (Electrical) [205000 h] | 205,000 | 13856 |
|  | 1.3.1.2.3.18 | **Floor 15** |  | 2025-05-29 | 2025-08-19 |  |  |  |  |  |  |
|  | 1.3.1.2.3.18.1 | **PHE Works** |  | 2025-05-29 | 2025-08-19 |  |  |  |  |  |  |
| PG-11152 |  | 1st Fix - Piping works | 12d | 2025-05-29 | 2025-06-12 | PG-10972 | 162.57d | 0d | Santech (Plumbing) [245000 h] | 245,000 | 13859 |
| PG-11153 |  | 2nd Fix - diverter fixing & Pressure testing | 10d | 2025-06-07 | 2025-06-19 | PG-11152 FF+6d | 162.57d | 0d | Santech (Plumbing) [124000 h] | 124,000 | 13860 |
| PG-11154 |  | Final Fix - CP & Sanitary fixtures | 9.5d | 2025-08-06 | 2025-08-19 | PG-11484, PG-11490 FF+6d | 313.57d | 0d | Santech (Plumbing) [330000 h] | 330,000 | 13861 |
|  | 1.3.1.2.3.18.2 | **Fire Fighting Works** |  | 2025-06-07 | 2025-08-19 |  |  |  |  |  |  |
| PG-11155 |  | 1st Fix - Piping and Shaft hydrant works | 11.67d | 2025-06-07 | 2025-06-21 | PG-11481 FF+6d | 360.24d | 0d | Nexus (Fire) [162000 h] | 162,000 | 13863 |
| PG-11156 |  | 2nd Fix - Sprinkler fixing & Pressure testing | 10d | 2025-07-15 | 2025-07-26 | PG-11489 FF+6d | 322.57d | 9d | Nexus (Fire) [145000 h] | 145,000 | 13864 |
| PG-11157 |  | Final Fix - Smoke & heat detectors, FHC , FAS Etc. | 9.5d | 2025-08-06 | 2025-08-19 | PG-11156, PG-11490 FF+6d | 313.57d | 0d | Nexus (Fire) [185000 h] | 185,000 | 13865 |
|  | 1.3.1.2.3.18.3 | **Electrical Works** |  | 2025-05-29 | 2025-08-19 |  |  |  |  |  |  |
| PG-11158 |  | 1st Fix - GI wire pulling | 7.83d | 2025-05-29 | 2025-06-07 | PG-10972 | 360.24d | 0d | Elexir (Electrical) [165000 h] | 165,000 | 13867 |
| PG-11159 |  | 2nd Fix - Wiring works | 14.67d | 2025-07-09 | 2025-07-25 | PG-11489 FF+5d | 327.57d | 14d | Elexir (Electrical) [248000 h] | 248,000 | 13868 |
| PG-11160 |  | Final Fix - Electrical Fixtures | 5.5d | 2025-08-11 | 2025-08-19 | PG-11159, PG-11490 FF+6d | 313.57d | 0d | Elexir (Electrical) [205000 h] | 205,000 | 13869 |
|  | 1.3.1.2.3.19 | **Floor 16** |  | 2025-06-11 | 2025-08-30 |  |  |  |  |  |  |
|  | 1.3.1.2.3.19.1 | **PHE Works** |  | 2025-06-11 | 2025-08-30 |  |  |  |  |  |  |
| PG-11161 |  | 1st Fix - Piping works | 12d | 2025-06-11 | 2025-06-25 | PG-10977 | 303.24d | 0d | Santech (Plumbing) [245000 h] | 245,000 | 13872 |
| PG-11162 |  | 2nd Fix - diverter fixing & Pressure testing | 10d | 2025-06-20 | 2025-07-02 | PG-11161 FF+6d | 303.24d | 0d | Santech (Plumbing) [124000 h] | 124,000 | 13873 |
| PG-11163 |  | Final Fix - CP & Sanitary fixtures | 10.33d | 2025-08-19 | 2025-08-30 | PG-11498, PG-11504 FF+6d | 303.24d | 0d | Santech (Plumbing) [330000 h] | 330,000 | 13874 |
|  | 1.3.1.2.3.19.2 | **Fire Fighting Works** |  | 2025-06-20 | 2025-08-30 |  |  |  |  |  |  |
| PG-11164 |  | 1st Fix - Piping and Shaft hydrant works | 11.67d | 2025-06-20 | 2025-07-04 | PG-11495 FF+6d | 349.07d | 0d | Nexus (Fire) [162000 h] | 162,000 | 13876 |
| PG-11165 |  | 2nd Fix - Sprinkler fixing & Pressure testing | 10d | 2025-07-28 | 2025-08-08 | PG-11503 FF+6d | 310.4d | 7.17d | Nexus (Fire) [145000 h] | 145,000 | 13877 |
| PG-11166 |  | Final Fix - Smoke & heat detectors, FHC , FAS Etc. | 10.33d | 2025-08-19 | 2025-08-30 | PG-11165, PG-11504 FF+6d | 303.24d | 0d | Nexus (Fire) [185000 h] | 185,000 | 13878 |

| ID | WBS | Activity | Duration | Start | Finish | Predecessors | Total float | Free float | Resources | Cost | MSP Activity ID |
| --- | --- | --- | --- | --- | --- | --- | --- | --- | --- | --- | --- |
|  | 1.3.1.2.3.19.3 | **Electrical Works** |  | 2025-06-11 | 2025-08-30 |  |  |  |  |  |  |
| PG-11167 |  | 1st Fix - GI wire pulling | 7.83d | 2025-06-11 | 2025-06-20 | PG-10977 | 349.07d | 0d | Elexir (Electrical) [165000 h] | 165,000 | 13880 |
| PG-11168 |  | 2nd Fix - Wiring works | 13.67d | 2025-07-23 | 2025-08-07 | PG-11503 FF+5d | 316.24d | 13d | Elexir (Electrical) [248000 h] | 248,000 | 13881 |
| PG-11169 |  | Final Fix - Electrical Fixtures | 5.5d | 2025-08-23 | 2025-08-30 | PG-11168, PG-11504 FF+6d | 303.24d | 0d | Elexir (Electrical) [205000 h] | 205,000 | 13882 |
|  | 1.3.1.2.3.20 | **Floor 17** |  | 2025-06-24 | 2025-09-12 |  |  |  |  |  |  |
|  | 1.3.1.2.3.20.1 | **PHE Works** |  | 2025-06-24 | 2025-09-12 |  |  |  |  |  |  |
| PG-11170 |  | 1st Fix - Piping works | 12d | 2025-06-24 | 2025-07-08 | PG-10982 | 292.24d | 0d | Santech (Plumbing) [245000 h] | 245,000 | 13885 |
| PG-11171 |  | 2nd Fix - diverter fixing & Pressure testing | 10d | 2025-07-03 | 2025-07-15 | PG-11170 FF+6d | 292.24d | 0d | Santech (Plumbing) [124000 h] | 124,000 | 13886 |
| PG-11172 |  | Final Fix - CP & Sanitary fixtures | 10.33d | 2025-09-01 | 2025-09-12 | PG-11512, PG-11518 FF+6d | 292.24d | 0d | Santech (Plumbing) [330000 h] | 330,000 | 13887 |
|  | 1.3.1.2.3.20.2 | **Fire Fighting Works** |  | 2025-07-03 | 2025-09-12 |  |  |  |  |  |  |
| PG-11173 |  | 1st Fix - Piping and Shaft hydrant works | 11.67d | 2025-07-03 | 2025-07-17 | PG-11509 FF+6d | 338.07d | 0d | Nexus (Fire) [162000 h] | 162,000 | 13889 |
| PG-11174 |  | 2nd Fix - Sprinkler fixing & Pressure testing | 10d | 2025-08-09 | 2025-08-22 | PG-11517 FF+6d | 299.4d | 7.17d | Nexus (Fire) [145000 h] | 145,000 | 13890 |
| PG-11175 |  | Final Fix - Smoke & heat detectors, FHC , FAS Etc. | 10.33d | 2025-09-01 | 2025-09-12 | PG-11174, PG-11518 FF+6d | 292.24d | 0d | Nexus (Fire) [185000 h] | 185,000 | 13891 |
|  | 1.3.1.2.3.20.3 | **Electrical Works** |  | 2025-06-24 | 2025-09-12 |  |  |  |  |  |  |
| PG-11176 |  | 1st Fix - GI wire pulling | 7.83d | 2025-06-24 | 2025-07-03 | PG-10982 | 338.07d | 0d | Elexir (Electrical) [165000 h] | 165,000 | 13893 |
| PG-11177 |  | 2nd Fix - Wiring works | 13.67d | 2025-08-05 | 2025-08-21 | PG-11517 FF+5d | 305.24d | 13d | Elexir (Electrical) [248000 h] | 248,000 | 13894 |
| PG-11178 |  | Final Fix - Electrical Fixtures | 5.5d | 2025-09-05 | 2025-09-12 | PG-11177, PG-11518 FF+6d | 292.24d | 0d | Elexir (Electrical) [205000 h] | 205,000 | 13895 |
|  | 1.3.1.2.3.21 | **Floor 18** |  | 2025-07-07 | 2025-09-26 |  |  |  |  |  |  |
|  | 1.3.1.2.3.21.1 | **PHE Works** |  | 2025-07-07 | 2025-09-26 |  |  |  |  |  |  |
| PG-11179 |  | 1st Fix - Piping works | 11.67d | 2025-07-07 | 2025-07-21 | PG-10987 | 280.4d | 0d | Santech (Plumbing) [245000 h] | 245,000 | 13898 |
| PG-11180 |  | 2nd Fix - diverter fixing & Pressure testing | 8.67d | 2025-07-17 | 2025-07-28 | PG-11179 FF+6d | 280.4d | 0d | Santech (Plumbing) [124000 h] | 124,000 | 13899 |
| PG-11181 |  | Final Fix - CP & Sanitary fixtures | 10.67d | 2025-09-13 | 2025-09-26 | PG-11526, PG-11532 FF+6d | 280.4d | 0d | Santech (Plumbing) [330000 h] | 330,000 | 13900 |
|  | 1.3.1.2.3.21.2 | **Fire Fighting Works** |  | 2025-07-17 | 2025-09-26 |  |  |  |  |  |  |
| PG-11182 |  | 1st Fix - Piping and Shaft hydrant works | 11.67d | 2025-07-17 | 2025-07-30 | PG-11523 FF+6d | 328.07d | 0d | Nexus (Fire) [162000 h] | 162,000 | 13902 |
| PG-11183 |  | 2nd Fix - Sprinkler fixing & Pressure testing | 10.5d | 2025-08-23 | 2025-09-04 | PG-11531 FF+6d | 288.4d | 8d | Nexus (Fire) [145000 h] | 145,000 | 13903 |
| PG-11184 |  | Final Fix - Smoke & heat detectors, FHC , FAS Etc. | 10.67d | 2025-09-13 | 2025-09-26 | PG-11183, PG-11532 FF+6d | 280.4d | 0d | Nexus (Fire) [185000 h] | 185,000 | 13904 |

| ID | WBS | Activity | Duration | Start | Finish | Predecessors | Total float | Free float | Resources | Cost | MSP Activity ID |
| --- | --- | --- | --- | --- | --- | --- | --- | --- | --- | --- | --- |
|  | 1.3.1.2.3.21.3 | **Electrical Works** |  | 2025-07-07 | 2025-09-26 |  |  |  |  |  |  |
| PG-11185 |  | 1st Fix - GI wire pulling | 7.83d | 2025-07-07 | 2025-07-16 | PG-10987 | 328.07d | 0d | Elexir (Electrical) [165000 h] | 165,000 | 13906 |
| PG-11186 |  | 2nd Fix - Wiring works | 15.5d | 2025-08-16 | 2025-09-03 | PG-11531 FF+5d | 294.4d | 14d | Elexir (Electrical) [248000 h] | 248,000 | 13907 |
| PG-11187 |  | Final Fix - Electrical Fixtures | 5.67d | 2025-09-19 | 2025-09-26 | PG-11186, PG-11532 FF+6d | 280.4d | 0d | Elexir (Electrical) [205000 h] | 205,000 | 13908 |
|  | 1.3.1.2.3.22 | **Floor 19** |  | 2025-07-19 | 2025-10-10 |  |  |  |  |  |  |
|  | 1.3.1.2.3.22.1 | **PHE Works** |  | 2025-07-19 | 2025-10-10 |  |  |  |  |  |  |
| PG-11188 |  | 1st Fix - Piping works | 11.67d | 2025-07-19 | 2025-08-02 | PG-10992 | 269.4d | 0d | Santech (Plumbing) [245000 h] | 245,000 | 13911 |
| PG-11189 |  | 2nd Fix - diverter fixing & Pressure testing | 8.67d | 2025-07-30 | 2025-08-09 | PG-11188 FF+6d | 269.4d | 0d | Santech (Plumbing) [124000 h] | 124,000 | 13912 |
| PG-11190 |  | Final Fix - CP & Sanitary fixtures | 10.67d | 2025-09-26 | 2025-10-10 | PG-11540, PG-11546 FF+6d | 269.4d | 0d | Santech (Plumbing) [330000 h] | 330,000 | 13913 |
|  | 1.3.1.2.3.22.2 | **Fire Fighting Works** |  | 2025-07-29 | 2025-10-10 |  |  |  |  |  |  |
| PG-11191 |  | 1st Fix - Piping and Shaft hydrant works | 12.67d | 2025-07-29 | 2025-08-12 | PG-11537 FF+6d | 317.07d | 0d | Nexus (Fire) [162000 h] | 162,000 | 13915 |
| PG-11192 |  | 2nd Fix - Sprinkler fixing & Pressure testing | 10.5d | 2025-09-05 | 2025-09-17 | PG-11545 FF+6d | 277.4d | 8d | Nexus (Fire) [145000 h] | 145,000 | 13916 |
| PG-11193 |  | Final Fix - Smoke & heat detectors, FHC , FAS Etc. | 10.67d | 2025-09-26 | 2025-10-10 | PG-11192, PG-11546 FF+6d | 269.4d | 0d | Nexus (Fire) [185000 h] | 185,000 | 13917 |
|  | 1.3.1.2.3.22.3 | **Electrical Works** |  | 2025-07-19 | 2025-10-10 |  |  |  |  |  |  |
| PG-11194 |  | 1st Fix - GI wire pulling | 7.83d | 2025-07-19 | 2025-07-29 | PG-10992 | 317.07d | 0d | Elexir (Electrical) [165000 h] | 165,000 | 13919 |
| PG-11195 |  | 2nd Fix - Wiring works | 15.5d | 2025-08-29 | 2025-09-16 | PG-11545 FF+5d | 283.4d | 14d | Elexir (Electrical) [248000 h] | 248,000 | 13920 |
| PG-11196 |  | Final Fix - Electrical Fixtures | 5.67d | 2025-10-03 | 2025-10-10 | PG-11195, PG-11546 FF+6d | 269.4d | 0d | Elexir (Electrical) [205000 h] | 205,000 | 13921 |
|  | 1.3.1.2.3.23 | **Floor 20** |  | 2025-08-01 | 2025-10-24 |  |  |  |  |  |  |
|  | 1.3.1.2.3.23.1 | **PHE Works** |  | 2025-08-01 | 2025-10-24 |  |  |  |  |  |  |
| PG-11197 |  | 1st Fix - Piping works | 12.67d | 2025-08-01 | 2025-08-18 | PG-10997 | 257.4d | 0d | Santech (Plumbing) [245000 h] | 245,000 | 13924 |
| PG-11198 |  | 2nd Fix - diverter fixing & Pressure testing | 8.67d | 2025-08-13 | 2025-08-25 | PG-11197 FF+6d | 257.4d | 0d | Santech (Plumbing) [124000 h] | 124,000 | 13925 |
| PG-11199 |  | Final Fix - CP & Sanitary fixtures | 10.67d | 2025-10-11 | 2025-10-24 | PG-11554, PG-11560 FF+6d | 257.4d | 0d | Santech (Plumbing) [330000 h] | 330,000 | 13926 |
|  | 1.3.1.2.3.23.2 | **Fire Fighting Works** |  | 2025-08-13 | 2025-10-24 |  |  |  |  |  |  |
| PG-11200 |  | 1st Fix - Piping and Shaft hydrant works | 11.5d | 2025-08-13 | 2025-08-27 | PG-11551 FF+6d | 305.24d | 0d | Nexus (Fire) [162000 h] | 162,000 | 13928 |
| PG-11201 |  | 2nd Fix - Sprinkler fixing & Pressure testing | 10.5d | 2025-09-19 | 2025-10-01 | PG-11559 FF+6d | 265.4d | 8d | Nexus (Fire) [145000 h] | 145,000 | 13929 |
| PG-11202 |  | Final Fix - Smoke & heat detectors, FHC , FAS Etc. | 10.67d | 2025-10-11 | 2025-10-24 | PG-11201, PG-11560 FF+6d | 257.4d | 0d | Nexus (Fire) [185000 h] | 185,000 | 13930 |

| ID | WBS | Activity | Duration | Start | Finish | Predecessors | Total float | Free float | Resources | Cost | MSP Activity ID |
| --- | --- | --- | --- | --- | --- | --- | --- | --- | --- | --- | --- |
|  | 1.3.1.2.3.23.3 | **Electrical Works** |  | 2025-08-01 | 2025-10-24 |  |  |  |  |  |  |
| PG-11203 |  | 1st Fix - GI wire pulling | 8.67d | 2025-08-01 | 2025-08-12 | PG-10997 | 305.24d | 0d | Elexir (Electrical) [165000 h] | 165,000 | 13932 |
| PG-11204 |  | 2nd Fix - Wiring works | 15.5d | 2025-09-12 | 2025-09-30 | PG-11559 FF+5d | 271.4d | 14d | Elexir (Electrical) [248000 h] | 248,000 | 13933 |
| PG-11205 |  | Final Fix - Electrical Fixtures | 5.67d | 2025-10-17 | 2025-10-24 | PG-11204, PG-11560 FF+6d | 257.4d | 0d | Elexir (Electrical) [205000 h] | 205,000 | 13934 |
|  | 1.3.1.2.3.24 | **Floor 21** |  | 2025-08-14 | 2025-11-06 |  |  |  |  |  |  |
|  | 1.3.1.2.3.24.1 | **PHE Works** |  | 2025-08-14 | 2025-11-06 |  |  |  |  |  |  |
| PG-11206 |  | 1st Fix - Piping works | 10.67d | 2025-08-14 | 2025-08-28 | PG-11002 | 14.9d | 0d | Santech (Plumbing) [245000 h] | 245,000 | 13937 |
| PG-11207 |  | 2nd Fix - diverter fixing & Pressure testing | 9.67d | 2025-08-23 | 2025-09-04 | PG-11206 FF+6d | 247.74d | 0d | Santech (Plumbing) [124000 h] | 124,000 | 13938 |
| PG-11208 |  | Final Fix - CP & Sanitary fixtures | 10.67d | 2025-10-23 | 2025-11-06 | PG-11568, PG-11574 FF+6d | 247.74d | 0d | Santech (Plumbing) [330000 h] | 330,000 | 13939 |
|  | 1.3.1.2.3.24.2 | **Fire Fighting Works** |  | 2025-08-23 | 2025-11-06 |  |  |  |  |  |  |
| PG-11209 |  | 1st Fix - Piping and Shaft hydrant works | 11.67d | 2025-08-23 | 2025-09-06 | PG-11565 FF+6d | 295.4d | 0d | Nexus (Fire) [162000 h] | 162,000 | 13941 |
| PG-11210 |  | 2nd Fix - Sprinkler fixing & Pressure testing | 9.5d | 2025-10-01 | 2025-10-13 | PG-11573 FF+6d | 256.74d | 9d | Nexus (Fire) [145000 h] | 145,000 | 13942 |
| PG-11211 |  | Final Fix - Smoke & heat detectors, FHC , FAS Etc. | 10.67d | 2025-10-23 | 2025-11-06 | PG-11210, PG-11574 FF+6d | 247.74d | 0d | Nexus (Fire) [185000 h] | 185,000 | 13943 |
|  | 1.3.1.2.3.24.3 | **Electrical Works** |  | 2025-08-14 | 2025-10-24 |  |  |  |  |  |  |
| PG-11212 |  | 1st Fix - GI wire pulling | 6.67d | 2025-08-14 | 2025-08-23 | PG-11002 | 295.4d | 0d | Elexir (Electrical) [165000 h] | 165,000 | 13945 |
| PG-11213 |  | 2nd Fix - Wiring works | 15.5d | 2025-09-12 | 2025-09-30 | PG-11559 FF+5d | 271.74d | 14d | Elexir (Electrical) [248000 h] | 248,000 | 13946 |
| PG-11214 |  | Final Fix - Electrical Fixtures | 5.67d | 2025-10-17 | 2025-10-24 | PG-11213, PG-11560 FF+6d | 257.74d | 10d | Elexir (Electrical) [205000 h] | 205,000 | 13947 |
|  | 1.3.1.2.3.25 | **Floor 22** |  | 2025-09-05 | 2025-11-28 |  |  |  |  |  |  |
|  | 1.3.1.2.3.25.1 | **PHE Works** |  | 2025-09-05 | 2025-11-28 |  |  |  |  |  |  |
| PG-11215 |  | 1st Fix - Piping works | 11.83d | 2025-09-05 | 2025-09-19 | PG-11206 FS+7d | 123.74d | 0d | Santech (Plumbing) [245000 h] | 245,000 | 13950 |
| PG-11216 |  | 2nd Fix - diverter fixing & Pressure testing | 10.67d | 2025-09-13 | 2025-09-26 | PG-11215 FF+6d | 133.24d | 0d | Santech (Plumbing) [124000 h] | 124,000 | 13951 |
| PG-11217 |  | Final Fix - CP & Sanitary fixtures | 9.67d | 2025-11-17 | 2025-11-28 | PG-11582, PG-11588 FF+6d | 227.9d | 0d | Santech (Plumbing) [330000 h] | 330,000 | 13952 |
|  | 1.3.1.2.3.25.2 | **Fire Fighting Works** |  | 2025-09-15 | 2025-11-28 |  |  |  |  |  |  |
| PG-11218 |  | 1st Fix - Piping and Shaft hydrant works | 11.5d | 2025-09-15 | 2025-09-29 | PG-11579 FF+6d | 145.4d | 0d | Nexus (Fire) [162000 h] | 162,000 | 13954 |
| PG-11219 |  | 2nd Fix - Sprinkler fixing & Pressure testing | 10.5d | 2025-10-22 | 2025-11-05 | PG-11587 FF+6d | 237.9d | 10d | Nexus (Fire) [145000 h] | 145,000 | 13955 |
| PG-11220 |  | Final Fix - Smoke & heat detectors, FHC , FAS Etc. | 9.67d | 2025-11-17 | 2025-11-28 | PG-11219, PG-11588 FF+6d | 227.9d | 0d | Nexus (Fire) [185000 h] | 185,000 | 13956 |

| ID | WBS | Activity | Duration | Start | Finish | Predecessors | Planned start | Planned finish | Total float | Free float | Resources | Cost | MSP Activity ID |
| --- | --- | --- | --- | --- | --- | --- | --- | --- | --- | --- | --- | --- | --- |
|  | 1.3.1.2.3.25.3 | **Electrical Works** |  | 2025-09-05 | 2025-11-28 |  |  |  |  |  |  |  |  |
| PG-11221 |  | 1st Fix - GI wire pulling | 7.67d | 2025-09-05 | 2025-09-15 | PG-11206 FS+7d |  |  | 14.9d | 0d | Elexir (Electrical) [165000 h] | 165,000 | 13958 |
| PG-11222 |  | 2nd Fix - Wiring works | 15.5d | 2025-10-15 | 2025-11-04 | PG-11587 FF+5d |  |  | 242.9d | 15d | Elexir (Electrical) [248000 h] | 248,000 | 13959 |
| PG-11223 |  | Final Fix - Electrical Fixtures | 5.67d | 2025-11-21 | 2025-11-28 | PG-11222, PG-11588 FF+6d |  |  | 227.9d | 0d | Elexir (Electrical) [205000 h] | 205,000 | 13960 |
|  | 1.3.1.2.3.26 | **Floor 23** |  | 2025-09-27 | 2025-12-18 |  |  |  |  |  |  |  |  |
|  | 1.3.1.2.3.26.1 | **PHE Works** |  | 2025-09-27 | 2025-12-18 |  |  |  |  |  |  |  |  |
| PG-11224 |  | 1st Fix - Piping works | 10.67d | 2025-09-27 | 2025-10-11 | PG-11215 FS+7d |  |  | 123.74d | 0d | Santech (Plumbing) [245000 h] | 245,000 | 13963 |
| PG-11225 |  | 2nd Fix - diverter fixing & Pressure testing | 8.67d | 2025-10-08 | 2025-10-18 | PG-11224 FF+6d |  |  | 209.9d | 0d | Santech (Plumbing) [124000 h] | 124,000 | 13964 |
| PG-11226 |  | Final Fix - CP & Sanitary fixtures | 9.67d | 2025-12-08 | 2025-12-18 | PG-11596, PG-11602 FF+6d |  |  | 209.9d | 0d | Santech (Plumbing) [330000 h] | 330,000 | 13965 |
|  | 1.3.1.2.3.26.2 | **Fire Fighting Works** |  | 2025-10-08 | 2025-12-18 |  |  |  |  |  |  |  |  |
| PG-11227 |  | 1st Fix - Piping and Shaft hydrant works | 11.67d | 2025-10-08 | 2025-10-22 | PG-11593 FF+6d |  |  | 256.74d | 0d | Nexus (Fire) [162000 h] | 162,000 | 13967 |
| PG-11228 |  | 2nd Fix - Sprinkler fixing & Pressure testing | 9.33d | 2025-11-14 | 2025-11-26 | PG-11601 FF+6d |  |  | 219.9d | 10d | Nexus (Fire) [145000 h] | 145,000 | 13968 |
| PG-11229 |  | Final Fix - Smoke & heat detectors, FHC , FAS Etc. | 9.67d | 2025-12-08 | 2025-12-18 | PG-11228, PG-11602 FF+6d |  |  | 209.9d | 0d | Nexus (Fire) [185000 h] | 185,000 | 13969 |
|  | 1.3.1.2.3.26.3 | **Electrical Works** |  | 2025-09-27 | 2025-12-18 |  |  |  |  |  |  |  |  |
| PG-11230 |  | 1st Fix - GI wire pulling | 7.67d | 2025-09-27 | 2025-10-08 | PG-11215 FS+7d |  |  | 256.74d | 0d | Elexir (Electrical) [165000 h] | 165,000 | 13971 |
| PG-11231 |  | 2nd Fix - Wiring works | 14.33d | 2025-11-07 | 2025-11-25 | PG-11601 FF+5d |  |  | 224.9d | 15d | Elexir (Electrical) [248000 h] | 248,000 | 13972 |
| PG-11232 |  | Final Fix - Electrical Fixtures | 5.67d | 2025-12-12 | 2025-12-18 | PG-11231, PG-11602 FF+6d |  |  | 209.9d | 0d | Elexir (Electrical) [205000 h] | 205,000 | 13973 |
|  | 1.3.1.2.3.27 | **Floor 24** |  | 2025-10-20 | 2026-01-08 |  |  |  |  |  |  |  |  |
|  | 1.3.1.2.3.27.1 | **PHE Works** |  | 2025-10-20 | 2026-01-08 |  |  |  |  |  |  |  |  |
| PG-11233 |  | 1st Fix - Piping works | 11.67d | 2025-10-20 | 2025-11-03 | PG-11224 FS+7d |  |  | 123.74d | 0d | Santech (Plumbing) [245000 h] | 245,000 | 14440 |
| PG-11234 |  | 2nd Fix - diverter fixing & Pressure testing | 9.67d | 2025-10-29 | 2025-11-10 | PG-11233 FF+6d |  |  | 190.74d | 0d | Santech (Plumbing) [124000 h] | 124,000 | 14441 |
| PG-11235 |  | Final Fix - CP & Sanitary fixtures | 9.67d | 2025-12-27 | 2026-01-08 | PG-11610, PG-11616 FF+6d | 2025-12-27 | 2026-01-07 | 190.74d | 0d | Santech (Plumbing) [330000 h] | 330,000 | 14442 |
|  | 1.3.1.2.3.27.2 | **Fire Fighting Works** |  | 2025-10-29 | 2026-01-08 |  |  |  |  |  |  |  |  |
| PG-11236 |  | 1st Fix - Piping and Shaft hydrant works | 11.33d | 2025-10-29 | 2025-11-12 | PG-11607 FF+6d |  |  | 239.4d | 0d | Nexus (Fire) [162000 h] | 162,000 | 14444 |
| PG-11237 |  | 2nd Fix - Sprinkler fixing & Pressure testing | 9.67d | 2025-12-06 | 2025-12-17 | PG-11615 FF+6d |  |  | 199.24d | 8.5d | Nexus (Fire) [145000 h] | 145,000 | 14445 |
| PG-11238 |  | Final Fix - Smoke & heat detectors, FHC , FAS Etc. | 9.67d | 2025-12-27 | 2026-01-08 | PG-11237, PG-11616 FF+6d | 2025-12-27 | 2026-01-07 | 190.74d | 0d | Nexus (Fire) [185000 h] | 185,000 | 14446 |

| ID | WBS | Activity | Duration | Start | Finish | Predecessors | Planned start | Planned finish | Total float | Free float | Resources | Cost | MSP Activity ID |
| --- | --- | --- | --- | --- | --- | --- | --- | --- | --- | --- | --- | --- | --- |
|  | 1.3.1.2.3.27.3 | **Electrical Works** |  | 2025-10-20 | 2026-01-08 |  |  |  |  |  |  |  |  |
| PG-11239 |  | 1st Fix - GI wire pulling | 7.67d | 2025-10-20 | 2025-10-28 | PG-11224 FS+7d |  |  | 239.4d | 0d | Elexir (Electrical) [165000 h] | 165,000 | 14448 |
| PG-11240 |  | 2nd Fix - Wiring works | 14.67d | 2025-11-29 | 2025-12-16 | PG-11615 FF+5d |  |  | 204.74d | 14d | Elexir (Electrical) [248000 h] | 248,000 | 14449 |
| PG-11241 |  | Final Fix - Electrical Fixtures | 5.5d | 2026-01-01 | 2026-01-08 | PG-11240, PG-11616 FF+6d |  |  | 190.74d | 0d | Elexir (Electrical) [205000 h] | 205,000 | 14450 |
|  | 1.3.1.2.3.28 | **Floor 25** |  | 2025-11-11 | 2026-02-02 |  |  |  |  |  |  |  |  |
|  | 1.3.1.2.3.28.1 | **PHE Works** |  | 2025-11-11 | 2026-02-02 |  |  |  |  |  |  |  |  |
| PG-11242 |  | 1st Fix - Piping works | 11.67d | 2025-11-11 | 2025-11-25 | PG-11233 FS+7d |  |  | 123.74d | 0d | Santech (Plumbing) [245000 h] | 245,000 | 14453 |
| PG-11243 |  | 2nd Fix - diverter fixing & Pressure testing | 9.67d | 2025-11-20 | 2025-12-02 | PG-11242 FF+6d |  |  | 171.24d | 0d | Santech (Plumbing) [124000 h] | 124,000 | 14454 |
| PG-11244 |  | Final Fix - CP & Sanitary fixtures | 10.33d | 2026-01-20 | 2026-02-02 | PG-11624, PG-11630 FF+6d |  |  | 171.24d | 0d | Santech (Plumbing) [330000 h] | 330,000 | 14455 |
|  | 1.3.1.2.3.28.2 | **Fire Fighting Works** |  | 2025-11-21 | 2026-02-02 |  |  |  |  |  |  |  |  |
| PG-11245 |  | 1st Fix - Piping and Shaft hydrant works | 11.33d | 2025-11-21 | 2025-12-04 | PG-11621 FF+6d |  |  | 218.9d | 0d | Nexus (Fire) [162000 h] | 162,000 | 14457 |
| PG-11246 |  | 2nd Fix - Sprinkler fixing & Pressure testing | 9.33d | 2025-12-29 | 2026-01-08 | PG-11629 FF+6d |  |  | 181.24d | 10d | Nexus (Fire) [145000 h] | 145,000 | 14458 |
| PG-11247 |  | Final Fix - Smoke & heat detectors, FHC , FAS Etc. | 10.33d | 2026-01-20 | 2026-02-02 | PG-11246, PG-11630 FF+6d |  |  | 171.24d | 0d | Nexus (Fire) [185000 h] | 185,000 | 14459 |
|  | 1.3.1.2.3.28.3 | **Electrical Works** |  | 2025-11-11 | 2026-02-02 |  |  |  |  |  |  |  |  |
| PG-11248 |  | 1st Fix - GI wire pulling | 7.67d | 2025-11-11 | 2025-11-20 | PG-11233 FS+7d |  |  | 218.9d | 0d | Elexir (Electrical) [165000 h] | 165,000 | 14461 |
| PG-11249 |  | 2nd Fix - Wiring works | 13.5d | 2025-12-22 | 2026-01-07 | PG-11629 FF+5d | 2025-12-22 | 2026-01-06 | 187.24d | 16d | Elexir (Electrical) [248000 h] | 248,000 | 14462 |
| PG-11250 |  | Final Fix - Electrical Fixtures | 5.33d | 2026-01-27 | 2026-02-02 | PG-11249, PG-11630 FF+6d |  |  | 171.24d | 0d | Elexir (Electrical) [205000 h] | 205,000 | 14463 |
|  | 1.3.1.2.3.29 | **Floor 26** |  | 2025-12-03 | 2026-02-23 |  |  |  |  |  |  |  |  |
|  | 1.3.1.2.3.29.1 | **PHE Works** |  | 2025-12-03 | 2026-02-23 |  |  |  |  |  |  |  |  |
| PG-11251 |  | 1st Fix - Piping works | 11.67d | 2025-12-03 | 2025-12-17 | PG-11242 FS+7d |  |  | 123.74d | 0d | Santech (Plumbing) [245000 h] | 245,000 | 14484 |
| PG-11252 |  | 2nd Fix - diverter fixing & Pressure testing | 9.67d | 2025-12-12 | 2025-12-24 | PG-11251 FF+6d |  |  | 123.74d | 0d | Santech (Plumbing) [124000 h] | 124,000 | 14485 |
| PG-11253 |  | Final Fix - CP & Sanitary fixtures | 10.33d | 2026-02-11 | 2026-02-23 | PG-11638, PG-11644 FF+6d |  |  | 123.74d | 0d | Santech (Plumbing) [330000 h] | 330,000 | 14486 |
|  | 1.3.1.2.3.29.2 | **Fire Fighting Works** |  | 2025-12-12 | 2026-02-23 |  |  |  |  |  |  |  |  |
| PG-11254 |  | 1st Fix - Piping and Shaft hydrant works | 11.5d | 2025-12-12 | 2025-12-26 | PG-11635 FF+6d |  |  | 201.9d | 0d | Nexus (Fire) [162000 h] | 162,000 | 14488 |
| PG-11255 |  | 2nd Fix - Sprinkler fixing & Pressure testing | 10.33d | 2026-01-17 | 2026-01-31 | PG-11643 FF+6d |  |  | 132.74d | 0d | Nexus (Fire) [145000 h] | 145,000 | 14489 |
| PG-11256 |  | Final Fix - Smoke & heat detectors, FHC , FAS Etc. | 10.33d | 2026-02-11 | 2026-02-23 | PG-11255, PG-11644 FF+6d |  |  | 123.74d | 0d | Nexus (Fire) [185000 h] | 185,000 | 14490 |

| ID | WBS | Activity | Duration | Start | Finish | Predecessors | Complete | Planned start | Planned finish | Total float | Free float | Resources | Cost | MSP Activity ID |
| --- | --- | --- | --- | --- | --- | --- | --- | --- | --- | --- | --- | --- | --- | --- |
|  | 1.3.1.2.3.29.3 | **Electrical Works** |  | 2025-12-03 | 2026-02-23 |  |  |  |  |  |  |  |  |  |
| PG-11257 |  | 1st Fix - GI wire pulling | 7.83d | 2025-12-03 | 2025-12-12 | PG-11242 FS+7d |  |  |  | 201.9d | 0d | Elexir (Electrical) [165000 h] | 165,000 | 14492 |
| PG-11258 |  | 2nd Fix - Wiring works | 15.33d | 2026-01-10 | 2026-01-30 | PG-11643 FF+5d |  |  |  | 138.74d | 15d | Elexir (Electrical) [248000 h] | 248,000 | 14493 |
| PG-11259 |  | Final Fix - Electrical Fixtures | 5.33d | 2026-02-17 | 2026-02-23 | PG-11258, PG-11644 FF+6d |  |  |  | 123.74d | 0d | Elexir (Electrical) [205000 h] | 205,000 | 14494 |
|  | 1.3.1.2.4 | **Civil Finishes - Units** |  | 2024-10-21 | 2026-02-16 |  |  |  |  |  |  |  |  |  |
|  | 1.3.1.2.4.1 | **LBF** |  | 2024-10-21 | 2025-01-29 |  |  |  |  |  |  |  |  |  |
| PG-11260 |  | Backfilling Above Raft | 30d | 2024-10-21 A | 2024-11-26 A | PG-10897 | 100% | 2024-10-18 | 2024-11-23 |  |  | L&T [1200000 h] | 1,200,000 | 13976 |
| PG-11261 |  | Car wash water collection sump with cap | 15d | 2024-11-14 A | 2024-12-03 A | PG-11260 FF+5d, PG-11010 FF+5d | 100% | 2024-11-12 | 2024-11-29 |  |  | L&T [600000 h] | 600,000 | 13977 |
| PG-11262 |  | Surface Drain to slope | 10d | 2024-11-27 A | 2024-12-09 A | PG-11261 FF+5d | 100% | 2024-11-23 | 2024-12-05 |  |  | L&T [400000 h] | 400,000 | 13978 |
| PG-11263 |  | Grade Slab | 10d | 2024-12-03 A | 2024-12-14 A | PG-11262 FF+5d | 100% | 2024-11-29 | 2024-12-11 |  |  | L&T [400000 h] | 400,000 | 13979 |
| PG-11264 |  | First Coat Painting works | 14.67d | 2024-12-09 A | 2024-12-27 A | PG-11263 FF+10d | 100% | 2024-12-05 | 2024-12-21 |  |  | Surfa Coats (Painting) [381000 h] | 381,000 | 13980 |
| PG-11265 |  | Final coat painting | 9.67d | 2025-01-11 A | 2025-01-23 A | PG-11016, PG-11013 | 100% | 2025-01-06 | 2025-01-16 |  |  | Surfa Coats (Painting) [251000 h] | 251,000 | 13981 |
| PG-11266 |  | Car park marking and column corner beading fixing | 9.67d | 2025-01-18 A | 2025-01-29 A | PG-11265 FF+5d | 100% | 2025-01-11 | 2025-01-22 |  |  | L&T [387000 h] | 387,000 | 13982 |
|  | 1.3.1.2.4.2 | **UBF** |  | 2024-12-07 | 2025-02-15 |  |  |  |  |  |  |  |  |  |
| PG-11267 |  | Surface Drain with Grade Slab to slope | 15d | 2024-12-07 A | 2024-12-26 A | PG-11260 FS+10d | 100% | 2024-12-05 | 2024-12-23 |  |  | L&T [600000 h] | 600,000 | 13984 |
| PG-11268 |  | First Coat Paint works | 11.67d | 2025-01-08 A | 2025-01-24 A | PG-11267, PG-11015, PG-11014 | 100% | 2025-01-03 | 2025-01-16 |  |  | Surfa Coats (Painting) [303000 h] | 303,000 | 13985 |
| PG-11269 |  | Final Coat Paint Works | 7.5d | 2025-01-24 A | 2025-02-01 A | PG-11268, PG-11016 FF+5d | 100% | 2025-01-17 | 2025-01-25 |  |  | Surfa Coats (Painting) [195000 h] | 195,000 | 13986 |
| PG-11270 |  | Car park marking and column corner beading fixing | 10.67d | 2025-02-01 A | 2025-02-15 A | PG-11269 | 100% | 2025-01-27 | 2025-02-07 |  |  | L&T [427000 h] | 427,000 | 13987 |
|  | 1.3.1.2.4.3 | **Ground Floor** |  | 2024-10-21 | 2025-01-06 |  |  |  |  |  |  |  |  |  |
|  | 1.3.1.2.4.3.1 | **Ceiling Finishing works - Civil** |  | 2024-10-30 | 2025-01-06 |  |  |  |  |  |  |  |  |  |
| PG-11271 |  | Gypsum Plastering | 6d | 2024-10-30 A | 2024-11-07 A | PG-11023 | 100% | 2024-10-28 | 2024-11-05 |  |  | L&T [195000 h] | 195,000 | 13990 |
| PG-11272 |  | Cornice fixing | 4d | 2024-11-16 A | 2024-11-22 A | PG-11020 FF+6d | 100% | 2024-11-14 | 2024-11-19 |  |  | Interiors (False celing) [62000 h] | 62,000 | 13991 |
| PG-11274 |  | Toilet False ceiling | 4d | 2024-11-26 A | 2024-11-30 A | PG-11282 FF+5d | 100% | 2024-11-22 | 2024-11-27 |  |  | Interiors (False celing) [86000 h] | 86,000 | 13993 |
| PG-11273 |  | Painting Works - Putty, Primer and 1st | 6d | 2024-12-06 A | 2024-12-13 A | PG-11272, PG-11277 | 100% | 2024-12-03 | 2024-12-10 |  |  | Surfa Coats (Painting) [130000 h] | 130,000 | 13992 |
| PG-11275 |  | Final Coat Painting | 18.5d | 2024-12-13 A | 2025-01-06 A | PG-11273, PG-11284 | 100% | 2024-12-10 | 2024-12-31 |  |  | Surfa Coats (Painting) [125000 h] | 125,000 | 13994 |

| ID | WBS | Activity | Duration | Start | Finish | Predecessors | Complete | Planned start | Planned finish | Resources | Cost | MSP Activity ID |
| --- | --- | --- | --- | --- | --- | --- | --- | --- | --- | --- | --- | --- |
|  | 1.3.1.2.4.3.2 | **Wall Finishing works - Civil** |  | 2024-10-21 | 2025-01-04 |  |  |  |  |  |  |  |
| PG-11276 |  | Balcony Railing Fixing works | 4d | 2024-10-21 A | 2024-10-25 A | PG-10897 | 100% | 2024-10-18 | 2024-10-23 | L&T [165000 h] | 165,000 | 13996 |
| PG-11278 |  | Dadoing - Wet area | 5d | 2024-11-12 A | 2024-11-19 A | PG-11018 | 100% | 2024-11-09 | 2024-11-15 | L&T [168000 h] | 168,000 | 13998 |
| PG-11277 |  | UPVC Windows & Sliding doors | 5d | 2024-11-29 A | 2024-12-06 A | PG-11276, PG-11283 FF+5d | 100% | 2024-11-27 | 2024-12-03 | Fenesta (UPVC Windows) [430000 h] | 430,000 | 13997 |
| PG-11279 |  | Painting Works - Putty, Primer and 1st | 6d | 2024-12-06 A | 2024-12-13 A | PG-11277 | 100% | 2024-12-03 | 2024-12-10 | Surfa Coats (Painting) [188000 h] | 188,000 | 13999 |
| PG-11280 |  | Final Coat Painting | 18.5d | 2024-12-13 A | 2025-01-04 A | PG-11284 | 100% | 2024-12-10 | 2024-12-31 | Surfa Coats (Painting) [172000 h] | 172,000 | 14000 |
|  | 1.3.1.2.4.3.3 | **Floor Finishing Works - Civil** |  | 2024-10-21 | 2024-12-13 |  |  |  |  |  |  |  |
| PG-11281 |  | Waterproofing for sunken areas | 3d | 2024-10-21 A | 2024-10-24 A | PG-10897 | 100% | 2024-10-18 | 2024-10-22 | L&T [64000 h] | 64,000 | 14002 |
| PG-11282 |  | Floor Tiling - Wet area | 5d | 2024-11-19 A | 2024-11-25 A | PG-11281, PG-11278 | 100% | 2024-11-15 | 2024-11-21 | L&T [126000 h] | 126,000 | 14003 |
| PG-11283 |  | Floor Tiling - Dry area | 5d | 2024-11-25 A | 2024-11-29 A | PG-11282 FF+5d | 100% | 2024-11-21 | 2024-11-27 | L&T [335000 h] | 335,000 | 14004 |
| PG-11284 |  | Wooden doors | 5d | 2024-12-07 A | 2024-12-13 A | PG-11279 FF | 100% | 2024-12-04 | 2024-12-10 | Morph (Wooden Doors) [330000 h] | 330,000 | 14005 |
|  | 1.3.1.2.4.4 | **Floor 1** |  | 2024-11-06 | 2025-01-22 |  |  |  |  |  |  |  |
|  | 1.3.1.2.4.4.1 | **Ceiling Finishing works - Civil** |  | 2024-11-15 | 2025-01-22 |  |  |  |  |  |  |  |
| PG-11285 |  | Gypsum Plastering | 6d | 2024-11-15 A | 2024-11-22 A | PG-11032 | 100% | 2024-11-13 | 2024-11-20 | L&T [195000 h] | 195,000 | 14008 |
| PG-11286 |  | Cornice fixing | 4d | 2024-12-02 A | 2024-12-07 A | PG-11029 FF+6d | 100% | 2024-11-29 | 2024-12-04 | Interiors (False celing) [62000 h] | 62,000 | 14009 |
| PG-11288 |  | Toilet False ceiling | 4d | 2024-12-11 A | 2024-12-16 A | PG-11296 FF+5d | 100% | 2024-12-07 | 2024-12-12 | Interiors (False celing) [86000 h] | 86,000 | 14011 |
| PG-11287 |  | Painting Works - Putty, Primer and 1st | 6d | 2024-12-23 A | 2024-12-30 A | PG-11286, PG-11291 | 100% | 2024-12-18 | 2024-12-25 | Surfa Coats (Painting) [130000 h] | 130,000 | 14010 |
| PG-11289 |  | Final Coat Painting | 18.5d | 2024-12-30 A | 2025-01-22 A | PG-11287, PG-11298 | 100% | 2024-12-25 | 2025-01-15 | Surfa Coats (Painting) [125000 h] | 125,000 | 14012 |
|  | 1.3.1.2.4.4.2 | **Wall Finishing works - Civil** |  | 2024-11-06 | 2025-01-21 |  |  |  |  |  |  |  |
| PG-11290 |  | Balcony Railing Fixing works | 4d | 2024-11-06 A | 2024-11-12 A | PG-10902 | 100% | 2024-11-04 | 2024-11-08 | L&T [165000 h] | 165,000 | 14014 |
| PG-11292 |  | Dadoing - Wet area | 5d | 2024-11-28 A | 2024-12-04 A | PG-11027 | 100% | 2024-11-25 | 2024-11-30 | L&T [168000 h] | 168,000 | 14016 |
| PG-11291 |  | UPVC Windows & Sliding doors | 5d | 2024-12-16 A | 2024-12-23 A | PG-11290, PG-11297 FF+5d | 100% | 2024-12-12 | 2024-12-18 | Fenesta (UPVC Windows) [430000 h] | 430,000 | 14015 |
| PG-11293 |  | Painting Works - Putty, Primer and 1st | 6d | 2024-12-23 A | 2024-12-30 A | PG-11291 | 100% | 2024-12-18 | 2024-12-25 | Surfa Coats (Painting) [188000 h] | 188,000 | 14017 |
| PG-11294 |  | Final Coat Painting | 18.5d | 2024-12-30 A | 2025-01-21 A | PG-11298 | 100% | 2024-12-25 | 2025-01-15 | Surfa Coats (Painting) [172000 h] | 172,000 | 14018 |

| ID | WBS | Activity | Duration | Start | Finish | Predecessors | Complete | Planned start | Planned finish | Resources | Cost | MSP Activity ID |
| --- | --- | --- | --- | --- | --- | --- | --- | --- | --- | --- | --- | --- |
|  | 1.3.1.2.4.4.3 | **Floor Finishing Works - Civil** |  | 2024-11-06 | 2024-12-30 |  |  |  |  |  |  |  |
| PG-11295 |  | Waterproofing for sunken areas | 3d | 2024-11-06 A | 2024-11-09 A | PG-10902 | 100% | 2024-11-04 | 2024-11-07 | L&T [64000 h] | 64,000 | 14020 |
| PG-11296 |  | Floor Tiling - Wet area | 5d | 2024-12-04 A | 2024-12-10 A | PG-11295, PG-11292 | 100% | 2024-11-30 | 2024-12-06 | L&T [126000 h] | 126,000 | 14021 |
| PG-11297 |  | Floor Tiling - Dry area | 5d | 2024-12-10 A | 2024-12-16 A | PG-11296 FF+5d | 100% | 2024-12-06 | 2024-12-12 | L&T [335000 h] | 335,000 | 14022 |
| PG-11298 |  | Wooden doors | 5d | 2024-12-24 A | 2024-12-30 A | PG-11293 FF | 100% | 2024-12-19 | 2024-12-25 | Morph (Wooden Doors) [330000 h] | 330,000 | 14023 |
|  | 1.3.1.2.4.5 | **Floor 2** |  | 2024-11-22 | 2025-02-06 |  |  |  |  |  |  |  |
|  | 1.3.1.2.4.5.1 | **Ceiling Finishing works - Civil** |  | 2024-12-02 | 2025-02-06 |  |  |  |  |  |  |  |
| PG-11299 |  | Gypsum Plastering | 6d | 2024-12-02 A | 2024-12-09 A | PG-11041 | 100% | 2024-11-28 | 2024-12-05 | L&T [195000 h] | 195,000 | 14026 |
| PG-11300 |  | Cornice fixing | 4d | 2024-12-18 A | 2024-12-23 A | PG-11038 FF+6d | 100% | 2024-12-14 | 2024-12-19 | Interiors (False celing) [62000 h] | 62,000 | 14027 |
| PG-11302 |  | Toilet False ceiling | 4d | 2024-12-26 A | 2024-12-31 A | PG-11310 FF+5d | 100% | 2024-12-23 | 2024-12-27 | Interiors (False celing) [86000 h] | 86,000 | 14029 |
| PG-11301 |  | Painting Works - Putty, Primer and 1st | 6d | 2025-01-06 A | 2025-01-13 A | PG-11300, PG-11305 | 100% | 2025-01-02 | 2025-01-09 | Surfa Coats (Painting) [130000 h] | 130,000 | 14028 |
| PG-11303 |  | Final Coat Painting | 18.5d | 2025-01-14 A | 2025-02-06 A | PG-11301, PG-11312 | 100% | 2025-01-09 | 2025-01-30 | Surfa Coats (Painting) [125000 h] | 125,000 | 14030 |
|  | 1.3.1.2.4.5.2 | **Wall Finishing works - Civil** |  | 2024-11-22 | 2025-02-04 |  |  |  |  |  |  |  |
| PG-11304 |  | Balcony Railing Fixing works | 4d | 2024-11-22 A | 2024-11-27 A | PG-10907 | 100% | 2024-11-19 | 2024-11-23 | L&T [165000 h] | 165,000 | 14032 |
| PG-11306 |  | Dadoing - Wet area | 5d | 2024-12-13 A | 2024-12-19 A | PG-11036 | 100% | 2024-12-10 | 2024-12-16 | L&T [168000 h] | 168,000 | 14034 |
| PG-11305 |  | UPVC Windows & Sliding doors | 5d | 2024-12-31 A | 2025-01-06 A | PG-11304, PG-11311 FF+5d | 100% | 2024-12-27 | 2025-01-02 | Fenesta (UPVC Windows) [430000 h] | 430,000 | 14033 |
| PG-11307 |  | Painting Works - Putty, Primer and 1st | 6d | 2025-01-06 A | 2025-01-14 A | PG-11305 | 100% | 2025-01-02 | 2025-01-09 | Surfa Coats (Painting) [188000 h] | 188,000 | 14035 |
| PG-11308 |  | Final Coat Painting | 18.5d | 2025-01-14 A | 2025-02-04 A | PG-11312 | 100% | 2025-01-09 | 2025-01-30 | Surfa Coats (Painting) [172000 h] | 172,000 | 14036 |
|  | 1.3.1.2.4.5.3 | **Floor Finishing Works - Civil** |  | 2024-11-22 | 2025-01-14 |  |  |  |  |  |  |  |
| PG-11309 |  | Waterproofing for sunken areas | 3d | 2024-11-22 A | 2024-11-26 A | PG-10907 | 100% | 2024-11-19 | 2024-11-22 | L&T [64000 h] | 64,000 | 14038 |
| PG-11310 |  | Floor Tiling - Wet area | 5d | 2024-12-19 A | 2024-12-25 A | PG-11309, PG-11306 | 100% | 2024-12-16 | 2024-12-21 | L&T [126000 h] | 126,000 | 14039 |
| PG-11311 |  | Floor Tiling - Dry area | 5d | 2024-12-25 A | 2024-12-31 A | PG-11310 FF+5d | 100% | 2024-12-21 | 2024-12-27 | L&T [335000 h] | 335,000 | 14040 |
| PG-11312 |  | Wooden doors | 5d | 2025-01-08 A | 2025-01-14 A | PG-11307 FF | 100% | 2025-01-03 | 2025-01-09 | Morph (Wooden Doors) [330000 h] | 330,000 | 14041 |
|  | 1.3.1.2.4.6 | **Floor 3** |  | 2024-12-07 | 2025-02-21 |  |  |  |  |  |  |  |
|  | 1.3.1.2.4.6.1 | **Ceiling Finishing works - Civil** |  | 2024-12-17 | 2025-02-20 |  |  |  |  |  |  |  |
| PG-11313 |  | Gypsum Plastering | 6d | 2024-12-17 A | 2024-12-24 A | PG-11050 | 100% | 2024-12-13 | 2024-12-20 | L&T [195000 h] | 195,000 | 14044 |
| PG-11314 |  | Cornice fixing | 4d | 2025-01-02 A | 2025-01-07 A | PG-11047 FF+6d | 100% | 2024-12-30 | 2025-01-03 | Interiors (False celing) [62000 h] | 62,000 | 14045 |
| PG-11316 |  | Toilet False ceiling | 4d | 2025-01-11 A | 2025-01-16 A | PG-11324 FF+5d | 100% | 2025-01-07 | 2025-01-11 | Interiors (False celing) [86000 h] | 86,000 | 14047 |
| PG-11315 |  | Painting Works - Putty, Primer and 1st | 6d | 2025-01-22 A | 2025-01-29 A | PG-11314, PG-11319 | 100% | 2025-01-17 | 2025-01-24 | Surfa Coats (Painting) [130000 h] | 130,000 | 14046 |
| PG-11317 |  | Final Coat Painting | 18.5d | 2025-01-29 A | 2025-02-20 A | PG-11315, PG-11326 | 100% | 2025-01-24 | 2025-02-14 | Surfa Coats (Painting) [125000 h] | 125,000 | 14048 |

| ID | WBS | Activity | Duration | Start | Finish | Predecessors | Complete | Planned start | Planned finish | Resources | Cost | MSP Activity ID |
| --- | --- | --- | --- | --- | --- | --- | --- | --- | --- | --- | --- | --- |
|  | 1.3.1.2.4.6.2 | **Wall Finishing works - Civil** |  | 2024-12-07 | 2025-02-21 |  |  |  |  |  |  |  |
| PG-11318 |  | Balcony Railing Fixing works | 4d | 2024-12-07 A | 2024-12-12 A | PG-10912 | 100% | 2024-12-04 | 2024-12-09 | L&T [165000 h] | 165,000 | 14050 |
| PG-11320 |  | Dadoing - Wet area | 5d | 2024-12-30 A | 2025-01-04 A | PG-11045 | 100% | 2024-12-25 | 2024-12-31 | L&T [168000 h] | 168,000 | 14052 |
| PG-11319 |  | UPVC Windows & Sliding doors | 5d | 2025-01-16 A | 2025-01-22 A | PG-11318, PG-11325 FF+5d | 100% | 2025-01-11 | 2025-01-17 | Fenesta (UPVC Windows) [430000 h] | 430,000 | 14051 |
| PG-11321 |  | Painting Works - Putty, Primer and 1st | 6d | 2025-01-22 A | 2025-01-29 A | PG-11319 | 100% | 2025-01-17 | 2025-01-24 | Surfa Coats (Painting) [188000 h] | 188,000 | 14053 |
| PG-11322 |  | Final Coat Painting | 18.5d | 2025-01-29 A | 2025-02-21 A | PG-11326 | 100% | 2025-01-24 | 2025-02-14 | Surfa Coats (Painting) [172000 h] | 172,000 | 14054 |
|  | 1.3.1.2.4.6.3 | **Floor Finishing Works - Civil** |  | 2024-12-07 | 2025-01-29 |  |  |  |  |  |  |  |
| PG-11323 |  | Waterproofing for sunken areas | 3d | 2024-12-07 A | 2024-12-11 A | PG-10912 | 100% | 2024-12-04 | 2024-12-07 | L&T [64000 h] | 64,000 | 14056 |
| PG-11324 |  | Floor Tiling - Wet area | 5d | 2025-01-04 A | 2025-01-10 A | PG-11323, PG-11320 | 100% | 2024-12-31 | 2025-01-06 | L&T [126000 h] | 126,000 | 14057 |
| PG-11325 |  | Floor Tiling - Dry area | 5d | 2025-01-10 A | 2025-01-16 A | PG-11324 FF+5d | 100% | 2025-01-06 | 2025-01-11 | L&T [335000 h] | 335,000 | 14058 |
| PG-11326 |  | Wooden doors | 5d | 2025-01-23 A | 2025-01-29 A | PG-11321 FF | 100% | 2025-01-18 | 2025-01-24 | Morph (Wooden Doors) [330000 h] | 330,000 | 14059 |
|  | 1.3.1.2.4.7 | **Floor 4** |  | 2024-12-23 | 2025-03-12 |  |  |  |  |  |  |  |
|  | 1.3.1.2.4.7.1 | **Ceiling Finishing works - Civil** |  | 2025-01-01 | 2025-03-12 |  |  |  |  |  |  |  |
| PG-11327 |  | Gypsum Plastering | 6d | 2025-01-01 A | 2025-01-09 A | PG-11059 | 100% | 2024-12-28 | 2025-01-04 | L&T [195000 h] | 195,000 | 14062 |
| PG-11328 |  | Cornice fixing | 4d | 2025-01-18 A | 2025-01-23 A | PG-11056 FF+6d | 100% | 2025-01-14 | 2025-01-18 | Interiors (False celing) [62000 h] | 62,000 | 14063 |
| PG-11330 |  | Toilet False ceiling | 4d | 2025-01-27 A | 2025-01-31 A | PG-11338 FF+5d | 100% | 2025-01-22 | 2025-01-27 | Interiors (False celing) [86000 h] | 86,000 | 14065 |
| PG-11329 |  | Painting Works - Putty, Primer and 1st | 6d | 2025-02-06 A | 2025-02-13 A | PG-11328, PG-11333 | 100% | 2025-02-01 | 2025-02-08 | Surfa Coats (Painting) [130000 h] | 130,000 | 14064 |
| PG-11331 |  | Final Coat Painting | 19.5d | 2025-02-14 A | 2025-03-12 A | PG-11329, PG-11340 | 100% | 2025-02-08 | 2025-03-03 | Surfa Coats (Painting) [125000 h] | 125,000 | 14066 |
|  | 1.3.1.2.4.7.2 | **Wall Finishing works - Civil** |  | 2024-12-23 | 2025-03-12 |  |  |  |  |  |  |  |
| PG-11332 |  | Balcony Railing Fixing works | 4d | 2024-12-23 A | 2024-12-27 A | PG-10917 | 100% | 2024-12-19 | 2024-12-24 | L&T [165000 h] | 165,000 | 14068 |
| PG-11334 |  | Dadoing - Wet area | 5d | 2025-01-13 A | 2025-01-20 A | PG-11054 | 100% | 2025-01-09 | 2025-01-15 | L&T [168000 h] | 168,000 | 14070 |
| PG-11333 |  | UPVC Windows & Sliding doors | 5d | 2025-01-31 A | 2025-02-06 A | PG-11332, PG-11339 FF+5d | 100% | 2025-01-27 | 2025-02-01 | Fenesta (UPVC Windows) [430000 h] | 430,000 | 14069 |
| PG-11335 |  | Painting Works - Putty, Primer and 1st | 6d | 2025-02-06 A | 2025-02-13 A | PG-11333 | 100% | 2025-02-01 | 2025-02-08 | Surfa Coats (Painting) [188000 h] | 188,000 | 14071 |
| PG-11336 |  | Final Coat Painting | 19.5d | 2025-02-14 A | 2025-03-12 A | PG-11340 | 100% | 2025-02-08 | 2025-03-03 | Surfa Coats (Painting) [172000 h] | 172,000 | 14072 |

| ID | WBS | Activity | Duration | Start | Finish | Predecessors | Complete | Planned start | Planned finish | Resources | Cost | MSP Activity ID |
| --- | --- | --- | --- | --- | --- | --- | --- | --- | --- | --- | --- | --- |
|  | 1.3.1.2.4.7.3 | **Floor Finishing Works - Civil** |  | 2024-12-23 | 2025-02-14 |  |  |  |  |  |  |  |
| PG-11337 |  | Waterproofing for sunken areas | 3d | 2024-12-23 A | 2024-12-26 A | PG-10917 | 100% | 2024-12-19 | 2024-12-23 | L&T [64000 h] | 64,000 | 14074 |
| PG-11338 |  | Floor Tiling - Wet area | 5d | 2025-01-20 A | 2025-01-25 A | PG-11337, PG-11334 | 100% | 2025-01-15 | 2025-01-21 | L&T [126000 h] | 126,000 | 14075 |
| PG-11339 |  | Floor Tiling - Dry area | 5d | 2025-01-25 A | 2025-01-31 A | PG-11338 FF+5d | 100% | 2025-01-21 | 2025-01-27 | L&T [335000 h] | 335,000 | 14076 |
| PG-11340 |  | Wooden doors | 5d | 2025-02-07 A | 2025-02-14 A | PG-11335 FF | 100% | 2025-02-03 | 2025-02-08 | Morph (Wooden Doors) [330000 h] | 330,000 | 14077 |
|  | 1.3.1.2.4.8 | **Floor 5** |  | 2025-01-07 | 2025-03-25 |  |  |  |  |  |  |  |
|  | 1.3.1.2.4.8.1 | **Ceiling Finishing works - Civil** |  | 2025-01-17 | 2025-03-25 |  |  |  |  |  |  |  |
| PG-11341 |  | Gypsum Plastering | 6d | 2025-01-17 A | 2025-01-23 A | PG-11068 | 100% | 2025-01-13 | 2025-01-20 | L&T [195000 h] | 195,000 | 14080 |
| PG-11342 |  | Cornice fixing | 4d | 2025-02-01 A | 2025-02-06 A | PG-11065 FF+6d | 100% | 2025-01-29 | 2025-02-03 | Interiors (False celing) [62000 h] | 62,000 | 14081 |
| PG-11344 |  | Toilet False ceiling | 4d | 2025-02-12 A | 2025-02-17 A | PG-11352 FF+5d | 100% | 2025-02-06 | 2025-02-11 | Interiors (False celing) [86000 h] | 86,000 | 14083 |
| PG-11343 |  | Painting Works - Putty, Primer and 1st | 6d | 2025-02-22 A | 2025-03-01 A | PG-11342, PG-11347 | 100% | 2025-02-17 | 2025-02-24 | Surfa Coats (Painting) [130000 h] | 130,000 | 14082 |
| PG-11345 |  | Final Coat Painting | 18.5d | 2025-03-01 A | 2025-03-25 A | PG-11343, PG-11354 | 100% | 2025-02-24 | 2025-03-17 | Surfa Coats (Painting) [125000 h] | 125,000 | 14084 |
|  | 1.3.1.2.4.8.2 | **Wall Finishing works - Civil** |  | 2025-01-07 | 2025-03-22 |  |  |  |  |  |  |  |
| PG-11346 |  | Balcony Railing Fixing works | 4d | 2025-01-07 A | 2025-01-11 A | PG-10922 | 100% | 2025-01-03 | 2025-01-08 | L&T [165000 h] | 165,000 | 14086 |
| PG-11348 |  | Dadoing - Wet area | 5d | 2025-01-29 A | 2025-02-04 A | PG-11063 | 100% | 2025-01-24 | 2025-01-30 | L&T [168000 h] | 168,000 | 14088 |
| PG-11347 |  | UPVC Windows & Sliding doors | 5d | 2025-02-17 A | 2025-02-22 A | PG-11346, PG-11353 FF+5d | 100% | 2025-02-11 | 2025-02-17 | Fenesta (UPVC Windows) [430000 h] | 430,000 | 14087 |
| PG-11349 |  | Painting Works - Putty, Primer and 1st | 6d | 2025-02-22 A | 2025-03-01 A | PG-11347 | 100% | 2025-02-17 | 2025-02-24 | Surfa Coats (Painting) [188000 h] | 188,000 | 14089 |
| PG-11350 |  | Final Coat Painting | 18.5d | 2025-03-01 A | 2025-03-22 A | PG-11354 | 100% | 2025-02-24 | 2025-03-17 | Surfa Coats (Painting) [172000 h] | 172,000 | 14090 |
|  | 1.3.1.2.4.8.3 | **Floor Finishing Works - Civil** |  | 2025-01-07 | 2025-03-01 |  |  |  |  |  |  |  |
| PG-11351 |  | Waterproofing for sunken areas | 3d | 2025-01-07 A | 2025-01-10 A | PG-10922 | 100% | 2025-01-03 | 2025-01-07 | L&T [64000 h] | 64,000 | 14092 |
| PG-11352 |  | Floor Tiling - Wet area | 5d | 2025-02-04 A | 2025-02-11 A | PG-11351, PG-11348 | 100% | 2025-01-30 | 2025-02-05 | L&T [126000 h] | 126,000 | 14093 |
| PG-11353 |  | Floor Tiling - Dry area | 5d | 2025-02-11 A | 2025-02-17 A | PG-11352 FF+5d | 100% | 2025-02-05 | 2025-02-11 | L&T [335000 h] | 335,000 | 14094 |
| PG-11354 |  | Wooden doors | 5d | 2025-02-24 A | 2025-03-01 A | PG-11349 FF | 100% | 2025-02-18 | 2025-02-24 | Morph (Wooden Doors) [330000 h] | 330,000 | 14095 |
|  | 1.3.1.2.4.9 | **Floor 6** |  | 2025-01-23 | 2025-04-14 |  |  |  |  |  |  |  |
|  | 1.3.1.2.4.9.1 | **Ceiling Finishing works - Civil** |  | 2025-01-31 | 2025-04-14 |  |  |  |  |  |  |  |
| PG-11355 |  | Gypsum Plastering | 6d | 2025-01-31 A | 2025-02-08 A | PG-11077 | 100% | 2025-01-28 | 2025-02-04 | L&T [195000 h] | 195,000 | 14098 |
| PG-11356 |  | Cornice fixing | 4d | 2025-02-19 A | 2025-02-24 A | PG-11074 FF+6d | 100% | 2025-02-13 | 2025-02-18 | Interiors (False celing) [62000 h] | 62,000 | 14099 |
| PG-11358 |  | Toilet False ceiling | 4d | 2025-02-27 A | 2025-03-04 A | PG-11366 FF+5d | 100% | 2025-02-21 | 2025-02-26 | Interiors (False celing) [86000 h] | 86,000 | 14101 |
| PG-11357 |  | Painting Works - Putty, Primer and 1st | 6d | 2025-03-10 A | 2025-03-17 A | PG-11356, PG-11361 | 100% | 2025-03-04 | 2025-03-11 | Surfa Coats (Painting) [130000 h] | 130,000 | 14100 |
| PG-11359 |  | Final Coat Painting | 20.67d | 2025-03-18 A | 2025-04-14 A | PG-11357, PG-11368 | 100% | 2025-03-11 | 2025-04-03 | Surfa Coats (Painting) [125000 h] | 125,000 | 14102 |

| ID | WBS | Activity | Duration | Start | Finish | Predecessors | Complete | Planned start | Planned finish | Resources | Cost | MSP Activity ID |
| --- | --- | --- | --- | --- | --- | --- | --- | --- | --- | --- | --- | --- |
|  | 1.3.1.2.4.9.2 | **Wall Finishing works - Civil** |  | 2025-01-23 | 2025-04-10 |  |  |  |  |  |  |  |
| PG-11360 |  | Balcony Railing Fixing works | 4d | 2025-01-23 A | 2025-01-28 A | PG-10927 | 100% | 2025-01-18 | 2025-01-23 | L&T [165000 h] | 165,000 | 14104 |
| PG-11362 |  | Dadoing - Wet area | 5d | 2025-02-14 A | 2025-02-20 A | PG-11072 | 100% | 2025-02-08 | 2025-02-14 | L&T [168000 h] | 168,000 | 14106 |
| PG-11361 |  | UPVC Windows & Sliding doors | 5d | 2025-03-04 A | 2025-03-10 A | PG-11360, PG-11367 FF+5d | 100% | 2025-02-26 | 2025-03-04 | Fenesta (UPVC Windows) [430000 h] | 430,000 | 14105 |
| PG-11363 |  | Painting Works - Putty, Primer and 1st | 6d | 2025-03-10 A | 2025-03-18 A | PG-11361 | 100% | 2025-03-04 | 2025-03-11 | Surfa Coats (Painting) [188000 h] | 188,000 | 14107 |
| PG-11364 |  | Final Coat Painting | 19.5d | 2025-03-18 A | 2025-04-10 A | PG-11368 | 100% | 2025-03-11 | 2025-04-02 | Surfa Coats (Painting) [172000 h] | 172,000 | 14108 |
|  | 1.3.1.2.4.9.3 | **Floor Finishing Works - Civil** |  | 2025-01-23 | 2025-03-18 |  |  |  |  |  |  |  |
| PG-11365 |  | Waterproofing for sunken areas | 3d | 2025-01-23 A | 2025-01-27 A | PG-10927 | 100% | 2025-01-18 | 2025-01-22 | L&T [64000 h] | 64,000 | 14110 |
| PG-11366 |  | Floor Tiling - Wet area | 5d | 2025-02-20 A | 2025-02-26 A | PG-11365, PG-11362 | 100% | 2025-02-14 | 2025-02-20 | L&T [126000 h] | 126,000 | 14111 |
| PG-11367 |  | Floor Tiling - Dry area | 5d | 2025-02-26 A | 2025-03-04 A | PG-11366 FF+5d | 100% | 2025-02-20 | 2025-02-26 | L&T [335000 h] | 335,000 | 14112 |
| PG-11368 |  | Wooden doors | 5d | 2025-03-12 A | 2025-03-18 A | PG-11363 FF | 100% | 2025-03-05 | 2025-03-11 | Morph (Wooden Doors) [330000 h] | 330,000 | 14113 |
|  | 1.3.1.2.4.10 | **Floor 7** |  | 2025-02-07 | 2025-04-25 |  |  |  |  |  |  |  |
|  | 1.3.1.2.4.10.1 | **Ceiling Finishing works - Civil** |  | 2025-02-17 | 2025-04-25 |  |  |  |  |  |  |  |
| PG-11369 |  | Gypsum Plastering | 6d | 2025-02-17 A | 2025-02-25 A | PG-11086 | 100% | 2025-02-12 | 2025-02-19 | L&T [195000 h] | 195,000 | 14116 |
| PG-11370 |  | Cornice fixing | 4d | 2025-03-06 A | 2025-03-11 A | PG-11083 FF+6d | 100% | 2025-02-28 | 2025-03-05 | Interiors (False celing) [62000 h] | 62,000 | 14117 |
| PG-11372 |  | Toilet False ceiling | 4d | 2025-03-13 A | 2025-03-19 A | PG-11380 FF+5d | 100% | 2025-03-08 | 2025-03-13 | Interiors (False celing) [86000 h] | 86,000 | 14119 |
| PG-11371 |  | Painting Works - Putty, Primer and 1st | 6d | 2025-03-24 A | 2025-04-01 A | PG-11370, PG-11375 | 100% | 2025-03-25 | 2025-04-01 | Surfa Coats (Painting) [130000 h] | 130,000 | 14118 |
| PG-11373 |  | Final Coat Painting | 19.5d | 2025-04-01 A | 2025-04-25 A | PG-11371, PG-11382 | 100% | 2025-03-31 | 2025-04-23 | Surfa Coats (Painting) [125000 h] | 125,000 | 14120 |
|  | 1.3.1.2.4.10.2 | **Wall Finishing works - Civil** |  | 2025-02-07 | 2025-04-24 |  |  |  |  |  |  |  |
| PG-11374 |  | Balcony Railing Fixing works | 4d | 2025-02-07 A | 2025-02-13 A | PG-10932 | 100% | 2025-02-03 | 2025-02-07 | L&T [165000 h] | 165,000 | 14122 |
| PG-11376 |  | Dadoing - Wet area | 5d | 2025-02-28 A | 2025-03-06 A | PG-11081 | 100% | 2025-02-24 | 2025-03-01 | L&T [168000 h] | 168,000 | 14124 |
| PG-11375 |  | UPVC Windows & Sliding doors | 5d | 2025-03-19 A | 2025-03-24 A | PG-11374, PG-11381 FF+5d | 100% | 2025-03-13 | 2025-03-19 | Fenesta (UPVC Windows) [430000 h] | 430,000 | 14123 |
| PG-11377 |  | Painting Works - Putty, Primer and 1st | 6d | 2025-03-24 A | 2025-04-01 A | PG-11375 | 100% | 2025-03-25 | 2025-04-01 | Surfa Coats (Painting) [188000 h] | 188,000 | 14125 |
| PG-11378 |  | Final Coat Painting | 18.67d | 2025-04-01 A | 2025-04-24 A | PG-11382 | 100% | 2025-03-31 | 2025-04-22 | Surfa Coats (Painting) [172000 h] | 172,000 | 14126 |

| ID | WBS | Activity | Duration | Start | Finish | Predecessors | Complete | Remaining | Planned start | Planned finish | Total float | Free float | Resources | Cost | MSP Activity ID |
| --- | --- | --- | --- | --- | --- | --- | --- | --- | --- | --- | --- | --- | --- | --- | --- |
|  | 1.3.1.2.4.10.3 | **Floor Finishing Works - Civil** |  | 2025-02-07 | 2025-04-01 |  |  |  |  |  |  |  |  |  |  |
| PG-11379 |  | Waterproofing for sunken areas | 3d | 2025-02-07 A | 2025-02-11 A | PG-10932 | 100% |  | 2025-02-03 | 2025-02-06 |  |  | L&T [64000 h] | 64,000 | 14128 |
| PG-11380 |  | Floor Tiling - Wet area | 5d | 2025-03-06 A | 2025-03-12 A | PG-11379, PG-11376 | 100% |  | 2025-03-01 | 2025-03-07 |  |  | L&T [126000 h] | 126,000 | 14129 |
| PG-11381 |  | Floor Tiling - Dry area | 5d | 2025-03-12 A | 2025-03-19 A | PG-11380 FF+5d | 100% |  | 2025-03-07 | 2025-03-13 |  |  | L&T [335000 h] | 335,000 | 14130 |
| PG-11382 |  | Wooden doors | 5d | 2025-03-26 A | 2025-04-01 A | PG-11377 FF | 100% |  |  |  |  |  | Morph (Wooden Doors) [330000 h] | 330,000 | 14131 |
|  | 1.3.1.2.4.11 | **Floor 8** |  | 2025-02-22 | 2025-05-15 |  |  |  |  |  |  |  |  |  |  |
|  | 1.3.1.2.4.11.1 | **Ceiling Finishing works - Civil** |  | 2025-03-04 | 2025-05-15 |  |  |  |  |  |  |  |  |  |  |
| PG-11383 |  | Gypsum Plastering | 6d | 2025-03-04 A | 2025-03-11 A | PG-11095 | 100% |  | 2025-02-27 | 2025-03-06 |  |  | L&T [195000 h] | 195,000 | 14134 |
| PG-11384 |  | Cornice fixing | 4d | 2025-03-21 A | 2025-03-26 A | PG-11092 FF+6d | 100% |  | 2025-03-15 | 2025-03-20 |  |  | Interiors (False celing) [62000 h] | 62,000 | 14135 |
| PG-11386 |  | Toilet False ceiling | 4d | 2025-04-01 A | 2025-04-04 A | PG-11394 FF+5d | 100% |  | 2025-03-31 | 2025-04-04 |  |  | Interiors (False celing) [86000 h] | 86,000 | 14137 |
| PG-11385 |  | Painting Works - Putty, Primer and 1st | 6d | 2025-04-11 A | 2025-04-18 A | PG-11384, PG-11389 | 100% |  | 2025-04-10 | 2025-04-17 |  |  | Surfa Coats (Painting) [130000 h] | 130,000 | 14136 |
| PG-11387 |  | Final Coat Painting | 20.67d | 2025-04-18 A | 2025-05-15 | PG-11385, PG-11396 | 17% | 17.14d | 2025-04-17 | 2025-05-10 | 422.53d | 33.19d | Surfa Coats (Painting) [125000 h] | 125,000 | 14138 |
|  | 1.3.1.2.4.11.2 | **Wall Finishing works - Civil** |  | 2025-02-22 | 2025-05-13 |  |  |  |  |  |  |  |  |  |  |
| PG-11388 |  | Balcony Railing Fixing works | 4d | 2025-02-22 A | 2025-02-28 A | PG-10937 | 100% |  | 2025-02-18 | 2025-02-22 |  |  | L&T [165000 h] | 165,000 | 14140 |
| PG-11390 |  | Dadoing - Wet area | 5d | 2025-03-18 A | 2025-03-24 A | PG-11090 | 100% |  | 2025-03-11 | 2025-03-17 |  |  | L&T [168000 h] | 168,000 | 14142 |
| PG-11389 |  | UPVC Windows & Sliding doors | 5d | 2025-04-04 A | 2025-04-11 A | PG-11388, PG-11395 FF+5d | 100% |  | 2025-04-04 | 2025-04-10 |  |  | Fenesta (UPVC Windows) [430000 h] | 430,000 | 14141 |
| PG-11391 |  | Painting Works - Putty, Primer and 1st | 6d | 2025-04-11 A | 2025-04-18 A | PG-11389 | 100% |  | 2025-04-10 | 2025-04-17 |  |  | Surfa Coats (Painting) [188000 h] | 188,000 | 14143 |
| PG-11392 |  | Final Coat Painting | 19.5d | 2025-04-18 A | 2025-05-13 | PG-11396 | 20% | 15.66d | 2025-04-17 | 2025-05-09 | 389.34d | 0d | Surfa Coats (Painting) [172000 h] | 172,000 | 14144 |
|  | 1.3.1.2.4.11.3 | **Floor Finishing Works - Civil** |  | 2025-02-22 | 2025-04-18 |  |  |  |  |  |  |  |  |  |  |
| PG-11393 |  | Waterproofing for sunken areas | 3d | 2025-02-22 A | 2025-02-26 A | PG-10937 | 100% |  | 2025-02-18 | 2025-02-21 |  |  | L&T [64000 h] | 64,000 | 14146 |
| PG-11394 |  | Floor Tiling - Wet area | 5d | 2025-03-24 A | 2025-03-31 A | PG-11393, PG-11390 | 100% |  | 2025-03-24 | 2025-03-28 |  |  | L&T [126000 h] | 126,000 | 14147 |
| PG-11395 |  | Floor Tiling - Dry area | 5d | 2025-03-31 A | 2025-04-04 A | PG-11394 FF+5d | 100% |  | 2025-03-29 | 2025-04-04 |  |  | L&T [335000 h] | 335,000 | 14148 |
| PG-11396 |  | Wooden doors | 5d | 2025-04-12 A | 2025-04-18 A | PG-11391 FF | 100% |  | 2025-04-11 | 2025-04-17 |  |  | Morph (Wooden Doors) [330000 h] | 330,000 | 14149 |
|  | 1.3.1.2.4.12 | **Floor 9** |  | 2025-03-11 | 2025-05-22 |  |  |  |  |  |  |  |  |  |  |
|  | 1.3.1.2.4.12.1 | **Ceiling Finishing works - Civil** |  | 2025-03-21 | 2025-05-22 |  |  |  |  |  |  |  |  |  |  |
| PG-11397 |  | Gypsum Plastering | 6d | 2025-03-21 A | 2025-03-28 A | PG-11104 | 100% |  | 2025-03-15 | 2025-03-22 |  |  | L&T [195000 h] | 195,000 | 14152 |
| PG-11398 |  | Cornice fixing | 4d | 2025-04-07 A | 2025-04-11 A | PG-11101 FF+6d | 100% |  |  |  |  |  | Interiors (False celing) [62000 h] | 62,000 | 14153 |
| PG-11400 |  | Toilet False ceiling | 4d | 2025-04-14 A | 2025-04-18 A | PG-11408 FF+5d | 100% |  | 2025-04-12 | 2025-04-17 |  |  | Interiors (False celing) [86000 h] | 86,000 | 14155 |
| PG-11399 |  | Painting Works - Putty, Primer and 1st | 6d | 2025-04-24 A | 2025-04-30 | PG-11398, PG-11403 | 21% | 4.75d | 2025-04-24 | 2025-05-01 | 416.08d | 0.23d | Surfa Coats (Painting) [130000 h] | 130,000 | 14154 |
| PG-11401 |  | Final Coat Painting | 18.67d | 2025-04-30 | 2025-05-22 | PG-11399, PG-11410 |  |  |  |  | 415.85d | 34.5d | Surfa Coats (Painting) [125000 h] | 125,000 | 14156 |

| ID | WBS | Activity | Duration | Start | Finish | Predecessors | Complete | Remaining | Planned start | Planned finish | Total float | Free float | Resources | Cost | MSP Activity ID |
| --- | --- | --- | --- | --- | --- | --- | --- | --- | --- | --- | --- | --- | --- | --- | --- |
|  | 1.3.1.2.4.12.2 | **Wall Finishing works - Civil** |  | 2025-03-11 | 2025-05-22 |  |  |  |  |  |  |  |  |  |  |
| PG-11402 |  | Balcony Railing Fixing works | 4d | 2025-03-11 A | 2025-03-15 A | PG-10942 | 100% |  | 2025-03-05 | 2025-03-10 |  |  | L&T [165000 h] | 165,000 | 14158 |
| PG-11404 |  | Dadoing - Wet area | 5d | 2025-03-31 A | 2025-04-07 A | PG-11099 | 100% |  | 2025-04-01 | 2025-04-07 |  |  | L&T [168000 h] | 168,000 | 14160 |
| PG-11403 |  | UPVC Windows & Sliding doors | 5d | 2025-04-18 A | 2025-04-24 A | PG-11402, PG-11409 FF+5d | 100% |  | 2025-04-17 | 2025-04-23 |  |  | Fenesta (UPVC Windows) [430000 h] | 430,000 | 14159 |
| PG-11405 |  | Painting Works - Putty, Primer and 1st | 6d | 2025-04-24 A | 2025-04-30 | PG-11403 | 17% | 4.98d | 2025-04-24 | 2025-05-01 | 381.35d | 0d | Surfa Coats (Painting) [188000 h] | 188,000 | 14161 |
| PG-11406 |  | Final Coat Painting | 18.5d | 2025-04-30 | 2025-05-22 | PG-11410 |  |  |  |  | 381.35d | 0d | Surfa Coats (Painting) [172000 h] | 172,000 | 14162 |
|  | 1.3.1.2.4.12.3 | **Floor Finishing Works - Civil** |  | 2025-03-11 | 2025-04-30 |  |  |  |  |  |  |  |  |  |  |
| PG-11407 |  | Waterproofing for sunken areas | 3d | 2025-03-11 A | 2025-03-14 A | PG-10942 | 100% |  | 2025-03-05 | 2025-03-08 |  |  | L&T [64000 h] | 64,000 | 14164 |
| PG-11408 |  | Floor Tiling - Wet area | 5d | 2025-04-07 A | 2025-04-12 A | PG-11407, PG-11404 | 100% |  | 2025-04-05 | 2025-04-11 |  |  | L&T [126000 h] | 126,000 | 14165 |
| PG-11409 |  | Floor Tiling - Dry area | 5d | 2025-04-12 A | 2025-04-18 A | PG-11408 FF+5d | 100% |  | 2025-04-11 | 2025-04-17 |  |  | L&T [335000 h] | 335,000 | 14166 |
| PG-11410 |  | Wooden doors | 5d | 2025-04-25 A | 2025-04-30 | PG-11405 FF | 3% | 4.85d | 2025-04-25 | 2025-05-01 | 381.35d | 0d | Morph (Wooden Doors) [330000 h] | 330,000 | 14167 |
|  | 1.3.1.2.4.13 | **Floor 10** |  | 2025-03-27 | 2025-06-07 |  |  |  |  |  |  |  |  |  |  |
|  | 1.3.1.2.4.13.1 | **Ceiling Finishing works - Civil** |  | 2025-04-05 | 2025-06-07 |  |  |  |  |  |  |  |  |  |  |
| PG-11411 |  | Gypsum Plastering | 6d | 2025-04-05 A | 2025-04-12 A | PG-11113 | 100% |  | 2025-04-04 | 2025-04-11 |  |  | L&T [195000 h] | 195,000 | 14170 |
| PG-11412 |  | Cornice fixing | 4d | 2025-04-22 A | 2025-04-26 | PG-11110 FF+6d | 84% | 0.64d |  |  | 414.67d | 11.4d | Interiors (False celing) [62000 h] | 62,000 | 14171 |
| PG-11414 |  | Toilet False ceiling | 4d | 2025-04-29 | 2025-05-03 | PG-11422 FF+5d |  |  |  |  | 392.76d | 24.83d | Interiors (False celing) [86000 h] | 86,000 | 14173 |
| PG-11413 |  | Painting Works - Putty, Primer and 1st | 6d | 2025-05-09 | 2025-05-16 | PG-11412, PG-11417 |  |  |  |  | 403.26d | 0d | Surfa Coats (Painting) [130000 h] | 130,000 | 14172 |
| PG-11415 |  | Final Coat Painting | 18.67d | 2025-05-16 | 2025-06-07 | PG-11413, PG-11424 |  |  |  |  | 403.26d | 35.33d | Surfa Coats (Painting) [125000 h] | 125,000 | 14174 |
|  | 1.3.1.2.4.13.2 | **Wall Finishing works - Civil** |  | 2025-03-27 | 2025-06-06 |  |  |  |  |  |  |  |  |  |  |
| PG-11416 |  | Balcony Railing Fixing works | 4d | 2025-03-27 A | 2025-04-01 A | PG-10947 | 100% |  | 2025-03-26 | 2025-03-31 |  |  | L&T [165000 h] | 165,000 | 14176 |
| PG-11418 |  | Dadoing - Wet area | 5d | 2025-04-17 A | 2025-04-23 A | PG-11108 | 100% |  |  |  |  |  | L&T [168000 h] | 168,000 | 14178 |
| PG-11417 |  | UPVC Windows & Sliding doors | 5d | 2025-05-03 | 2025-05-09 | PG-11416, PG-11423 FF+5d |  |  |  |  | 367.93d | 0d | Fenesta (UPVC Windows) [430000 h] | 430,000 | 14177 |
| PG-11419 |  | Painting Works - Putty, Primer and 1st | 6d | 2025-05-09 | 2025-05-16 | PG-11417 |  |  |  |  | 367.93d | 0d | Surfa Coats (Painting) [188000 h] | 188,000 | 14179 |
| PG-11420 |  | Final Coat Painting | 18.33d | 2025-05-16 | 2025-06-06 | PG-11424 |  |  |  |  | 367.93d | 0d | Surfa Coats (Painting) [172000 h] | 172,000 | 14180 |

| ID | WBS | Activity | Duration | Start | Finish | Predecessors | Complete | Remaining | Planned start | Planned finish | Total float | Free float | Resources | Cost | MSP Activity ID |
| --- | --- | --- | --- | --- | --- | --- | --- | --- | --- | --- | --- | --- | --- | --- | --- |
|  | 1.3.1.2.4.13.3 | **Floor Finishing Works - Civil** |  | 2025-03-27 | 2025-05-16 |  |  |  |  |  |  |  |  |  |  |
| PG-11421 |  | Waterproofing for sunken areas | 3d | 2025-03-27 A | 2025-03-31 A | PG-10947 | 100% |  | 2025-03-26 | 2025-03-29 |  |  | L&T [64000 h] | 64,000 | 14182 |
| PG-11422 |  | Floor Tiling - Wet area | 5d | 2025-04-23 A | 2025-04-28 | PG-11421, PG-11418 | 49% | 2.57d | 2025-04-22 | 2025-04-28 | 367.93d | 0d | L&T [126000 h] | 126,000 | 14183 |
| PG-11423 |  | Floor Tiling - Dry area | 5d | 2025-04-28 | 2025-05-03 | PG-11422 FF+5d |  |  |  |  | 367.93d | 0d | L&T [335000 h] | 335,000 | 14184 |
| PG-11424 |  | Wooden doors | 5d | 2025-05-10 | 2025-05-16 | PG-11419 FF |  |  |  |  | 367.93d | 0d | Morph (Wooden Doors) [330000 h] | 330,000 | 14185 |
|  | 1.3.1.2.4.14 | **Floor 11** |  | 2025-04-09 | 2025-06-21 |  |  |  |  |  |  |  |  |  |  |
|  | 1.3.1.2.4.14.1 | **Ceiling Finishing works - Civil** |  | 2025-04-18 | 2025-06-21 |  |  |  |  |  |  |  |  |  |  |
| PG-11425 |  | Gypsum Plastering | 6d | 2025-04-18 A | 2025-04-25 A | PG-11122 | 100% |  | 2025-04-17 | 2025-04-24 |  |  | L&T [195000 h] | 195,000 | 14188 |
| PG-11426 |  | Cornice fixing | 4d | 2025-05-05 | 2025-05-08 | PG-11119 FF+6d |  |  |  |  | 403.83d | 12.75d | Interiors (False celing) [62000 h] | 62,000 | 14189 |
| PG-11428 |  | Toilet False ceiling | 4d | 2025-05-13 | 2025-05-17 | PG-11436 FF+5d |  |  |  |  | 380.58d | 24.83d | Interiors (False celing) [86000 h] | 86,000 | 14191 |
| PG-11427 |  | Painting Works - Putty, Primer and 1st | 6d | 2025-05-23 | 2025-05-30 | PG-11426, PG-11431 |  |  |  |  | 391.08d | 0d | Surfa Coats (Painting) [130000 h] | 130,000 | 14190 |
| PG-11429 |  | Final Coat Painting | 18.67d | 2025-05-30 | 2025-06-21 | PG-11427, PG-11438 |  |  |  |  | 391.08d | 35.33d | Surfa Coats (Painting) [125000 h] | 125,000 | 14192 |
|  | 1.3.1.2.4.14.2 | **Wall Finishing works - Civil** |  | 2025-04-09 | 2025-06-21 |  |  |  |  |  |  |  |  |  |  |
| PG-11430 |  | Balcony Railing Fixing works | 4d | 2025-04-09 A | 2025-04-14 A | PG-10952 | 100% |  |  |  |  |  | L&T [165000 h] | 165,000 | 14194 |
| PG-11432 |  | Dadoing - Wet area | 5d | 2025-04-30 | 2025-05-06 | PG-11117 |  |  |  |  | 355.75d | 0d | L&T [168000 h] | 168,000 | 14196 |
| PG-11431 |  | UPVC Windows & Sliding doors | 5d | 2025-05-17 | 2025-05-23 | PG-11430, PG-11437 FF+5d |  |  |  |  | 355.75d | 0d | Fenesta (UPVC Windows) [430000 h] | 430,000 | 14195 |
| PG-11433 |  | Painting Works - Putty, Primer and 1st | 6d | 2025-05-23 | 2025-05-30 | PG-11431 |  |  |  |  | 355.75d | 0d | Surfa Coats (Painting) [188000 h] | 188,000 | 14197 |
| PG-11434 |  | Final Coat Painting | 18.33d | 2025-05-30 | 2025-06-21 | PG-11438 |  |  |  |  | 355.75d | 0d | Surfa Coats (Painting) [172000 h] | 172,000 | 14198 |
|  | 1.3.1.2.4.14.3 | **Floor Finishing Works - Civil** |  | 2025-04-09 | 2025-05-30 |  |  |  |  |  |  |  |  |  |  |
| PG-11435 |  | Waterproofing for sunken areas | 3d | 2025-04-09 A | 2025-04-12 A | PG-10952 | 100% |  |  |  |  |  | L&T [64000 h] | 64,000 | 14200 |
| PG-11436 |  | Floor Tiling - Wet area | 5d | 2025-05-06 | 2025-05-12 | PG-11435, PG-11432 |  |  |  |  | 355.75d | 0d | L&T [126000 h] | 126,000 | 14201 |
| PG-11437 |  | Floor Tiling - Dry area | 5d | 2025-05-12 | 2025-05-17 | PG-11436 FF+5d |  |  |  |  | 355.75d | 0d | L&T [335000 h] | 335,000 | 14202 |
| PG-11438 |  | Wooden doors | 5d | 2025-05-24 | 2025-05-30 | PG-11433 FF |  |  |  |  | 355.75d | 0d | Morph (Wooden Doors) [330000 h] | 330,000 | 14203 |
|  | 1.3.1.2.4.15 | **Floor 12** |  | 2025-04-22 | 2025-07-03 |  |  |  |  |  |  |  |  |  |  |
|  | 1.3.1.2.4.15.1 | **Ceiling Finishing works - Civil** |  | 2025-04-30 | 2025-07-03 |  |  |  |  |  |  |  |  |  |  |
| PG-11439 |  | Gypsum Plastering | 6d | 2025-04-30 | 2025-05-07 | PG-11131 |  |  |  |  | 393.14d | 0d | L&T [195000 h] | 195,000 | 14206 |
| PG-11440 |  | Cornice fixing | 4d | 2025-05-16 | 2025-05-21 | PG-11128 FF+6d |  |  |  |  | 393.14d | 12.37d | Interiors (False celing) [62000 h] | 62,000 | 14207 |
| PG-11442 |  | Toilet False ceiling | 4d | 2025-05-26 | 2025-05-30 | PG-11450 FF+5d |  |  |  |  | 371.27d | 26d | Interiors (False celing) [86000 h] | 86,000 | 14209 |
| PG-11441 |  | Painting Works - Putty, Primer and 1st | 6d | 2025-06-05 | 2025-06-12 | PG-11440, PG-11445 |  |  |  |  | 380.77d | 0d | Surfa Coats (Painting) [130000 h] | 130,000 | 14208 |
| PG-11443 |  | Final Coat Painting | 18.67d | 2025-06-12 | 2025-07-03 | PG-11441, PG-11452 |  |  |  |  | 380.77d | 35.5d | Surfa Coats (Painting) [125000 h] | 125,000 | 14210 |

| ID | WBS | Activity | Duration | Start | Finish | Predecessors | Complete | Remaining | Total float | Free float | Resources | Cost | MSP Activity ID |
| --- | --- | --- | --- | --- | --- | --- | --- | --- | --- | --- | --- | --- | --- |
|  | 1.3.1.2.4.15.2 | **Wall Finishing works - Civil** |  | 2025-04-22 | 2025-07-03 |  |  |  |  |  |  |  |  |
| PG-11444 |  | Balcony Railing Fixing works | 4d | 2025-04-22 A | 2025-04-26 | PG-10957 | 74% | 1.04d | 374.46d | 29.19d | L&T [165000 h] | 165,000 | 14212 |
| PG-11446 |  | Dadoing - Wet area | 5d | 2025-05-13 | 2025-05-19 | PG-11126 |  |  | 345.27d | 0d | L&T [168000 h] | 168,000 | 14214 |
| PG-11445 |  | UPVC Windows & Sliding doors | 5d | 2025-05-30 | 2025-06-05 | PG-11444, PG-11451 FF+5d |  |  | 345.27d | 0d | Fenesta (UPVC Windows) [430000 h] | 430,000 | 14213 |
| PG-11447 |  | Painting Works - Putty, Primer and 1st | 6d | 2025-06-05 | 2025-06-12 | PG-11445 |  |  | 345.27d | 0d | Surfa Coats (Painting) [188000 h] | 188,000 | 14215 |
| PG-11448 |  | Final Coat Painting | 18.5d | 2025-06-12 | 2025-07-03 | PG-11452 |  |  | 345.27d | 0d | Surfa Coats (Painting) [172000 h] | 172,000 | 14216 |
|  | 1.3.1.2.4.15.3 | **Floor Finishing Works - Civil** |  | 2025-04-22 | 2025-06-12 |  |  |  |  |  |  |  |  |
| PG-11449 |  | Waterproofing for sunken areas | 3d | 2025-04-22 A | 2025-04-25 A | PG-10957 | 100% |  |  |  | L&T [64000 h] | 64,000 | 14218 |
| PG-11450 |  | Floor Tiling - Wet area | 5d | 2025-05-19 | 2025-05-24 | PG-11449, PG-11446 |  |  | 345.27d | 0d | L&T [126000 h] | 126,000 | 14219 |
| PG-11451 |  | Floor Tiling - Dry area | 5d | 2025-05-24 | 2025-05-30 | PG-11450 FF+5d |  |  | 345.27d | 0d | L&T [335000 h] | 335,000 | 14220 |
| PG-11452 |  | Wooden doors | 5d | 2025-06-06 | 2025-06-12 | PG-11447 FF |  |  | 345.27d | 0d | Morph (Wooden Doors) [330000 h] | 330,000 | 14221 |
|  | 1.3.1.2.4.16 | **Floor 13** |  | 2025-05-03 | 2025-07-17 |  |  |  |  |  |  |  |  |
|  | 1.3.1.2.4.16.1 | **Ceiling Finishing works - Civil** |  | 2025-05-13 | 2025-07-17 |  |  |  |  |  |  |  |  |
| PG-11453 |  | Gypsum Plastering | 6d | 2025-05-13 | 2025-05-20 | PG-11140 |  |  | 381.57d | 0d | L&T [195000 h] | 195,000 | 14224 |
| PG-11454 |  | Cornice fixing | 4d | 2025-05-29 | 2025-06-03 | PG-11137 FF+6d |  |  | 381.57d | 12.33d | Interiors (False celing) [62000 h] | 62,000 | 14225 |
| PG-11456 |  | Toilet False ceiling | 4d | 2025-06-06 | 2025-06-11 | PG-11464 FF+5d |  |  | 360.57d | 26d | Interiors (False celing) [86000 h] | 86,000 | 14227 |
| PG-11455 |  | Painting Works - Putty, Primer and 1st | 6d | 2025-06-17 | 2025-06-24 | PG-11454, PG-11459 |  |  | 369.24d | 0d | Surfa Coats (Painting) [130000 h] | 130,000 | 14226 |
| PG-11457 |  | Final Coat Painting | 19.5d | 2025-06-24 | 2025-07-17 | PG-11455, PG-11466 |  |  | 369.24d | 34.67d | Surfa Coats (Painting) [125000 h] | 125,000 | 14228 |
|  | 1.3.1.2.4.16.2 | **Wall Finishing works - Civil** |  | 2025-05-03 | 2025-07-17 |  |  |  |  |  |  |  |  |
| PG-11458 |  | Balcony Railing Fixing works | 4d | 2025-05-03 | 2025-05-08 | PG-10962 |  |  | 363.57d | 29d | L&T [165000 h] | 165,000 | 14230 |
| PG-11460 |  | Dadoing - Wet area | 5d | 2025-05-24 | 2025-05-30 | PG-11135 |  |  | 334.57d | 0d | L&T [168000 h] | 168,000 | 14232 |
| PG-11459 |  | UPVC Windows & Sliding doors | 5d | 2025-06-11 | 2025-06-17 | PG-11458, PG-11465 FF+5d |  |  | 334.57d | 0d | Fenesta (UPVC Windows) [430000 h] | 430,000 | 14231 |
| PG-11461 |  | Painting Works - Putty, Primer and 1st | 6d | 2025-06-17 | 2025-06-24 | PG-11459 |  |  | 334.57d | 0d | Surfa Coats (Painting) [188000 h] | 188,000 | 14233 |
| PG-11462 |  | Final Coat Painting | 19.5d | 2025-06-24 | 2025-07-17 | PG-11466 |  |  | 334.57d | 0d | Surfa Coats (Painting) [172000 h] | 172,000 | 14234 |

| ID | WBS | Activity | Duration | Start | Finish | Predecessors | Total float | Free float | Resources | Cost | MSP Activity ID |
| --- | --- | --- | --- | --- | --- | --- | --- | --- | --- | --- | --- |
|  | 1.3.1.2.4.16.3 | **Floor Finishing Works - Civil** |  | 2025-05-03 | 2025-06-24 |  |  |  |  |  |  |
| PG-11463 |  | Waterproofing for sunken areas | 3d | 2025-05-03 | 2025-05-07 | PG-10962 | 354.57d | 20d | L&T [64000 h] | 64,000 | 14236 |
| PG-11464 |  | Floor Tiling - Wet area | 5d | 2025-05-30 | 2025-06-05 | PG-11463, PG-11460 | 334.57d | 0d | L&T [126000 h] | 126,000 | 14237 |
| PG-11465 |  | Floor Tiling - Dry area | 5d | 2025-06-05 | 2025-06-11 | PG-11464 FF+5d | 334.57d | 0d | L&T [335000 h] | 335,000 | 14238 |
| PG-11466 |  | Wooden doors | 5d | 2025-06-18 | 2025-06-24 | PG-11461 FF | 334.57d | 0d | Morph (Wooden Doors) [330000 h] | 330,000 | 14239 |
|  | 1.3.1.2.4.17 | **Floor 14** |  | 2025-05-16 | 2025-07-30 |  |  |  |  |  |  |
|  | 1.3.1.2.4.17.1 | **Ceiling Finishing works - Civil** |  | 2025-05-27 | 2025-07-30 |  |  |  |  |  |  |
| PG-11467 |  | Gypsum Plastering | 6d | 2025-05-27 | 2025-06-03 | PG-11149 | 369.57d | 0d | L&T [195000 h] | 195,000 | 14242 |
| PG-11468 |  | Cornice fixing | 4d | 2025-06-12 | 2025-06-17 | PG-11146 FF+6d | 369.57d | 11.33d | Interiors (False celing) [62000 h] | 62,000 | 14243 |
| PG-11470 |  | Toilet False ceiling | 4d | 2025-06-19 | 2025-06-24 | PG-11478 FF+5d | 350.57d | 27d | Interiors (False celing) [86000 h] | 86,000 | 14245 |
| PG-11469 |  | Painting Works - Putty, Primer and 1st | 6d | 2025-06-30 | 2025-07-07 | PG-11468, PG-11473 | 358.24d | 0d | Surfa Coats (Painting) [130000 h] | 130,000 | 14244 |
| PG-11471 |  | Final Coat Painting | 19.5d | 2025-07-07 | 2025-07-30 | PG-11469, PG-11480 | 358.24d | 34.67d | Surfa Coats (Painting) [125000 h] | 125,000 | 14246 |
|  | 1.3.1.2.4.17.2 | **Wall Finishing works - Civil** |  | 2025-05-16 | 2025-07-30 |  |  |  |  |  |  |
| PG-11472 |  | Balcony Railing Fixing works | 4d | 2025-05-16 | 2025-05-21 | PG-10967 | 352.57d | 29d | L&T [165000 h] | 165,000 | 14248 |
| PG-11474 |  | Dadoing - Wet area | 5d | 2025-06-06 | 2025-06-12 | PG-11144 | 323.57d | 0d | L&T [168000 h] | 168,000 | 14250 |
| PG-11473 |  | UPVC Windows & Sliding doors | 5d | 2025-06-24 | 2025-06-30 | PG-11472, PG-11479 FF+5d | 323.57d | 0d | Fenesta (UPVC Windows) [430000 h] | 430,000 | 14249 |
| PG-11475 |  | Painting Works - Putty, Primer and 1st | 6d | 2025-06-30 | 2025-07-07 | PG-11473 | 323.57d | 0d | Surfa Coats (Painting) [188000 h] | 188,000 | 14251 |
| PG-11476 |  | Final Coat Painting | 19.5d | 2025-07-07 | 2025-07-30 | PG-11480 | 323.57d | 0d | Surfa Coats (Painting) [172000 h] | 172,000 | 14252 |
|  | 1.3.1.2.4.17.3 | **Floor Finishing Works - Civil** |  | 2025-05-16 | 2025-07-07 |  |  |  |  |  |  |
| PG-11477 |  | Waterproofing for sunken areas | 3d | 2025-05-16 | 2025-05-20 | PG-10967 | 343.57d | 20d | L&T [64000 h] | 64,000 | 14254 |
| PG-11478 |  | Floor Tiling - Wet area | 5d | 2025-06-12 | 2025-06-18 | PG-11477, PG-11474 | 323.57d | 0d | L&T [126000 h] | 126,000 | 14255 |
| PG-11479 |  | Floor Tiling - Dry area | 5d | 2025-06-18 | 2025-06-24 | PG-11478 FF+5d | 323.57d | 0d | L&T [335000 h] | 335,000 | 14256 |
| PG-11480 |  | Wooden doors | 5d | 2025-07-01 | 2025-07-07 | PG-11475 FF | 323.57d | 0d | Morph (Wooden Doors) [330000 h] | 330,000 | 14257 |
|  | 1.3.1.2.4.18 | **Floor 15** |  | 2025-05-29 | 2025-08-11 |  |  |  |  |  |  |
|  | 1.3.1.2.4.18.1 | **Ceiling Finishing works - Civil** |  | 2025-06-07 | 2025-08-11 |  |  |  |  |  |  |
| PG-11481 |  | Gypsum Plastering | 6d | 2025-06-07 | 2025-06-14 | PG-11158 | 360.24d | 0d | L&T [195000 h] | 195,000 | 14260 |
| PG-11482 |  | Cornice fixing | 4d | 2025-06-24 | 2025-06-28 | PG-11155 FF+6d | 360.24d | 12.17d | Interiors (False celing) [62000 h] | 62,000 | 14261 |
| PG-11484 |  | Toilet False ceiling | 4d | 2025-07-02 | 2025-07-07 | PG-11492 FF+5d | 339.57d | 26d | Interiors (False celing) [86000 h] | 86,000 | 14263 |
| PG-11483 |  | Painting Works - Putty, Primer and 1st | 6d | 2025-07-12 | 2025-07-19 | PG-11482, PG-11487 | 348.07d | 0d | Surfa Coats (Painting) [130000 h] | 130,000 | 14262 |
| PG-11485 |  | Final Coat Painting | 18.67d | 2025-07-19 | 2025-08-11 | PG-11483, PG-11494 | 348.07d | 34.5d | Surfa Coats (Painting) [125000 h] | 125,000 | 14264 |

| ID | WBS | Activity | Duration | Start | Finish | Predecessors | Total float | Free float | Resources | Cost | MSP Activity ID |
| --- | --- | --- | --- | --- | --- | --- | --- | --- | --- | --- | --- |
|  | 1.3.1.2.4.18.2 | **Wall Finishing works - Civil** |  | 2025-05-29 | 2025-08-11 |  |  |  |  |  |  |
| PG-11486 |  | Balcony Railing Fixing works | 4d | 2025-05-29 | 2025-06-03 | PG-10972 | 191.57d | 29d | L&T [165000 h] | 165,000 | 14266 |
| PG-11488 |  | Dadoing - Wet area | 5d | 2025-06-19 | 2025-06-25 | PG-11153 | 162.57d | 0d | L&T [168000 h] | 168,000 | 14268 |
| PG-11487 |  | UPVC Windows & Sliding doors | 5d | 2025-07-07 | 2025-07-12 | PG-11486, PG-11493 FF+5d | 162.57d | 0d | Fenesta (UPVC Windows) [430000 h] | 430,000 | 14267 |
| PG-11489 |  | Painting Works - Putty, Primer and 1st | 6d | 2025-07-12 | 2025-07-19 | PG-11487 | 162.57d | 0d | Surfa Coats (Painting) [188000 h] | 188,000 | 14269 |
| PG-11490 |  | Final Coat Painting | 18.5d | 2025-07-19 | 2025-08-11 | PG-11494 | 313.57d | 0d | Surfa Coats (Painting) [172000 h] | 172,000 | 14270 |
|  | 1.3.1.2.4.18.3 | **Floor Finishing Works - Civil** |  | 2025-05-29 | 2025-07-19 |  |  |  |  |  |  |
| PG-11491 |  | Waterproofing for sunken areas | 3d | 2025-05-29 | 2025-06-02 | PG-10972 | 182.57d | 20d | L&T [64000 h] | 64,000 | 14272 |
| PG-11492 |  | Floor Tiling - Wet area | 5d | 2025-06-25 | 2025-07-01 | PG-11491, PG-11488 | 162.57d | 0d | L&T [126000 h] | 126,000 | 14273 |
| PG-11493 |  | Floor Tiling - Dry area | 5d | 2025-07-01 | 2025-07-07 | PG-11492 FF+5d | 162.57d | 0d | L&T [335000 h] | 335,000 | 14274 |
| PG-11494 |  | Wooden doors | 5d | 2025-07-14 | 2025-07-19 | PG-11489 FF | 162.57d | 0d | Morph (Wooden Doors) [330000 h] | 330,000 | 14275 |
|  | 1.3.1.2.4.19 | **Floor 16** |  | 2025-06-11 | 2025-08-25 |  |  |  |  |  |  |
|  | 1.3.1.2.4.19.1 | **Ceiling Finishing works - Civil** |  | 2025-06-20 | 2025-08-25 |  |  |  |  |  |  |
| PG-11495 |  | Gypsum Plastering | 6d | 2025-06-20 | 2025-06-27 | PG-11167 | 349.07d | 0d | L&T [195000 h] | 195,000 | 14278 |
| PG-11496 |  | Cornice fixing | 4d | 2025-07-07 | 2025-07-11 | PG-11164 FF+6d | 349.07d | 12.17d | Interiors (False celing) [62000 h] | 62,000 | 14279 |
| PG-11498 |  | Toilet False ceiling | 4d | 2025-07-15 | 2025-07-19 | PG-11506 FF+5d | 327.4d | 24.17d | Interiors (False celing) [86000 h] | 86,000 | 14281 |
| PG-11497 |  | Painting Works - Putty, Primer and 1st | 6d | 2025-07-25 | 2025-08-01 | PG-11496, PG-11501 | 336.9d | 0d | Surfa Coats (Painting) [130000 h] | 130,000 | 14280 |
| PG-11499 |  | Final Coat Painting | 18.67d | 2025-08-01 | 2025-08-25 | PG-11497, PG-11508 | 336.9d | 33.67d | Surfa Coats (Painting) [125000 h] | 125,000 | 14282 |
|  | 1.3.1.2.4.19.2 | **Wall Finishing works - Civil** |  | 2025-06-11 | 2025-08-23 |  |  |  |  |  |  |
| PG-11500 |  | Balcony Railing Fixing works | 4d | 2025-06-11 | 2025-06-16 | PG-10977 | 332.24d | 29d | L&T [165000 h] | 165,000 | 14284 |
| PG-11502 |  | Dadoing - Wet area | 5d | 2025-07-02 | 2025-07-08 | PG-11162 | 303.24d | 0d | L&T [168000 h] | 168,000 | 14286 |
| PG-11501 |  | UPVC Windows & Sliding doors | 5d | 2025-07-19 | 2025-07-25 | PG-11500, PG-11507 FF+5d | 303.24d | 0d | Fenesta (UPVC Windows) [430000 h] | 430,000 | 14285 |
| PG-11503 |  | Painting Works - Putty, Primer and 1st | 6d | 2025-07-25 | 2025-08-01 | PG-11501 | 303.24d | 0d | Surfa Coats (Painting) [188000 h] | 188,000 | 14287 |
| PG-11504 |  | Final Coat Painting | 17.5d | 2025-08-01 | 2025-08-23 | PG-11508 | 303.24d | 0d | Surfa Coats (Painting) [172000 h] | 172,000 | 14288 |

| ID | WBS | Activity | Duration | Start | Finish | Predecessors | Total float | Free float | Resources | Cost | MSP Activity ID |
| --- | --- | --- | --- | --- | --- | --- | --- | --- | --- | --- | --- |
|  | 1.3.1.2.4.19.3 | **Floor Finishing Works - Civil** |  | 2025-06-11 | 2025-08-01 |  |  |  |  |  |  |
| PG-11505 |  | Waterproofing for sunken areas | 3d | 2025-06-11 | 2025-06-14 | PG-10977 | 323.24d | 20d | L&T [64000 h] | 64,000 | 14290 |
| PG-11506 |  | Floor Tiling - Wet area | 5d | 2025-07-08 | 2025-07-14 | PG-11505, PG-11502 | 303.24d | 0d | L&T [126000 h] | 126,000 | 14291 |
| PG-11507 |  | Floor Tiling - Dry area | 5d | 2025-07-14 | 2025-07-19 | PG-11506 FF+5d | 303.24d | 0d | L&T [335000 h] | 335,000 | 14292 |
| PG-11508 |  | Wooden doors | 5d | 2025-07-26 | 2025-08-01 | PG-11503 FF | 303.24d | 0d | Morph (Wooden Doors) [330000 h] | 330,000 | 14293 |
|  | 1.3.1.2.4.20 | **Floor 17** |  | 2025-06-24 | 2025-09-06 |  |  |  |  |  |  |
|  | 1.3.1.2.4.20.1 | **Ceiling Finishing works - Civil** |  | 2025-07-03 | 2025-09-06 |  |  |  |  |  |  |
| PG-11509 |  | Gypsum Plastering | 6d | 2025-07-03 | 2025-07-10 | PG-11176 | 338.07d | 0d | L&T [195000 h] | 195,000 | 14296 |
| PG-11510 |  | Cornice fixing | 4d | 2025-07-19 | 2025-07-24 | PG-11173 FF+6d | 338.07d | 12.17d | Interiors (False celing) [62000 h] | 62,000 | 14297 |
| PG-11512 |  | Toilet False ceiling | 4d | 2025-07-28 | 2025-08-01 | PG-11520 FF+5d | 316.4d | 24.17d | Interiors (False celing) [86000 h] | 86,000 | 14299 |
| PG-11511 |  | Painting Works - Putty, Primer and 1st | 6d | 2025-08-07 | 2025-08-14 | PG-11510, PG-11515 | 325.9d | 0d | Surfa Coats (Painting) [130000 h] | 130,000 | 14298 |
| PG-11513 |  | Final Coat Painting | 18.67d | 2025-08-14 | 2025-09-06 | PG-11511, PG-11522 | 325.9d | 33.67d | Surfa Coats (Painting) [125000 h] | 125,000 | 14300 |
|  | 1.3.1.2.4.20.2 | **Wall Finishing works - Civil** |  | 2025-06-24 | 2025-09-05 |  |  |  |  |  |  |
| PG-11514 |  | Balcony Railing Fixing works | 4d | 2025-06-24 | 2025-06-28 | PG-10982 | 321.24d | 29d | L&T [165000 h] | 165,000 | 14302 |
| PG-11516 |  | Dadoing - Wet area | 5d | 2025-07-15 | 2025-07-21 | PG-11171 | 292.24d | 0d | L&T [168000 h] | 168,000 | 14304 |
| PG-11515 |  | UPVC Windows & Sliding doors | 5d | 2025-08-01 | 2025-08-07 | PG-11514, PG-11521 FF+5d | 292.24d | 0d | Fenesta (UPVC Windows) [430000 h] | 430,000 | 14303 |
| PG-11517 |  | Painting Works - Putty, Primer and 1st | 6d | 2025-08-07 | 2025-08-14 | PG-11515 | 292.24d | 0d | Surfa Coats (Painting) [188000 h] | 188,000 | 14305 |
| PG-11518 |  | Final Coat Painting | 17.5d | 2025-08-14 | 2025-09-05 | PG-11522 | 292.24d | 0d | Surfa Coats (Painting) [172000 h] | 172,000 | 14306 |
|  | 1.3.1.2.4.20.3 | **Floor Finishing Works - Civil** |  | 2025-06-24 | 2025-08-14 |  |  |  |  |  |  |
| PG-11519 |  | Waterproofing for sunken areas | 3d | 2025-06-24 | 2025-06-27 | PG-10982 | 312.24d | 20d | L&T [64000 h] | 64,000 | 14308 |
| PG-11520 |  | Floor Tiling - Wet area | 5d | 2025-07-21 | 2025-07-26 | PG-11519, PG-11516 | 292.24d | 0d | L&T [126000 h] | 126,000 | 14309 |
| PG-11521 |  | Floor Tiling - Dry area | 5d | 2025-07-26 | 2025-08-01 | PG-11520 FF+5d | 292.24d | 0d | L&T [335000 h] | 335,000 | 14310 |
| PG-11522 |  | Wooden doors | 5d | 2025-08-08 | 2025-08-14 | PG-11517 FF | 292.24d | 0d | Morph (Wooden Doors) [330000 h] | 330,000 | 14311 |
|  | 1.3.1.2.4.21 | **Floor 18** |  | 2025-07-07 | 2025-09-19 |  |  |  |  |  |  |
|  | 1.3.1.2.4.21.1 | **Ceiling Finishing works - Civil** |  | 2025-07-16 | 2025-09-19 |  |  |  |  |  |  |
| PG-11523 |  | Gypsum Plastering | 6d | 2025-07-16 | 2025-07-23 | PG-11185 | 328.07d | 0d | L&T [195000 h] | 195,000 | 14314 |
| PG-11524 |  | Cornice fixing | 4d | 2025-08-01 | 2025-08-06 | PG-11182 FF+6d | 328.07d | 11.83d | Interiors (False celing) [62000 h] | 62,000 | 14315 |
| PG-11526 |  | Toilet False ceiling | 4d | 2025-08-09 | 2025-08-14 | PG-11534 FF+5d | 305.4d | 25d | Interiors (False celing) [86000 h] | 86,000 | 14317 |
| PG-11525 |  | Painting Works - Putty, Primer and 1st | 6d | 2025-08-21 | 2025-08-28 | PG-11524, PG-11529 | 316.24d | 0d | Surfa Coats (Painting) [130000 h] | 130,000 | 14316 |
| PG-11527 |  | Final Coat Painting | 18.67d | 2025-08-28 | 2025-09-19 | PG-11525, PG-11536 | 316.24d | 35.83d | Surfa Coats (Painting) [125000 h] | 125,000 | 14318 |

| ID | WBS | Activity | Duration | Start | Finish | Predecessors | Total float | Free float | Resources | Cost | MSP Activity ID |
| --- | --- | --- | --- | --- | --- | --- | --- | --- | --- | --- | --- |
|  | 1.3.1.2.4.21.2 | **Wall Finishing works - Civil** |  | 2025-07-07 | 2025-09-19 |  |  |  |  |  |  |
| PG-11528 |  | Balcony Railing Fixing works | 4d | 2025-07-07 | 2025-07-11 | PG-10987 | 309.07d | 28.67d | L&T [165000 h] | 165,000 | 14320 |
| PG-11530 |  | Dadoing - Wet area | 5d | 2025-07-28 | 2025-08-02 | PG-11180 | 280.4d | 0d | L&T [168000 h] | 168,000 | 14322 |
| PG-11529 |  | UPVC Windows & Sliding doors | 5d | 2025-08-14 | 2025-08-21 | PG-11528, PG-11535 FF+5d | 280.4d | 0d | Fenesta (UPVC Windows) [430000 h] | 430,000 | 14321 |
| PG-11531 |  | Painting Works - Putty, Primer and 1st | 6d | 2025-08-21 | 2025-08-28 | PG-11529 | 280.4d | 0d | Surfa Coats (Painting) [188000 h] | 188,000 | 14323 |
| PG-11532 |  | Final Coat Painting | 18.67d | 2025-08-28 | 2025-09-19 | PG-11536 | 280.4d | 0d | Surfa Coats (Painting) [172000 h] | 172,000 | 14324 |
|  | 1.3.1.2.4.21.3 | **Floor Finishing Works - Civil** |  | 2025-07-07 | 2025-08-28 |  |  |  |  |  |  |
| PG-11533 |  | Waterproofing for sunken areas | 3d | 2025-07-07 | 2025-07-10 | PG-10987 | 300.07d | 19.67d | L&T [64000 h] | 64,000 | 14326 |
| PG-11534 |  | Floor Tiling - Wet area | 5d | 2025-08-02 | 2025-08-08 | PG-11533, PG-11530 | 280.4d | 0d | L&T [126000 h] | 126,000 | 14327 |
| PG-11535 |  | Floor Tiling - Dry area | 5d | 2025-08-08 | 2025-08-14 | PG-11534 FF+5d | 280.4d | 0d | L&T [335000 h] | 335,000 | 14328 |
| PG-11536 |  | Wooden doors | 5d | 2025-08-22 | 2025-08-28 | PG-11531 FF | 280.4d | 0d | Morph (Wooden Doors) [330000 h] | 330,000 | 14329 |
|  | 1.3.1.2.4.22 | **Floor 19** |  | 2025-07-19 | 2025-10-03 |  |  |  |  |  |  |
|  | 1.3.1.2.4.22.1 | **Ceiling Finishing works - Civil** |  | 2025-07-29 | 2025-10-03 |  |  |  |  |  |  |
| PG-11537 |  | Gypsum Plastering | 6d | 2025-07-29 | 2025-08-05 | PG-11194 | 317.07d | 0d | L&T [195000 h] | 195,000 | 14332 |
| PG-11538 |  | Cornice fixing | 3.67d | 2025-08-16 | 2025-08-20 | PG-11191 FF+6d | 317.07d | 11.83d | Interiors (False celing) [62000 h] | 62,000 | 14333 |
| PG-11540 |  | Toilet False ceiling | 4d | 2025-08-23 | 2025-08-28 | PG-11548 FF+5d | 294.4d | 25d | Interiors (False celing) [86000 h] | 86,000 | 14335 |
| PG-11539 |  | Painting Works - Putty, Primer and 1st | 6d | 2025-09-03 | 2025-09-10 | PG-11538, PG-11543 | 305.24d | 0d | Surfa Coats (Painting) [130000 h] | 130,000 | 14334 |
| PG-11541 |  | Final Coat Painting | 18.67d | 2025-09-10 | 2025-10-03 | PG-11539, PG-11550 | 305.24d | 35.83d | Surfa Coats (Painting) [125000 h] | 125,000 | 14336 |
|  | 1.3.1.2.4.22.2 | **Wall Finishing works - Civil** |  | 2025-07-19 | 2025-10-03 |  |  |  |  |  |  |
| PG-11542 |  | Balcony Railing Fixing works | 4d | 2025-07-19 | 2025-07-24 | PG-10992 | 298.07d | 28.67d | L&T [165000 h] | 165,000 | 14338 |
| PG-11544 |  | Dadoing - Wet area | 5d | 2025-08-09 | 2025-08-16 | PG-11189 | 269.4d | 0d | L&T [168000 h] | 168,000 | 14340 |
| PG-11543 |  | UPVC Windows & Sliding doors | 5d | 2025-08-28 | 2025-09-03 | PG-11542, PG-11549 FF+5d | 269.4d | 0d | Fenesta (UPVC Windows) [430000 h] | 430,000 | 14339 |
| PG-11545 |  | Painting Works - Putty, Primer and 1st | 6d | 2025-09-03 | 2025-09-10 | PG-11543 | 269.4d | 0d | Surfa Coats (Painting) [188000 h] | 188,000 | 14341 |
| PG-11546 |  | Final Coat Painting | 18.67d | 2025-09-10 | 2025-10-03 | PG-11550 | 269.4d | 0d | Surfa Coats (Painting) [172000 h] | 172,000 | 14342 |

| ID | WBS | Activity | Duration | Start | Finish | Predecessors | Total float | Free float | Resources | Cost | MSP Activity ID |
| --- | --- | --- | --- | --- | --- | --- | --- | --- | --- | --- | --- |
|  | 1.3.1.2.4.22.3 | **Floor Finishing Works - Civil** |  | 2025-07-19 | 2025-09-10 |  |  |  |  |  |  |
| PG-11547 |  | Waterproofing for sunken areas | 3d | 2025-07-19 | 2025-07-23 | PG-10992 | 289.07d | 19.67d | L&T [64000 h] | 64,000 | 14344 |
| PG-11548 |  | Floor Tiling - Wet area | 5d | 2025-08-16 | 2025-08-22 | PG-11547, PG-11544 | 269.4d | 0d | L&T [126000 h] | 126,000 | 14345 |
| PG-11549 |  | Floor Tiling - Dry area | 5d | 2025-08-22 | 2025-08-28 | PG-11548 FF+5d | 269.4d | 0d | L&T [335000 h] | 335,000 | 14346 |
| PG-11550 |  | Wooden doors | 5d | 2025-09-04 | 2025-09-10 | PG-11545 FF | 269.4d | 0d | Morph (Wooden Doors) [330000 h] | 330,000 | 14347 |
|  | 1.3.1.2.4.23 | **Floor 20** |  | 2025-08-01 | 2025-10-17 |  |  |  |  |  |  |
|  | 1.3.1.2.4.23.1 | **Ceiling Finishing works - Civil** |  | 2025-08-12 | 2025-10-17 |  |  |  |  |  |  |
| PG-11551 |  | Gypsum Plastering | 6d | 2025-08-12 | 2025-08-20 | PG-11203 | 305.24d | 0d | L&T [195000 h] | 195,000 | 14350 |
| PG-11552 |  | Cornice fixing | 3.67d | 2025-08-29 | 2025-09-03 | PG-11200 FF+6d | 305.24d | 12d | Interiors (False celing) [62000 h] | 62,000 | 14351 |
| PG-11554 |  | Toilet False ceiling | 4d | 2025-09-06 | 2025-09-11 | PG-11562 FF+5d | 282.4d | 25d | Interiors (False celing) [86000 h] | 86,000 | 14353 |
| PG-11553 |  | Painting Works - Putty, Primer and 1st | 6d | 2025-09-17 | 2025-09-24 | PG-11552, PG-11557 | 293.24d | 0d | Surfa Coats (Painting) [130000 h] | 130,000 | 14352 |
| PG-11555 |  | Final Coat Painting | 18.67d | 2025-09-24 | 2025-10-17 | PG-11553, PG-11564 | 293.24d | 35.83d | Surfa Coats (Painting) [125000 h] | 125,000 | 14354 |
|  | 1.3.1.2.4.23.2 | **Wall Finishing works - Civil** |  | 2025-08-01 | 2025-10-17 |  |  |  |  |  |  |
| PG-11556 |  | Balcony Railing Fixing works | 4d | 2025-08-01 | 2025-08-06 | PG-10997 | 287.07d | 29.67d | L&T [165000 h] | 165,000 | 14356 |
| PG-11558 |  | Dadoing - Wet area | 5d | 2025-08-25 | 2025-08-30 | PG-11198 | 257.4d | 0d | L&T [168000 h] | 168,000 | 14358 |
| PG-11557 |  | UPVC Windows & Sliding doors | 5d | 2025-09-11 | 2025-09-17 | PG-11556, PG-11563 FF+5d | 257.4d | 0d | Fenesta (UPVC Windows) [430000 h] | 430,000 | 14357 |
| PG-11559 |  | Painting Works - Putty, Primer and 1st | 6d | 2025-09-17 | 2025-09-24 | PG-11557 | 257.4d | 0d | Surfa Coats (Painting) [188000 h] | 188,000 | 14359 |
| PG-11560 |  | Final Coat Painting | 18.67d | 2025-09-24 | 2025-10-17 | PG-11564 | 257.4d | 0d | Surfa Coats (Painting) [172000 h] | 172,000 | 14360 |
|  | 1.3.1.2.4.23.3 | **Floor Finishing Works - Civil** |  | 2025-08-01 | 2025-09-24 |  |  |  |  |  |  |
| PG-11561 |  | Waterproofing for sunken areas | 3d | 2025-08-01 | 2025-08-05 | PG-10997 | 278.07d | 20.67d | L&T [64000 h] | 64,000 | 14362 |
| PG-11562 |  | Floor Tiling - Wet area | 5d | 2025-08-30 | 2025-09-05 | PG-11561, PG-11558 | 257.4d | 0d | L&T [126000 h] | 126,000 | 14363 |
| PG-11563 |  | Floor Tiling - Dry area | 5d | 2025-09-05 | 2025-09-11 | PG-11562 FF+5d | 257.4d | 0d | L&T [335000 h] | 335,000 | 14364 |
| PG-11564 |  | Wooden doors | 5d | 2025-09-18 | 2025-09-24 | PG-11559 FF | 257.4d | 0d | Morph (Wooden Doors) [330000 h] | 330,000 | 14365 |
|  | 1.3.1.2.4.24 | **Floor 21** |  | 2025-08-14 | 2025-10-29 |  |  |  |  |  |  |
|  | 1.3.1.2.4.24.1 | **Ceiling Finishing works - Civil** |  | 2025-08-23 | 2025-10-29 |  |  |  |  |  |  |
| PG-11565 |  | Gypsum Plastering | 6d | 2025-08-23 | 2025-08-30 | PG-11212 | 295.4d | 0d | L&T [195000 h] | 195,000 | 14368 |
| PG-11566 |  | Cornice fixing | 3.67d | 2025-09-09 | 2025-09-13 | PG-11209 FF+6d | 295.4d | 12d | Interiors (False celing) [62000 h] | 62,000 | 14369 |
| PG-11568 |  | Toilet False ceiling | 4d | 2025-09-17 | 2025-09-22 | PG-11576 FF+5d | 273.74d | 26d | Interiors (False celing) [86000 h] | 86,000 | 14371 |
| PG-11567 |  | Painting Works - Putty, Primer and 1st | 6d | 2025-09-27 | 2025-10-06 | PG-11566, PG-11571 | 283.4d | 0d | Surfa Coats (Painting) [130000 h] | 130,000 | 14370 |
| PG-11569 |  | Final Coat Painting | 19.67d | 2025-10-06 | 2025-10-29 | PG-11567, PG-11578 | 283.4d | 35.67d | Surfa Coats (Painting) [125000 h] | 125,000 | 14372 |

| ID | WBS | Activity | Duration | Start | Finish | Predecessors | Total float | Free float | Resources | Cost | MSP Activity ID |
| --- | --- | --- | --- | --- | --- | --- | --- | --- | --- | --- | --- |
|  | 1.3.1.2.4.24.2 | **Wall Finishing works - Civil** |  | 2025-08-14 | 2025-10-29 |  |  |  |  |  |  |
| PG-11570 |  | Balcony Railing Fixing works | 4d | 2025-08-14 | 2025-08-20 | PG-11002 | 275.4d | 27.67d | L&T [165000 h] | 165,000 | 14374 |
| PG-11572 |  | Dadoing - Wet area | 5d | 2025-09-04 | 2025-09-10 | PG-11207 | 247.74d | 0d | L&T [168000 h] | 168,000 | 14376 |
| PG-11571 |  | UPVC Windows & Sliding doors | 5d | 2025-09-22 | 2025-09-27 | PG-11570, PG-11577 FF+5d | 247.74d | 0d | Fenesta (UPVC Windows) [430000 h] | 430,000 | 14375 |
| PG-11573 |  | Painting Works - Putty, Primer and 1st | 6d | 2025-09-27 | 2025-10-06 | PG-11571 | 247.74d | 0d | Surfa Coats (Painting) [188000 h] | 188,000 | 14377 |
| PG-11574 |  | Final Coat Painting | 19.67d | 2025-10-06 | 2025-10-29 | PG-11578 | 247.74d | 0d | Surfa Coats (Painting) [172000 h] | 172,000 | 14378 |
|  | 1.3.1.2.4.24.3 | **Floor Finishing Works - Civil** |  | 2025-08-14 | 2025-10-06 |  |  |  |  |  |  |
| PG-11575 |  | Waterproofing for sunken areas | 3d | 2025-08-14 | 2025-08-19 | PG-11002 | 266.4d | 18.67d | L&T [64000 h] | 64,000 | 14380 |
| PG-11576 |  | Floor Tiling - Wet area | 5d | 2025-09-10 | 2025-09-16 | PG-11575, PG-11572 | 247.74d | 0d | L&T [126000 h] | 126,000 | 14381 |
| PG-11577 |  | Floor Tiling - Dry area | 5d | 2025-09-16 | 2025-09-22 | PG-11576 FF+5d | 247.74d | 0d | L&T [335000 h] | 335,000 | 14382 |
| PG-11578 |  | Wooden doors | 5d | 2025-09-29 | 2025-10-06 | PG-11573 FF | 247.74d | 0d | Morph (Wooden Doors) [330000 h] | 330,000 | 14383 |
|  | 1.3.1.2.4.25 | **Floor 22** |  | 2025-09-05 | 2025-11-21 |  |  |  |  |  |  |
|  | 1.3.1.2.4.25.1 | **Ceiling Finishing works - Civil** |  | 2025-09-15 | 2025-11-21 |  |  |  |  |  |  |
| PG-11579 |  | Gypsum Plastering | 6d | 2025-09-15 | 2025-09-22 | PG-11221 | 145.4d | 0d | L&T [195000 h] | 195,000 | 14386 |
| PG-11580 |  | Cornice fixing | 3.67d | 2025-10-01 | 2025-10-07 | PG-11218 FF+6d | 145.4d | 0d | Interiors (False celing) [62000 h] | 62,000 | 14387 |
| PG-11582 |  | Toilet False ceiling | 4d | 2025-10-10 | 2025-10-15 | PG-11590 FF+5d | 254.9d | 27d | Interiors (False celing) [86000 h] | 86,000 | 14389 |
| PG-11581 |  | Painting Works - Putty, Primer and 1st | 6d | 2025-10-21 | 2025-10-28 | PG-11580, PG-11585 | 133.24d | 0d | Surfa Coats (Painting) [130000 h] | 130,000 | 14388 |
| PG-11583 |  | Final Coat Painting | 19.67d | 2025-10-28 | 2025-11-21 | PG-11581, PG-11592 | 262.57d | 34.67d | Surfa Coats (Painting) [125000 h] | 125,000 | 14390 |
|  | 1.3.1.2.4.25.2 | **Wall Finishing works - Civil** |  | 2025-09-05 | 2025-11-21 |  |  |  |  |  |  |
| PG-11584 |  | Balcony Railing Fixing works | 4d | 2025-09-05 | 2025-09-10 | PG-11206 FS+7d | 162.07d | 28.83d | L&T [165000 h] | 165,000 | 14392 |
| PG-11586 |  | Dadoing - Wet area | 5d | 2025-09-26 | 2025-10-03 | PG-11216 | 133.24d | 0d | L&T [168000 h] | 168,000 | 14394 |
| PG-11585 |  | UPVC Windows & Sliding doors | 5d | 2025-10-15 | 2025-10-21 | PG-11584, PG-11591 FF+5d | 133.24d | 0d | Fenesta (UPVC Windows) [430000 h] | 430,000 | 14393 |
| PG-11587 |  | Painting Works - Putty, Primer and 1st | 6d | 2025-10-21 | 2025-10-28 | PG-11585 | 227.9d | 0d | Surfa Coats (Painting) [188000 h] | 188,000 | 14395 |
| PG-11588 |  | Final Coat Painting | 19.67d | 2025-10-28 | 2025-11-21 | PG-11592 | 227.9d | 0d | Surfa Coats (Painting) [172000 h] | 172,000 | 14396 |

| ID | WBS | Activity | Duration | Start | Finish | Predecessors | Total float | Free float | Resources | Cost | MSP Activity ID |
| --- | --- | --- | --- | --- | --- | --- | --- | --- | --- | --- | --- |
|  | 1.3.1.2.4.25.3 | **Floor Finishing Works - Civil** |  | 2025-09-05 | 2025-10-28 |  |  |  |  |  |  |
| PG-11589 |  | Waterproofing for sunken areas | 3d | 2025-09-05 | 2025-09-09 | PG-11206 FS+7d | 153.07d | 19.83d | L&T [64000 h] | 64,000 | 14398 |
| PG-11590 |  | Floor Tiling - Wet area | 5d | 2025-10-03 | 2025-10-09 | PG-11589, PG-11586 | 133.24d | 0d | L&T [126000 h] | 126,000 | 14399 |
| PG-11591 |  | Floor Tiling - Dry area | 5d | 2025-10-09 | 2025-10-15 | PG-11590 FF+5d | 133.24d | 0d | L&T [335000 h] | 335,000 | 14400 |
| PG-11592 |  | Wooden doors | 5d | 2025-10-22 | 2025-10-28 | PG-11587 FF | 227.9d | 0d | Morph (Wooden Doors) [330000 h] | 330,000 | 14401 |
|  | 1.3.1.2.4.26 | **Floor 23** |  | 2025-09-27 | 2025-12-11 |  |  |  |  |  |  |
|  | 1.3.1.2.4.26.1 | **Ceiling Finishing works - Civil** |  | 2025-10-08 | 2025-12-11 |  |  |  |  |  |  |
| PG-11593 |  | Gypsum Plastering | 6d | 2025-10-08 | 2025-10-15 | PG-11230 | 256.74d | 0d | L&T [195000 h] | 195,000 | 14404 |
| PG-11594 |  | Cornice fixing | 4d | 2025-10-24 | 2025-10-29 | PG-11227 FF+6d | 256.74d | 11d | Interiors (False celing) [62000 h] | 62,000 | 14405 |
| PG-11596 |  | Toilet False ceiling | 4d | 2025-10-31 | 2025-11-06 | PG-11604 FF+5d | 236.9d | 27d | Interiors (False celing) [86000 h] | 86,000 | 14407 |
| PG-11595 |  | Painting Works - Putty, Primer and 1st | 6d | 2025-11-12 | 2025-11-19 | PG-11594, PG-11599 | 245.74d | 0d | Surfa Coats (Painting) [130000 h] | 130,000 | 14406 |
| PG-11597 |  | Final Coat Painting | 19.67d | 2025-11-19 | 2025-12-11 | PG-11595, PG-11606 | 245.74d | 35.83d | Surfa Coats (Painting) [125000 h] | 125,000 | 14408 |
|  | 1.3.1.2.4.26.2 | **Wall Finishing works - Civil** |  | 2025-09-27 | 2025-12-11 |  |  |  |  |  |  |
| PG-11598 |  | Balcony Railing Fixing works | 4d | 2025-09-27 | 2025-10-03 | PG-11215 FS+7d | 237.57d | 27.67d | L&T [165000 h] | 165,000 | 14410 |
| PG-11600 |  | Dadoing - Wet area | 5d | 2025-10-18 | 2025-10-24 | PG-11225 | 209.9d | 0d | L&T [168000 h] | 168,000 | 14412 |
| PG-11599 |  | UPVC Windows & Sliding doors | 5d | 2025-11-06 | 2025-11-12 | PG-11598, PG-11605 FF+5d | 209.9d | 0d | Fenesta (UPVC Windows) [430000 h] | 430,000 | 14411 |
| PG-11601 |  | Painting Works - Putty, Primer and 1st | 6d | 2025-11-12 | 2025-11-19 | PG-11599 | 209.9d | 0d | Surfa Coats (Painting) [188000 h] | 188,000 | 14413 |
| PG-11602 |  | Final Coat Painting | 19.67d | 2025-11-19 | 2025-12-11 | PG-11606 | 209.9d | 0d | Surfa Coats (Painting) [172000 h] | 172,000 | 14414 |
|  | 1.3.1.2.4.26.3 | **Floor Finishing Works - Civil** |  | 2025-09-27 | 2025-11-19 |  |  |  |  |  |  |
| PG-11603 |  | Waterproofing for sunken areas | 3d | 2025-09-27 | 2025-10-01 | PG-11215 FS+7d | 228.57d | 18.67d | L&T [64000 h] | 64,000 | 14416 |
| PG-11604 |  | Floor Tiling - Wet area | 5d | 2025-10-24 | 2025-10-30 | PG-11603, PG-11600 | 209.9d | 0d | L&T [126000 h] | 126,000 | 14417 |
| PG-11605 |  | Floor Tiling - Dry area | 5d | 2025-10-30 | 2025-11-06 | PG-11604 FF+5d | 209.9d | 0d | L&T [335000 h] | 335,000 | 14418 |
| PG-11606 |  | Wooden doors | 5d | 2025-11-13 | 2025-11-19 | PG-11601 FF | 209.9d | 0d | Morph (Wooden Doors) [330000 h] | 330,000 | 14419 |
|  | 1.3.1.2.4.27 | **Floor 24** |  | 2025-10-20 | 2026-01-01 |  |  |  |  |  |  |
|  | 1.3.1.2.4.27.1 | **Ceiling Finishing works - Civil** |  | 2025-10-28 | 2026-01-01 |  |  |  |  |  |  |
| PG-11607 |  | Gypsum Plastering | 6d | 2025-10-28 | 2025-11-05 | PG-11239 | 239.4d | 0d | L&T [195000 h] | 195,000 | 14422 |
| PG-11608 |  | Cornice fixing | 3.67d | 2025-11-15 | 2025-11-19 | PG-11236 FF+6d | 239.4d | 12d | Interiors (False celing) [62000 h] | 62,000 | 14423 |
| PG-11610 |  | Toilet False ceiling | 4d | 2025-11-22 | 2025-11-27 | PG-11618 FF+5d | 216.24d | 25.5d | Interiors (False celing) [86000 h] | 86,000 | 14425 |
| PG-11609 |  | Painting Works - Putty, Primer and 1st | 6d | 2025-12-03 | 2025-12-10 | PG-11608, PG-11613 | 227.4d | 0d | Surfa Coats (Painting) [130000 h] | 130,000 | 14424 |
| PG-11611 |  | Final Coat Painting | 18.5d | 2025-12-10 | 2026-01-01 | PG-11609, PG-11620 | 227.4d | 36.67d | Surfa Coats (Painting) [125000 h] | 125,000 | 14426 |

| ID | WBS | Activity | Duration | Start | Finish | Predecessors | Total float | Free float | Resources | Cost | MSP Activity ID |
| --- | --- | --- | --- | --- | --- | --- | --- | --- | --- | --- | --- |
|  | 1.3.1.2.4.27.2 | **Wall Finishing works - Civil** |  | 2025-10-20 | 2026-01-01 |  |  |  |  |  |  |
| PG-11612 |  | Balcony Railing Fixing works | 4d | 2025-10-20 | 2025-10-24 | PG-11224 FS+7d | 219.4d | 28.67d | L&T [165000 h] | 165,000 | 14428 |
| PG-11614 |  | Dadoing - Wet area | 5d | 2025-11-10 | 2025-11-15 | PG-11234 | 190.74d | 0d | L&T [168000 h] | 168,000 | 14430 |
| PG-11613 |  | UPVC Windows & Sliding doors | 5d | 2025-11-27 | 2025-12-03 | PG-11612, PG-11619 FF+5d | 190.74d | 0d | Fenesta (UPVC Windows) [430000 h] | 430,000 | 14429 |
| PG-11615 |  | Painting Works - Putty, Primer and 1st | 6d | 2025-12-03 | 2025-12-10 | PG-11613 | 190.74d | 0d | Surfa Coats (Painting) [188000 h] | 188,000 | 14431 |
| PG-11616 |  | Final Coat Painting | 18.5d | 2025-12-10 | 2026-01-01 | PG-11620 | 190.74d | 0d | Surfa Coats (Painting) [172000 h] | 172,000 | 14432 |
|  | 1.3.1.2.4.27.3 | **Floor Finishing Works - Civil** |  | 2025-10-20 | 2025-12-10 |  |  |  |  |  |  |
| PG-11617 |  | Waterproofing for sunken areas | 3d | 2025-10-20 | 2025-10-23 | PG-11224 FS+7d | 210.4d | 19.67d | L&T [64000 h] | 64,000 | 14434 |
| PG-11618 |  | Floor Tiling - Wet area | 5d | 2025-11-15 | 2025-11-21 | PG-11617, PG-11614 | 190.74d | 0d | L&T [126000 h] | 126,000 | 14435 |
| PG-11619 |  | Floor Tiling - Dry area | 5d | 2025-11-21 | 2025-11-27 | PG-11618 FF+5d | 190.74d | 0d | L&T [335000 h] | 335,000 | 14436 |
| PG-11620 |  | Wooden doors | 5d | 2025-12-04 | 2025-12-10 | PG-11615 FF | 190.74d | 0d | Morph (Wooden Doors) [330000 h] | 330,000 | 14437 |
|  | 1.3.1.2.4.28 | **Floor 25** |  | 2025-11-11 | 2026-01-24 |  |  |  |  |  |  |
|  | 1.3.1.2.4.28.1 | **Ceiling Finishing works - Civil** |  | 2025-11-20 | 2026-01-24 |  |  |  |  |  |  |
| PG-11621 |  | Gypsum Plastering | 6d | 2025-11-20 | 2025-11-27 | PG-11248 | 218.9d | 0d | L&T [195000 h] | 195,000 | 14466 |
| PG-11622 |  | Cornice fixing | 3.67d | 2025-12-06 | 2025-12-11 | PG-11245 FF+6d | 218.9d | 12d | Interiors (False celing) [62000 h] | 62,000 | 14467 |
| PG-11624 |  | Toilet False ceiling | 4d | 2025-12-15 | 2025-12-19 | PG-11632 FF+5d | 198.24d | 27d | Interiors (False celing) [86000 h] | 86,000 | 14469 |
| PG-11623 |  | Painting Works - Putty, Primer and 1st | 6d | 2025-12-25 | 2026-01-01 | PG-11622, PG-11627 | 206.9d | 0d | Surfa Coats (Painting) [130000 h] | 130,000 | 14468 |
| PG-11625 |  | Final Coat Painting | 20.33d | 2026-01-01 | 2026-01-24 | PG-11623, PG-11634 | 206.9d | 35.67d | Surfa Coats (Painting) [125000 h] | 125,000 | 14470 |
|  | 1.3.1.2.4.28.2 | **Wall Finishing works - Civil** |  | 2025-11-11 | 2026-01-24 |  |  |  |  |  |  |
| PG-11626 |  | Balcony Railing Fixing works | 4d | 2025-11-11 | 2025-11-15 | PG-11233 FS+7d | 199.9d | 28.67d | L&T [165000 h] | 165,000 | 14472 |
| PG-11628 |  | Dadoing - Wet area | 5d | 2025-12-02 | 2025-12-08 | PG-11243 | 171.24d | 0d | L&T [168000 h] | 168,000 | 14474 |
| PG-11627 |  | UPVC Windows & Sliding doors | 5d | 2025-12-19 | 2025-12-25 | PG-11626, PG-11633 FF+5d | 171.24d | 0d | Fenesta (UPVC Windows) [430000 h] | 430,000 | 14473 |
| PG-11629 |  | Painting Works - Putty, Primer and 1st | 6d | 2025-12-25 | 2026-01-01 | PG-11627 | 171.24d | 0d | Surfa Coats (Painting) [188000 h] | 188,000 | 14475 |
| PG-11630 |  | Final Coat Painting | 20.33d | 2026-01-01 | 2026-01-24 | PG-11634 | 171.24d | 0d | Surfa Coats (Painting) [172000 h] | 172,000 | 14476 |

| ID | WBS | Activity | Duration | Start | Finish | Predecessors | Total float | Free float | Resources | Cost | MSP Activity ID |
| --- | --- | --- | --- | --- | --- | --- | --- | --- | --- | --- | --- |
|  | 1.3.1.2.4.28.3 | **Floor Finishing Works - Civil** |  | 2025-11-11 | 2026-01-01 |  |  |  |  |  |  |
| PG-11631 |  | Waterproofing for sunken areas | 3d | 2025-11-11 | 2025-11-14 | PG-11233 FS+7d | 190.9d | 19.67d | L&T [64000 h] | 64,000 | 14478 |
| PG-11632 |  | Floor Tiling - Wet area | 5d | 2025-12-08 | 2025-12-13 | PG-11631, PG-11628 | 171.24d | 0d | L&T [126000 h] | 126,000 | 14479 |
| PG-11633 |  | Floor Tiling - Dry area | 5d | 2025-12-13 | 2025-12-19 | PG-11632 FF+5d | 171.24d | 0d | L&T [335000 h] | 335,000 | 14480 |
| PG-11634 |  | Wooden doors | 5d | 2025-12-26 | 2026-01-01 | PG-11629 FF | 171.24d | 0d | Morph (Wooden Doors) [330000 h] | 330,000 | 14481 |
|  | 1.3.1.2.4.29 | **Floor 26** |  | 2025-12-03 | 2026-02-16 |  |  |  |  |  |  |
|  | 1.3.1.2.4.29.1 | **Ceiling Finishing works - Civil** |  | 2025-12-12 | 2026-02-16 |  |  |  |  |  |  |
| PG-11635 |  | Gypsum Plastering | 6d | 2025-12-12 | 2025-12-19 | PG-11257 | 201.9d | 0d | L&T [195000 h] | 195,000 | 14497 |
| PG-11636 |  | Cornice fixing | 3.67d | 2025-12-29 | 2026-01-02 | PG-11254 FF+6d | 201.9d | 11.83d | Interiors (False celing) [62000 h] | 62,000 | 14498 |
| PG-11638 |  | Toilet False ceiling | 4d | 2026-01-06 | 2026-01-10 | PG-11646 FF+5d | 149.74d | 26d | Interiors (False celing) [86000 h] | 86,000 | 14500 |
| PG-11637 |  | Painting Works - Putty, Primer and 1st | 6d | 2026-01-16 | 2026-01-23 | PG-11636, PG-11641 | 190.07d | 0d | Surfa Coats (Painting) [130000 h] | 130,000 | 14499 |
| PG-11639 |  | Final Coat Painting | 19.33d | 2026-01-23 | 2026-02-16 | PG-11637, PG-11648 | 190.07d | 36.67d | Surfa Coats (Painting) [125000 h] | 125,000 | 14501 |
|  | 1.3.1.2.4.29.2 | **Wall Finishing works - Civil** |  | 2025-12-03 | 2026-02-16 |  |  |  |  |  |  |
| PG-11640 |  | Balcony Railing Fixing works | 4d | 2025-12-03 | 2025-12-08 | PG-11242 FS+7d | 152.4d | 28.67d | L&T [165000 h] | 165,000 | 14503 |
| PG-11642 |  | Dadoing - Wet area | 5d | 2025-12-24 | 2025-12-30 | PG-11252 | 123.74d | 0d | L&T [168000 h] | 168,000 | 14505 |
| PG-11641 |  | UPVC Windows & Sliding doors | 5d | 2026-01-10 | 2026-01-16 | PG-11640, PG-11647 FF+5d | 123.74d | 0d | Fenesta (UPVC Windows) [430000 h] | 430,000 | 14504 |
| PG-11643 |  | Painting Works - Putty, Primer and 1st | 6d | 2026-01-16 | 2026-01-23 | PG-11641 | 123.74d | 0d | Surfa Coats (Painting) [188000 h] | 188,000 | 14506 |
| PG-11644 |  | Final Coat Painting | 19.33d | 2026-01-23 | 2026-02-16 | PG-11648 | 123.74d | 0d | Surfa Coats (Painting) [172000 h] | 172,000 | 14507 |
|  | 1.3.1.2.4.29.3 | **Floor Finishing Works - Civil** |  | 2025-12-03 | 2026-01-23 |  |  |  |  |  |  |
| PG-11645 |  | Waterproofing for sunken areas | 3d | 2025-12-03 | 2025-12-06 | PG-11242 FS+7d | 143.4d | 19.67d | L&T [64000 h] | 64,000 | 14509 |
| PG-11646 |  | Floor Tiling - Wet area | 5d | 2025-12-30 | 2026-01-05 | PG-11645, PG-11642 | 123.74d | 0d | L&T [126000 h] | 126,000 | 14510 |
| PG-11647 |  | Floor Tiling - Dry area | 5d | 2026-01-05 | 2026-01-10 | PG-11646 FF+5d | 123.74d | 0d | L&T [335000 h] | 335,000 | 14511 |
| PG-11648 |  | Wooden doors | 5d | 2026-01-17 | 2026-01-23 | PG-11643 FF | 123.74d | 0d | Morph (Wooden Doors) [330000 h] | 330,000 | 14512 |
|  | 1.3.1.2.4.30 | **External Finishing works** |  | 2025-09-12 | 2026-01-09 |  |  |  |  |  |  |
| PG-11649 |  | External walls tie rod hole plugging with GP2 | 30d | 2025-09-12 | 2025-10-18 | PG-11008 | 219.9d | 0d | L&T [1200000 h] | 1,200,000 | 38110 |
| PG-11650 |  | External walls grinding works | 40d | 2025-10-07 | 2025-11-24 | PG-11649 FF+30d | 219.9d | 0d | L&T [1600000 h] | 1,600,000 | 38111 |
| PG-11651 |  | Texture and painting works | 45d | 2025-11-18 | 2026-01-09 | PG-11650 FF+40d | 219.9d | 0d | Surfa Coats (Painting) [1170000 h] | 1,170,000 | 38112 |

| ID | WBS | Activity | Duration | Start | Finish | Predecessors | Total float | Free float | Resources | Cost | MSP Activity ID |
| --- | --- | --- | --- | --- | --- | --- | --- | --- | --- | --- | --- |
|  | 1.3.1.2.5 | **Corridor & Fire Staircase Finishing works** |  | 2025-11-19 | 2026-03-19 |  |  |  |  |  |  |
|  | 1.3.1.2.5.1 | **Ceiling Finishing works - Civil** |  | 2025-11-19 | 2026-02-12 |  |  |  |  |  |  |
| PG-11652 |  | Gypsum Plastering | 6d | 2025-11-19 | 2025-11-26 | PG-11221 FF+60d | 14.9d | 0d | L&T [195000 h] | 195,000 | 37944 |
| PG-11653 |  | Cornice fixing | 4d | 2025-11-25 | 2025-11-29 | PG-11580 FF+45d | 145.4d | 12.17d | Interiors (False celing) [62000 h] | 62,000 | 37945 |
| PG-11654 |  | Painting Works - Putty, Primer and 1st | 6d | 2025-12-13 | 2025-12-20 | PG-11581 FF+45d, PG-11653 | 133.24d | 0d | Surfa Coats (Painting) [130000 h] | 130,000 | 37946 |
| PG-11655 |  | False ceiling | 30d | 2025-12-20 | 2026-01-24 | PG-11654 | 133.24d | 0d | Interiors (False celing) [660000 h] | 660,000 | 37947 |
| PG-11656 |  | Final Coat Painting | 30.67d | 2026-01-06 | 2026-02-12 | PG-11655 FF+15d | 163.24d | 148.33d | Surfa Coats (Painting) [125000 h] | 125,000 | 37948 |
|  | 1.3.1.2.5.2 | **Wall Finishing works - Civil** |  | 2025-12-25 | 2026-03-19 |  |  |  |  |  |  |
| PG-11657 |  | UPVC Windows & Sliding doors | 5d | 2025-12-25 | 2025-12-31 | PG-11585 FF+60d | 139.24d | 0d | Fenesta (UPVC Windows) [430000 h] | 430,000 | 37950 |
| PG-11658 |  | Wall Cladding Upto 1.2 Mts | 20d | 2026-01-12 | 2026-02-05 | PG-11657 FF+30d | 139.24d | 6d | L&T [800000 h] | 800,000 | 37951 |
| PG-11659 |  | Painting Works - Texture & one coat Painting works | 15d | 2026-02-12 | 2026-03-02 | PG-11658, PG-11655 FF+30d | 133.24d | 0d | Surfa Coats (Painting) [390000 h] | 390,000 | 37952 |
| PG-11660 |  | Final Coat Painting | 20.67d | 2026-02-23 | 2026-03-19 | PG-11659 FF+15d, PG-11662 | 133.24d | 0d | Surfa Coats (Painting) [172000 h] | 172,000 | 37953 |
|  | 1.3.1.2.5.3 | **Floor Finishing Works - Civil** |  | 2025-11-26 | 2025-12-25 |  |  |  |  |  |  |
| PG-11661 |  | Fire Doors installation | 10d | 2025-11-26 | 2025-12-08 | PG-11652 | 183.74d | 0d | Shakthi Hormann (Fire Doors) [500000 h] | 500,000 | 37955 |
| PG-11662 |  | Vitrified tile flooring works | 15d | 2025-12-08 | 2025-12-25 | PG-11661 | 183.74d | 50.5d | L&T [600000 h] | 600,000 | 37956 |
|  | 1.3.1.2.5.4 | **Fire Staircase Finishing Works - Civil** |  | 2025-11-26 | 2026-03-18 |  |  |  |  |  |  |
| PG-11663 |  | Staircase Railing Fixing works | 20d | 2025-11-26 | 2025-12-19 | PG-11652 | 14.9d | 0d | L&T [800000 h] | 800,000 | 42536 |
| PG-11664 |  | Wall and ceiling Gypsum plastering | 29.67d | 2025-12-08 | 2026-01-12 | PG-11663 FF+20d | 14.9d | 0d | L&T [1187000 h] | 1,187,000 | 42537 |
| PG-11665 |  | Staircase Flooring and Skirting Works | 40d | 2025-12-25 | 2026-02-11 | PG-11664 FF+25d | 14.9d | 0d | L&T [1600000 h] | 1,600,000 | 42538 |
| PG-11666 |  | UPVC Window fixing works | 14d | 2026-02-12 | 2026-02-28 | PG-11665 FF+15d | 14.9d | 0d | Fenesta (UPVC Windows) [900000 h] | 900,000 | 42539 |
| PG-11667 |  | Staircase Painting works | 20d | 2026-02-23 | 2026-03-18 | PG-11666 FF+15d | 14.9d | 0d | Surfa Coats (Painting) [520000 h] | 520,000 | 42540 |
|  | 1.3.1.2.6 | **MEP Civil Works (Shaft, Lift Shaft & OHT )** |  | 2025-08-29 | 2026-01-28 |  |  |  |  |  |  |
|  | 1.3.1.2.6.1 | **Lift Shaft Works** |  | 2025-08-29 | 2026-01-28 |  |  |  |  |  |  |
| PG-11668 |  | Tie rod hole packing | 8d | 2025-08-29 | 2025-09-08 | PG-11005 | 120.4d | 0d | L&T [320000 h] | 320,000 | 37959 |
| PG-11669 |  | Grinding works | 5d | 2025-09-08 | 2025-09-13 | PG-11668 | 120.4d | 0d | L&T [200000 h] | 200,000 | 37960 |
| PG-11670 |  | Lift pit water proofing works | 20.33d | 2025-09-13 | 2025-10-08 | PG-11669 | 120.4d | 0d | Otis (Lifts) [651000 h] | 651,000 | 37961 |
| PG-11671 |  | Shaft door opening finishing | 6.67d | 2025-10-08 | 2025-10-16 | PG-11670 | 120.4d | 0d | L&T [267000 h] | 267,000 | 37962 |
| PG-11672 |  | Painting works | 8d | 2025-10-16 | 2025-10-25 | PG-11671 | 120.4d | 0d | Surfa Coats (Painting) [256000 h] | 256,000 | 37963 |
| PG-11673 |  | Lift Wall Cladding Works | 14.5d | 2026-01-10 | 2026-01-28 | PG-11708 | 156.07d | 35.67d | Otis (Lifts) [464000 h] | 464,000 | 37964 |

| ID | WBS | Activity | Duration | Start | Finish | Predecessors | Total float | Free float | Resources | Cost | MSP Activity ID |
| --- | --- | --- | --- | --- | --- | --- | --- | --- | --- | --- | --- |
|  | 1.3.1.2.6.2 | **Electrical Shaft works** |  | 2025-08-29 | 2025-10-01 |  |  |  |  |  |  |
| PG-11674 |  | Tie rod hole packing | 8d | 2025-08-29 | 2025-09-08 | PG-11005 | 227.07d | 0d | L&T [320000 h] | 320,000 | 37966 |
| PG-11675 |  | Grinding works | 5d | 2025-09-08 | 2025-09-13 | PG-11674 | 227.07d | 0d | L&T [200000 h] | 200,000 | 37967 |
| PG-11676 |  | Shaft door opening finishing | 7d | 2025-09-13 | 2025-09-22 | PG-11675 | 227.07d | 0d | L&T [280000 h] | 280,000 | 37968 |
| PG-11677 |  | Painting works | 8d | 2025-09-22 | 2025-10-01 | PG-11676 | 227.07d | 0d | Surfa Coats (Painting) [256000 h] | 256,000 | 37969 |
|  | 1.3.1.2.6.3 | **FPS Shaft works** |  | 2025-08-29 | 2025-10-01 |  |  |  |  |  |  |
| PG-11678 |  | Tie rod hole packing | 8d | 2025-08-29 | 2025-09-08 | PG-11005 | 226.9d | 0d | L&T [320000 h] | 320,000 | 37971 |
| PG-11679 |  | Grinding works | 5d | 2025-09-08 | 2025-09-13 | PG-11678 | 226.9d | 0d | L&T [200000 h] | 200,000 | 37972 |
| PG-11680 |  | Shaft door opening finishing | 7d | 2025-09-13 | 2025-09-22 | PG-11679 | 226.9d | 0d | L&T [280000 h] | 280,000 | 37973 |
| PG-11681 |  | Painting works | 8d | 2025-09-22 | 2025-10-01 | PG-11680 | 226.9d | 0d | Surfa Coats (Painting) [256000 h] | 256,000 | 37974 |
|  | 1.3.1.2.6.4 | **PHE Shaft works** |  | 2025-08-29 | 2025-10-01 |  |  |  |  |  |  |
| PG-11682 |  | Tie rod hole packing | 8d | 2025-08-29 | 2025-09-08 | PG-11005 | 185.74d | 0d | L&T [320000 h] | 320,000 | 37976 |
| PG-11683 |  | Grinding works | 5d | 2025-09-08 | 2025-09-13 | PG-11682 | 185.74d | 0d | L&T [200000 h] | 200,000 | 37977 |
| PG-11684 |  | Shaft door opening finishing | 7d | 2025-09-13 | 2025-09-22 | PG-11683 | 185.74d | 0d | L&T [280000 h] | 280,000 | 37978 |
| PG-11685 |  | Painting works | 8d | 2025-09-22 | 2025-10-01 | PG-11684 | 185.74d | 0d | Surfa Coats (Painting) [256000 h] | 256,000 | 37979 |
|  | 1.3.1.2.6.5 | **Data & Communication Shaft** |  | 2025-08-29 | 2025-09-29 |  |  |  |  |  |  |
| PG-11686 |  | Tie rod hole packing | 8d | 2025-08-29 | 2025-09-08 | PG-11005 | 221.57d | 0d | L&T [320000 h] | 320,000 | 37981 |
| PG-11687 |  | Grinding works | 5d | 2025-09-08 | 2025-09-13 | PG-11686 | 221.57d | 0d | L&T [200000 h] | 200,000 | 37982 |
| PG-11688 |  | Shaft door opening finishing | 5d | 2025-09-13 | 2025-09-19 | PG-11687 | 221.57d | 0d | L&T [200000 h] | 200,000 | 37983 |
| PG-11689 |  | Painting works | 8d | 2025-09-19 | 2025-09-29 | PG-11688 | 221.57d | 0d | Surfa Coats (Painting) [256000 h] | 256,000 | 37984 |
|  | 1.3.1.2.6.6 | **OHT Works** |  | 2025-08-29 | 2025-10-18 |  |  |  |  |  |  |
| PG-11690 |  | Tank materials Supply & Shifting | 10d | 2025-08-29 | 2025-09-10 | PG-11005 | 193.07d | 0d | Santech (Plumbing) [320000 h] | 320,000 | 43242 |
| PG-11691 |  | Assembling OHT FRP Tank | 10d | 2025-09-10 | 2025-09-22 | PG-11690 | 193.07d | 0d | Santech (Plumbing) [320000 h] | 320,000 | 43243 |
| PG-11692 |  | Installation of OHT Tank | 15d | 2025-09-22 | 2025-10-10 | PG-11691 | 193.07d | 0d | Santech (Plumbing) [480000 h] | 480,000 | 43244 |
| PG-11693 |  | Water tightness works and checking | 7d | 2025-10-10 | 2025-10-18 | PG-11692 | 193.07d | 7.33d | Santech (Plumbing) [224000 h] | 224,000 | 43245 |

| ID | WBS | Activity | Duration | Start | Finish | Predecessors | Planned start | Planned finish | Total float | Free float | Resources | Cost | MSP Activity ID |
| --- | --- | --- | --- | --- | --- | --- | --- | --- | --- | --- | --- | --- | --- |
|  | 1.3.1.2.7 | **MEP Shaft works** |  | 2025-09-29 | 2025-12-22 |  |  |  |  |  |  |  |  |
|  | 1.3.1.2.7.1 | **Electrical** |  | 2025-10-01 | 2025-11-12 |  |  |  |  |  |  |  |  |
| PG-11694 |  | Tray Works | 9.67d | 2025-10-01 | 2025-10-14 | PG-11677 |  |  | 227.07d | 0d | Elexir (Electrical) [309000 h] | 309,000 | 37987 |
| PG-11695 |  | Cable & Conducting works | 9.5d | 2025-10-14 | 2025-10-24 | PG-11694 |  |  | 227.07d | 0d | Elexir (Electrical) [304000 h] | 304,000 | 37988 |
| PG-11696 |  | Wiring/DB/connector box installation and termination works | 14.67d | 2025-10-24 | 2025-11-12 | PG-11695 |  |  | 227.07d | 0d | Elexir (Electrical) [469000 h] | 469,000 | 37989 |
|  | 1.3.1.2.7.2 | **FPS** |  | 2025-10-01 | 2025-11-12 |  |  |  |  |  |  |  |  |
| PG-11697 |  | Shaft MS Piping & fixtures installation | 19.67d | 2025-10-01 | 2025-10-25 | PG-11681 |  |  | 226.9d | 0d | Nexus (Fire) [629000 h] | 629,000 | 37991 |
| PG-11698 |  | Tray / cabling / conducting & wiring works | 14d | 2025-10-25 | 2025-11-12 | PG-11697 |  |  | 226.9d | 0d | Elexir (Electrical) [469000 h] | 469,000 | 37992 |
|  | 1.3.1.2.7.3 | **Data & Communication** |  | 2025-09-29 | 2025-11-18 |  |  |  |  |  |  |  |  |
| PG-11699 |  | Tray Works | 11.67d | 2025-09-29 | 2025-10-14 | PG-11689 |  |  | 221.57d | 0d | Elexir (Electrical) [373000 h] | 373,000 | 37994 |
| PG-11700 |  | Tray / cabling / conducting & wiring works | 14.5d | 2025-10-14 | 2025-10-30 | PG-11699 |  |  | 221.57d | 0d | Elexir (Electrical) [464000 h] | 464,000 | 37995 |
| PG-11701 |  | Wiring/DB/connector box installation and termination works | 14.67d | 2025-10-30 | 2025-11-18 | PG-11700 |  |  | 221.57d | 0d | Elexir (Electrical) [469000 h] | 469,000 | 37996 |
|  | 1.3.1.2.7.4 | **PHE** |  | 2025-10-01 | 2025-12-22 |  |  |  |  |  |  |  |  |
| PG-11702 |  | Bracket fixing works | 6.83d | 2025-10-01 | 2025-10-10 | PG-11685 |  |  | 185.74d | 0d | Santech (Plumbing) [219000 h] | 219,000 | 37998 |
| PG-11703 |  | Piping Works | 15d | 2025-10-10 | 2025-10-27 | PG-11702 | 2025-10-10 | 2025-10-28 | 185.74d | 0d | Santech (Plumbing) [480000 h] | 480,000 | 37999 |
| PG-11704 |  | Terrace Ring main & OHT Connection works | 40d | 2025-10-27 | 2025-12-13 | PG-11009, PG-11703, PG-11693 |  |  | 185.74d | 0d | Santech (Plumbing) [1280000 h] | 1,280,000 | 43353 |
| PG-11705 |  | Commissioning | 6.67d | 2025-12-13 | 2025-12-22 | PG-11704 |  |  | 185.74d | 0d | Santech (Plumbing) [213000 h] | 213,000 | 38000 |
|  | 1.3.1.2.8 | **Lift Installation and Testing works** |  | 2025-09-13 | 2026-04-15 |  |  |  |  |  |  |  |  |
| PG-11706 |  | Lift Shaft Survey works | 9.33d | 2025-09-13 | 2025-09-24 | PG-11669 |  |  | 146.07d | 25.67d | Otis (Lifts) [373000 h] | 373,000 | 38003 |
| PG-11707 |  | Guide Rails fixing works | 39.83d | 2025-10-25 | 2025-12-12 | PG-11706, PG-11672 |  |  | 120.4d | 0d | Otis (Lifts) [3386000 h] | 3,386,000 | 38004 |
| PG-11708 |  | Lift Frame fixing works | 24.67d | 2025-12-12 | 2026-01-10 | PG-11707 |  |  | 120.4d | 0d | Otis (Lifts) [987000 h] | 987,000 | 38005 |
| PG-11709 |  | CAR Assembly works | 19.67d | 2026-01-10 | 2026-02-03 | PG-11708 |  |  | 120.4d | 0d | L&T [787000 h] | 787,000 | 38006 |
| PG-11710 |  | Lift Machine Room Works | 30.5d | 2026-02-03 | 2026-03-11 | PG-11709 |  |  | 120.4d | 0d | Otis (Lifts) [1220000 h] | 1,220,000 | 38007 |
| PG-11711 |  | Slow Speed & High Speed Testing works | 30.67d | 2026-03-11 | 2026-04-15 | PG-11673, PG-11710 |  |  | 120.4d | 0d | L&T [1227000 h] | 1,227,000 | 38008 |

| ID | WBS | Activity | Duration | Start | Finish | Predecessors | Complete | Planned start | Planned finish | Total float | Free float | Resources | Cost | MSP Activity ID |
| --- | --- | --- | --- | --- | --- | --- | --- | --- | --- | --- | --- | --- | --- | --- |
|  | 1.3.1.2.9 | **Electrical Panel Works** |  | 2025-07-19 | 2026-02-24 |  |  |  |  |  |  |  |  |  |
|  | 1.3.1.2.9.1 | **Civil Finishing Works** |  | 2025-07-19 | 2025-09-02 |  |  |  |  |  |  |  |  |  |
| PG-11712 |  | Wall Tie rod hole packing & Grinding works. | 13.67d | 2025-07-19 | 2025-08-05 | PG-11494 |  |  |  | 162.57d | 0d | L&T [547000 h] | 547,000 | 42056 |
| PG-11713 |  | Window, Louver and Door fixing works | 7d | 2025-08-05 | 2025-08-13 | PG-11712 |  |  |  | 162.57d | 0d | Fenesta (UPVC Windows) [420000 h] | 420,000 | 42057 |
| PG-11714 |  | Pedestal works | 10d | 2025-08-13 | 2025-08-25 | PG-11713 |  | 2025-08-13 | 2025-08-26 | 162.57d | 0d | Elexir (Electrical) [320000 h] | 320,000 | 42058 |
| PG-11715 |  | Painting works | 6.5d | 2025-08-25 | 2025-09-02 | PG-11714 |  |  |  | 162.57d | 0d | Surfa Coats (Painting) [208000 h] | 208,000 | 42059 |
|  | 1.3.1.2.9.2 | **Electrical Panel works** |  | 2025-09-02 | 2026-02-24 |  |  |  |  |  |  |  |  |  |
| PG-11716 |  | Electrical Panel assembly works | 58.5d | 2025-09-02 | 2025-11-11 | PG-11715 |  |  |  | 162.57d | 0d | Elexir (Electrical) [1872000 h] | 1,872,000 | 42061 |
| PG-11717 |  | Electrical Panel installation and cable termination. | 58.67d | 2025-11-11 | 2026-01-19 | PG-11716 |  |  |  | 162.57d | 0d | Elexir (Electrical) [1877000 h] | 1,877,000 | 42062 |
| PG-11718 |  | Electrical Panel Testing and commissioning works | 30d | 2026-01-19 | 2026-02-24 | PG-11717 |  |  |  | 162.57d | 0d | Elexir (Electrical) [960000 h] | 960,000 | 42063 |
|  | 1.3.1.2.10 | **Entrance Lobby works** |  | 2026-03-18 | 2026-08-04 |  |  |  |  |  |  |  |  |  |
| PG-11719 |  | Flooring Works | 30.5d | 2026-03-18 | 2026-04-22 | PG-11667 |  |  |  | 14.9d | 0d | L&T [1220000 h] | 1,220,000 | 43038 |
| PG-11720 |  | Glass Door and installation Works | 30d | 2026-04-22 | 2026-05-27 | PG-11719 |  |  |  | 14.9d | 0d | L&T [1200000 h] | 1,200,000 | 43039 |
| PG-11722 |  | Canopy Works | 25d | 2026-04-22 | 2026-05-21 | PG-11719 |  |  |  | 34.57d | 19.67d | L&T [1000000 h] | 1,000,000 | 46268 |
| PG-11721 |  | Painting Works | 15d | 2026-05-27 | 2026-06-13 | PG-11720 |  |  |  | 14.9d | 0d | Surfa Coats (Painting) [390000 h] | 390,000 | 43040 |
| PG-11723 |  | Interior Works | 44.67d | 2026-06-13 | 2026-08-04 | PG-11722, PG-11721 |  |  |  | 14.9d | 0d | L&T [1787000 h] | 1,787,000 | 43041 |
|  | 1.3.1.2.11 | **Lightening Arrester works** |  | 2026-01-09 | 2026-01-21 |  |  |  |  |  |  |  |  |  |
| PG-11724 |  | Conductor will be lifted with RCC Works, But Terrace works will be done once Parapet Painting done | 10.33d | 2026-01-09 | 2026-01-21 | PG-11651 |  |  |  | 219.9d | 0d | Surfa Coats (Painting) [269000 h] | 269,000 | 43132 |
|  | 1.3.1.3 | **Tower 3 ( 2B+G+29 ) TYP 4 Units - 118 Units** |  | 2023-10-04 | 2026-10-15 |  |  |  |  |  |  |  |  |  |
|  | 1.3.1.3.1 | **Foundation works** |  | 2023-10-04 | 2024-04-11 |  |  |  |  |  |  |  |  |  |
| PG-11725 |  | Setting out - Marking | 3d | 2023-10-04 A | 2023-10-07 A | PG-0998 SS | 100% |  |  |  |  | L&T [120000 h] | 120,000 | 11754 |
| PG-11726 |  | Excavation Works | 45d | 2023-10-07 A | 2023-11-30 A | PG-11725 | 100% |  |  |  |  | L&T [1800000 h] | 1,800,000 | 11755 |
| PG-11727 |  | Piling Works - 177 Nos | 45d | 2023-12-06 A | 2024-01-30 A | PG-11726 FF+50d | 100% | 2023-12-06 | 2024-01-29 |  |  | L&T [1800000 h] | 1,800,000 | 11756 |
| PG-11728 |  | Backfilling and Consolidation | 19.67d | 2024-01-19 A | 2024-02-13 A | PG-0999, PG-11727 FF+12d | 100% | 2024-01-18 | 2024-02-10 |  |  | L&T [787000 h] | 787,000 | 45984 |
| PG-11729 |  | Waterproofing & PCC works | 15d | 2024-02-09 A | 2024-02-27 A | PG-11728 FF+12d | 100% | 2024-02-08 | 2024-02-26 |  |  | L&T [600000 h] | 600,000 | 11757 |
| PG-11730 |  | Raft Reinforcement | 15d | 2024-02-27 A | 2024-03-15 A | PG-11729 FF+15d | 100% | 2024-02-26 | 2024-03-14 |  |  | L&T [600000 h] | 600,000 | 11758 |
| PG-11731 |  | Raft Formwork | 8d | 2024-03-23 A | 2024-04-02 A | PG-11730 FF+15d | 100% | 2024-03-22 | 2024-04-01 |  |  | L&T [320000 h] | 320,000 | 11759 |
| PG-11732 |  | Raft Concreting | 3d | 2024-04-08 A | 2024-04-11 A | PG-11731 FF+8d | 100% | 2024-04-06 | 2024-04-10 |  |  | L&T [120000 h] | 120,000 | 11760 |

| ID | WBS | Activity | Duration | Start | Finish | Predecessors | Complete | Planned start | Planned finish | Resources | Cost | MSP Activity ID |
| --- | --- | --- | --- | --- | --- | --- | --- | --- | --- | --- | --- | --- |
|  | 1.3.1.3.2 | **Structure works** |  | 2024-04-11 | 2026-01-08 |  |  |  |  |  |  |  |
|  | 1.3.1.3.2.1 | **LBF** |  | 2024-04-11 | 2024-05-10 |  |  |  |  |  |  |  |
|  | 1.3.1.3.2.1.1 | **Columns / shear walls** |  | 2024-04-11 | 2024-04-29 |  |  |  |  |  |  |  |
| PG-11733 |  | Reinforcement | 4d | 2024-04-11 A | 2024-04-16 A | PG-11732 | 100% | 2024-04-10 | 2024-04-15 | L&T [700000 h] | 700,000 | 11764 |
| PG-11735 |  | Concrete | 9.5d | 2024-04-17 A | 2024-04-29 A | PG-11734 FF+5d | 100% | 2024-04-15 | 2024-04-25 | L&T [340000 h] | 340,000 | 11766 |
| PG-11734 |  | Formwork | 4d | 2024-04-17 A | 2024-04-23 A | PG-11733 FF+5d | 100% | 2024-04-16 | 2024-04-20 | L&T [320000 h] | 320,000 | 11765 |
|  | 1.3.1.3.2.1.2 | **Slab, Beams & Staircase** |  | 2024-04-29 | 2024-05-10 |  |  |  |  |  |  |  |
| PG-11736 |  | Formwork | 3d | 2024-04-29 A | 2024-05-02 A | PG-11735 | 100% | 2024-04-26 | 2024-04-30 | L&T [220000 h] | 220,000 | 11768 |
| PG-11737 |  | Reinforcement | 3d | 2024-05-04 A | 2024-05-08 A | PG-11736 FF+5d | 100% | 2024-05-02 | 2024-05-06 | L&T [520000 h] | 520,000 | 11769 |
| PG-11738 |  | Concrete | 1d | 2024-05-09 A | 2024-05-10 A | PG-11737 FS+1d | 100% | 2024-05-07 | 2024-05-08 | L&T [880000 h] | 880,000 | 11770 |
|  | 1.3.1.3.2.2 | **UBF** |  | 2024-05-10 | 2024-06-07 |  |  |  |  |  |  |  |
|  | 1.3.1.3.2.2.1 | **Columns / shear walls** |  | 2024-05-10 | 2024-05-27 |  |  |  |  |  |  |  |
| PG-11739 |  | Reinforcement | 4d | 2024-05-10 A | 2024-05-15 A | PG-11738 | 100% | 2024-05-08 | 2024-05-13 | L&T [700000 h] | 700,000 | 11773 |
| PG-11741 |  | Concrete | 9.5d | 2024-05-15 A | 2024-05-27 A | PG-11740 FF+5d | 100% | 2024-05-13 | 2024-05-23 | L&T [340000 h] | 340,000 | 11775 |
| PG-11740 |  | Formwork | 4d | 2024-05-16 A | 2024-05-21 A | PG-11739 FF+5d | 100% | 2024-05-14 | 2024-05-18 | L&T [320000 h] | 320,000 | 11774 |
|  | 1.3.1.3.2.2.2 | **Slab, Beams & Staircase** |  | 2024-05-27 | 2024-06-07 |  |  |  |  |  |  |  |
| PG-11742 |  | Formwork | 3d | 2024-05-27 A | 2024-05-30 A | PG-11741 | 100% | 2024-05-24 | 2024-05-28 | L&T [220000 h] | 220,000 | 11777 |
| PG-11743 |  | Reinforcement | 3d | 2024-06-01 A | 2024-06-05 A | PG-11742 FF+5d | 100% | 2024-05-30 | 2024-06-03 | L&T [520000 h] | 520,000 | 11778 |
| PG-11744 |  | Concrete | 1d | 2024-06-06 A | 2024-06-07 A | PG-11743 FS+1d | 100% | 2024-06-04 | 2024-06-05 | L&T [880000 h] | 880,000 | 11779 |
|  | 1.3.1.3.2.3 | **Ground Floor** |  | 2024-06-07 | 2024-08-29 |  |  |  |  |  |  |  |
|  | 1.3.1.3.2.3.1 | **Columns / shear walls** |  | 2024-06-07 | 2024-08-19 |  |  |  |  |  |  |  |
| PG-11745 |  | Reinforcement | 4d | 2024-06-07 A | 2024-06-12 A | PG-11744 | 100% | 2024-06-05 | 2024-06-10 | L&T [700000 h] | 700,000 | 11782 |
| PG-11747 |  | Concrete | 7.5d | 2024-08-08 A | 2024-08-19 A | PG-11746 FF+3d | 100% | 2024-08-07 | 2024-08-16 | L&T [340000 h] | 340,000 | 11784 |
| PG-11746 |  | Formwork | 4d | 2024-08-09 A | 2024-08-14 A | PG-10003, PG-11745 FF+4d | 100% | 2024-08-08 | 2024-08-13 | L&T [320000 h] | 320,000 | 11783 |

| ID | WBS | Activity | Duration | Start | Finish | Predecessors | Complete | Planned start | Planned finish | Resources | Cost | MSP Activity ID |
| --- | --- | --- | --- | --- | --- | --- | --- | --- | --- | --- | --- | --- |
|  | 1.3.1.3.2.3.2 | **Slab, Beams & Staircase** |  | 2024-08-19 | 2024-08-29 |  |  |  |  |  |  |  |
| PG-11748 |  | Formwork | 3d | 2024-08-19 A | 2024-08-22 A | PG-11747 | 100% | 2024-08-17 | 2024-08-21 | L&T [220000 h] | 220,000 | 11786 |
| PG-11749 |  | Reinforcement | 3d | 2024-08-23 A | 2024-08-27 A | PG-11748 FF+4d | 100% | 2024-08-22 | 2024-08-26 | L&T [520000 h] | 520,000 | 11787 |
| PG-11750 |  | Concrete | 1d | 2024-08-28 A | 2024-08-29 A | PG-11749 FS+1d | 100% | 2024-08-27 | 2024-08-28 | L&T [880000 h] | 880,000 | 11788 |
|  | 1.3.1.3.2.4 | **Floor 01** |  | 2024-08-29 | 2024-09-23 |  |  |  |  |  |  |  |
|  | 1.3.1.3.2.4.1 | **Columns / shear walls** |  | 2024-08-29 | 2024-09-11 |  |  |  |  |  |  |  |
| PG-11751 |  | Reinforcement | 4d | 2024-08-29 A | 2024-09-03 A | PG-11750 | 100% | 2024-08-28 | 2024-09-02 | L&T [700000 h] | 700,000 | 11791 |
| PG-11753 |  | Concrete | 7.5d | 2024-09-02 A | 2024-09-11 A | PG-11752 FF+3d | 100% | 2024-08-31 | 2024-09-09 | L&T [340000 h] | 340,000 | 11793 |
| PG-11752 |  | Formwork | 4d | 2024-09-03 A | 2024-09-07 A | PG-11751 FF+4d | 100% | 2024-09-02 | 2024-09-06 | L&T [320000 h] | 320,000 | 11792 |
|  | 1.3.1.3.2.4.2 | **Slab, Beams & Staircase** |  | 2024-09-11 | 2024-09-23 |  |  |  |  |  |  |  |
| PG-11754 |  | Formwork | 3d | 2024-09-11 A | 2024-09-16 A | PG-11753 | 100% | 2024-09-10 | 2024-09-13 | L&T [220000 h] | 220,000 | 11795 |
| PG-11755 |  | Reinforcement | 3d | 2024-09-17 A | 2024-09-20 A | PG-11754 FF+4d | 100% | 2024-09-14 | 2024-09-18 | L&T [520000 h] | 520,000 | 11796 |
| PG-11756 |  | Concrete | 1d | 2024-09-21 A | 2024-09-23 A | PG-11755 FS+1d | 100% | 2024-09-19 | 2024-09-20 | L&T [880000 h] | 880,000 | 11797 |
|  | 1.3.1.3.2.5 | **Floor 02** |  | 2024-09-23 | 2024-10-17 |  |  |  |  |  |  |  |
|  | 1.3.1.3.2.5.1 | **Columns / shear walls** |  | 2024-09-23 | 2024-10-07 |  |  |  |  |  |  |  |
| PG-11757 |  | Reinforcement | 4d | 2024-09-23 A | 2024-09-27 A | PG-11756 | 100% | 2024-09-20 | 2024-09-25 | L&T [700000 h] | 700,000 | 11800 |
| PG-11758 |  | Formwork | 4d | 2024-09-27 A | 2024-10-03 A | PG-11757 FF+4d | 100% | 2024-09-25 | 2024-09-30 | L&T [320000 h] | 320,000 | 11801 |
| PG-11759 |  | Concrete | 3.67d | 2024-10-01 A | 2024-10-07 A | PG-11758 FF+3d | 100% | 2024-09-28 | 2024-10-03 | L&T [340000 h] | 340,000 | 11802 |
|  | 1.3.1.3.2.5.2 | **Slab, Beams & Staircase** |  | 2024-10-07 | 2024-10-17 |  |  |  |  |  |  |  |
| PG-11760 |  | Formwork | 3d | 2024-10-07 A | 2024-10-10 A | PG-11759 | 100% | 2024-10-04 | 2024-10-08 | L&T [220000 h] | 220,000 | 11804 |
| PG-11761 |  | Reinforcement | 3d | 2024-10-11 A | 2024-10-15 A | PG-11760 FF+4d | 100% | 2024-10-09 | 2024-10-12 | L&T [520000 h] | 520,000 | 11805 |
| PG-11762 |  | Concrete | 1d | 2024-10-16 A | 2024-10-17 A | PG-11761 FS+1d | 100% | 2024-10-14 | 2024-10-15 | L&T [880000 h] | 880,000 | 11806 |
|  | 1.3.1.3.2.6 | **Floor 03** |  | 2024-10-17 | 2024-11-12 |  |  |  |  |  |  |  |
|  | 1.3.1.3.2.6.1 | **Columns / shear walls** |  | 2024-10-17 | 2024-10-30 |  |  |  |  |  |  |  |
| PG-11763 |  | Reinforcement | 4d | 2024-10-17 A | 2024-10-22 A | PG-11762 | 100% | 2024-10-15 | 2024-10-19 | L&T [700000 h] | 700,000 | 11809 |
| PG-11764 |  | Formwork | 4d | 2024-10-22 A | 2024-10-26 A | PG-11763 FF+4d | 100% | 2024-10-19 | 2024-10-24 | L&T [320000 h] | 320,000 | 11810 |
| PG-11765 |  | Concrete | 3.67d | 2024-10-25 A | 2024-10-30 A | PG-11764 FF+3d | 100% | 2024-10-23 | 2024-10-26 | L&T [340000 h] | 340,000 | 11811 |

| ID | WBS | Activity | Duration | Start | Finish | Predecessors | Complete | Planned start | Planned finish | Resources | Cost | MSP Activity ID |
| --- | --- | --- | --- | --- | --- | --- | --- | --- | --- | --- | --- | --- |
|  | 1.3.1.3.2.6.2 | **Slab, Beams & Staircase** |  | 2024-10-30 | 2024-11-12 |  |  |  |  |  |  |  |
| PG-11766 |  | Formwork | 3d | 2024-10-30 A | 2024-11-04 A | PG-11765 | 100% | 2024-10-28 | 2024-10-31 | L&T [220000 h] | 220,000 | 11813 |
| PG-11767 |  | Reinforcement | 3d | 2024-11-05 A | 2024-11-08 A | PG-11766 FF+4d | 100% | 2024-11-02 | 2024-11-06 | L&T [520000 h] | 520,000 | 11814 |
| PG-11768 |  | Concrete | 1d | 2024-11-09 A | 2024-11-12 A | PG-11767 FS+1d | 100% | 2024-11-07 | 2024-11-08 | L&T [880000 h] | 880,000 | 11815 |
|  | 1.3.1.3.2.7 | **Floor 04** |  | 2024-11-12 | 2024-12-02 |  |  |  |  |  |  |  |
|  | 1.3.1.3.2.7.1 | **Columns / shear walls** |  | 2024-11-12 | 2024-11-21 |  |  |  |  |  |  |  |
| PG-11769 |  | Reinforcement | 4d | 2024-11-12 A | 2024-11-16 A | PG-11768 | 100% | 2024-11-08 | 2024-11-13 | L&T [700000 h] | 700,000 | 11818 |
| PG-11770 |  | Formwork | 4d | 2024-11-16 A | 2024-11-21 A | PG-11769 FF+4d | 100% | 2024-11-13 | 2024-11-18 | L&T [320000 h] | 320,000 | 11819 |
|  | 1.3.1.3.2.7.2 | **Slab, Beams & Staircase** |  | 2024-11-22 | 2024-12-02 |  |  |  |  |  |  |  |
| PG-11771 |  | Formwork | 3d | 2024-11-22 A | 2024-11-26 A | PG-11770 FF+4d | 100% | 2024-11-19 | 2024-11-22 | L&T [220000 h] | 220,000 | 11821 |
| PG-11772 |  | Reinforcement | 3d | 2024-11-27 A | 2024-11-30 A | PG-11771 FF+4d | 100% | 2024-11-23 | 2024-11-27 | L&T [520000 h] | 520,000 | 11822 |
| PG-11773 |  | Concrete | 1d | 2024-11-30 A | 2024-12-02 A | PG-11772 | 100% | 2024-11-27 | 2024-11-28 | L&T [880000 h] | 880,000 | 11823 |
|  | 1.3.1.3.2.8 | **Floor 05** |  | 2024-12-02 | 2024-12-23 |  |  |  |  |  |  |  |
|  | 1.3.1.3.2.8.1 | **Columns / shear walls** |  | 2024-12-02 | 2024-12-11 |  |  |  |  |  |  |  |
| PG-11774 |  | Reinforcement | 4d | 2024-12-02 A | 2024-12-06 A | PG-11773 | 100% | 2024-11-28 | 2024-12-03 | L&T [700000 h] | 700,000 | 11826 |
| PG-11775 |  | Formwork | 4d | 2024-12-06 A | 2024-12-11 A | PG-11774 FF+4d | 100% | 2024-12-03 | 2024-12-07 | L&T [320000 h] | 320,000 | 11827 |
|  | 1.3.1.3.2.8.2 | **Slab, Beams & Staircase** |  | 2024-12-12 | 2024-12-23 |  |  |  |  |  |  |  |
| PG-11776 |  | Formwork | 3d | 2024-12-12 A | 2024-12-16 A | PG-11775 FF+4d | 100% | 2024-12-09 | 2024-12-12 | L&T [220000 h] | 220,000 | 11829 |
| PG-11777 |  | Reinforcement | 3d | 2024-12-17 A | 2024-12-20 A | PG-11776 FF+4d | 100% | 2024-12-13 | 2024-12-17 | L&T [520000 h] | 520,000 | 11830 |
| PG-11778 |  | Concrete | 1d | 2024-12-20 A | 2024-12-23 A | PG-11777 | 100% | 2024-12-17 | 2024-12-18 | L&T [880000 h] | 880,000 | 11831 |
|  | 1.3.1.3.2.9 | **Floor 06** |  | 2024-12-23 | 2025-01-07 |  |  |  |  |  |  |  |
|  | 1.3.1.3.2.9.1 | **Columns / shear walls** |  | 2024-12-23 | 2025-01-01 |  |  |  |  |  |  |  |
| PG-11779 |  | Reinforcement | 4d | 2024-12-23 A | 2024-12-27 A | PG-11778 | 100% | 2024-12-18 | 2024-12-23 | L&T [700000 h] | 700,000 | 11834 |
| PG-11780 |  | Formwork | 4d | 2024-12-27 A | 2025-01-01 A | PG-11779 FF+4d | 100% | 2024-12-23 | 2024-12-27 | L&T [320000 h] | 320,000 | 11835 |

| ID | WBS | Activity | Duration | Start | Finish | Predecessors | Complete | Planned start | Planned finish | Resources | Cost | MSP Activity ID |
| --- | --- | --- | --- | --- | --- | --- | --- | --- | --- | --- | --- | --- |
|  | 1.3.1.3.2.9.2 | **Slab, Beams & Staircase** |  | 2024-12-31 | 2025-01-07 |  |  |  |  |  |  |  |
| PG-11781 |  | Formwork | 3d | 2024-12-31 A | 2025-01-03 A | PG-11780 FF+2d | 100% | 2024-12-26 | 2024-12-30 | L&T [220000 h] | 220,000 | 11837 |
| PG-11782 |  | Reinforcement | 3d | 2025-01-02 A | 2025-01-06 A | PG-11781 FF+2d | 100% | 2024-12-28 | 2025-01-01 | L&T [520000 h] | 520,000 | 11838 |
| PG-11783 |  | Concrete | 1d | 2025-01-06 A | 2025-01-07 A | PG-11782 | 100% | 2025-01-01 | 2025-01-02 | L&T [880000 h] | 880,000 | 11839 |
|  | 1.3.1.3.2.10 | **Floor 07** |  | 2025-01-07 | 2025-01-22 |  |  |  |  |  |  |  |
|  | 1.3.1.3.2.10.1 | **Columns / shear walls** |  | 2025-01-07 | 2025-01-16 |  |  |  |  |  |  |  |
| PG-11784 |  | Reinforcement | 4d | 2025-01-07 A | 2025-01-11 A | PG-11783 | 100% | 2025-01-02 | 2025-01-07 | L&T [700000 h] | 700,000 | 11842 |
| PG-11785 |  | Formwork | 4d | 2025-01-11 A | 2025-01-16 A | PG-11784 FF+4d | 100% | 2025-01-07 | 2025-01-11 | L&T [320000 h] | 320,000 | 11843 |
|  | 1.3.1.3.2.10.2 | **Slab, Beams & Staircase** |  | 2025-01-15 | 2025-01-22 |  |  |  |  |  |  |  |
| PG-11786 |  | Formwork | 3d | 2025-01-15 A | 2025-01-18 A | PG-11785 FF+2d | 100% | 2025-01-10 | 2025-01-14 | L&T [220000 h] | 220,000 | 11845 |
| PG-11787 |  | Reinforcement | 3d | 2025-01-17 A | 2025-01-21 A | PG-11786 FF+2d | 100% | 2025-01-13 | 2025-01-16 | L&T [520000 h] | 520,000 | 11846 |
| PG-11788 |  | Concrete | 1d | 2025-01-21 A | 2025-01-22 A | PG-11787 | 100% | 2025-01-16 | 2025-01-17 | L&T [880000 h] | 880,000 | 11847 |
|  | 1.3.1.3.2.11 | **Floor 08** |  | 2025-01-22 | 2025-02-07 |  |  |  |  |  |  |  |
|  | 1.3.1.3.2.11.1 | **Columns / shear walls** |  | 2025-01-22 | 2025-01-31 |  |  |  |  |  |  |  |
| PG-11789 |  | Reinforcement | 4d | 2025-01-22 A | 2025-01-27 A | PG-11788 | 100% | 2025-01-17 | 2025-01-22 | L&T [700000 h] | 700,000 | 11850 |
| PG-11790 |  | Formwork | 4d | 2025-01-27 A | 2025-01-31 A | PG-11789 FF+4d | 100% | 2025-01-22 | 2025-01-27 | L&T [320000 h] | 320,000 | 11851 |
|  | 1.3.1.3.2.11.2 | **Slab, Beams & Staircase** |  | 2025-01-30 | 2025-02-07 |  |  |  |  |  |  |  |
| PG-11791 |  | Formwork | 3d | 2025-01-30 A | 2025-02-04 A | PG-11790 FF+2d | 100% | 2025-01-25 | 2025-01-29 | L&T [220000 h] | 220,000 | 11853 |
| PG-11792 |  | Reinforcement | 3d | 2025-02-03 A | 2025-02-06 A | PG-11791 FF+2d | 100% | 2025-01-28 | 2025-01-31 | L&T [520000 h] | 520,000 | 11854 |
| PG-11793 |  | Concrete | 1d | 2025-02-06 A | 2025-02-07 A | PG-11792 | 100% | 2025-01-31 | 2025-02-01 | L&T [880000 h] | 880,000 | 11855 |
|  | 1.3.1.3.2.12 | **Floor 09** |  | 2025-02-07 | 2025-02-24 |  |  |  |  |  |  |  |
|  | 1.3.1.3.2.12.1 | **Columns / shear walls** |  | 2025-02-07 | 2025-02-17 |  |  |  |  |  |  |  |
| PG-11794 |  | Reinforcement | 4d | 2025-02-07 A | 2025-02-12 A | PG-11793 | 100% | 2025-02-01 | 2025-02-06 | L&T [700000 h] | 700,000 | 11858 |
| PG-11795 |  | Formwork | 4d | 2025-02-12 A | 2025-02-17 A | PG-11794 FF+4d | 100% | 2025-02-06 | 2025-02-11 | L&T [320000 h] | 320,000 | 11859 |

| ID | WBS | Activity | Duration | Start | Finish | Predecessors | Complete | Planned start | Planned finish | Resources | Cost | MSP Activity ID |
| --- | --- | --- | --- | --- | --- | --- | --- | --- | --- | --- | --- | --- |
|  | 1.3.1.3.2.12.2 | **Slab, Beams & Staircase** |  | 2025-02-15 | 2025-02-24 |  |  |  |  |  |  |  |
| PG-11796 |  | Formwork | 3d | 2025-02-15 A | 2025-02-19 A | PG-11795 FF+2d | 100% | 2025-02-10 | 2025-02-13 | L&T [220000 h] | 220,000 | 11861 |
| PG-11797 |  | Reinforcement | 3d | 2025-02-18 A | 2025-02-22 A | PG-11796 FF+2d | 100% | 2025-02-12 | 2025-02-15 | L&T [520000 h] | 520,000 | 11862 |
| PG-11798 |  | Concrete | 1d | 2025-02-22 A | 2025-02-24 A | PG-11797 | 100% | 2025-02-15 | 2025-02-17 | L&T [880000 h] | 880,000 | 11863 |
|  | 1.3.1.3.2.13 | **Floor 10** |  | 2025-02-24 | 2025-03-11 |  |  |  |  |  |  |  |
|  | 1.3.1.3.2.13.1 | **Columns / shear walls** |  | 2025-02-24 | 2025-03-05 |  |  |  |  |  |  |  |
| PG-11799 |  | Reinforcement | 4d | 2025-02-24 A | 2025-02-28 A | PG-11798 | 100% | 2025-02-17 | 2025-02-21 | L&T [700000 h] | 700,000 | 11866 |
| PG-11800 |  | Formwork | 4d | 2025-02-28 A | 2025-03-05 A | PG-11799 FF+4d | 100% | 2025-02-21 | 2025-02-26 | L&T [320000 h] | 320,000 | 11867 |
|  | 1.3.1.3.2.13.2 | **Slab, Beams & Staircase** |  | 2025-03-04 | 2025-03-11 |  |  |  |  |  |  |  |
| PG-11801 |  | Formwork | 3d | 2025-03-04 A | 2025-03-07 A | PG-11800 FF+2d | 100% | 2025-02-25 | 2025-02-28 | L&T [220000 h] | 220,000 | 11869 |
| PG-11802 |  | Reinforcement | 3d | 2025-03-06 A | 2025-03-10 A | PG-11801 FF+2d | 100% | 2025-02-27 | 2025-03-03 | L&T [520000 h] | 520,000 | 11870 |
| PG-11803 |  | Concrete | 1d | 2025-03-10 A | 2025-03-11 A | PG-11802 | 100% | 2025-03-03 | 2025-03-04 | L&T [880000 h] | 880,000 | 11871 |
|  | 1.3.1.3.2.14 | **Floor 11** |  | 2025-03-11 | 2025-03-27 |  |  |  |  |  |  |  |
|  | 1.3.1.3.2.14.1 | **Columns / shear walls** |  | 2025-03-11 | 2025-03-21 |  |  |  |  |  |  |  |
| PG-11804 |  | Reinforcement | 4d | 2025-03-11 A | 2025-03-15 A | PG-11803 | 100% | 2025-03-04 | 2025-03-08 | L&T [700000 h] | 700,000 | 11874 |
| PG-11805 |  | Formwork | 4d | 2025-03-15 A | 2025-03-21 A | PG-11804 FF+4d | 100% | 2025-03-08 | 2025-03-13 | L&T [320000 h] | 320,000 | 11875 |
|  | 1.3.1.3.2.14.2 | **Slab, Beams & Staircase** |  | 2025-03-20 | 2025-03-27 |  |  |  |  |  |  |  |
| PG-11806 |  | Formwork | 3d | 2025-03-20 A | 2025-03-24 A | PG-11805 FF+2d | 100% | 2025-03-12 | 2025-03-15 | L&T [220000 h] | 220,000 | 11877 |
| PG-11807 |  | Reinforcement | 3d | 2025-03-22 A | 2025-03-26 A | PG-11806 FF+2d | 100% |  |  | L&T [520000 h] | 520,000 | 11878 |
| PG-11808 |  | Concrete | 1d | 2025-03-26 A | 2025-03-27 A | PG-11807 | 100% |  |  | L&T [880000 h] | 880,000 | 11879 |
|  | 1.3.1.3.2.15 | **Floor 12** |  | 2025-03-27 | 2025-04-14 |  |  |  |  |  |  |  |
|  | 1.3.1.3.2.15.1 | **Columns / shear walls** |  | 2025-03-27 | 2025-04-05 |  |  |  |  |  |  |  |
| PG-11809 |  | Reinforcement | 4d | 2025-03-27 A | 2025-04-01 A | PG-11808 | 100% |  |  | L&T [700000 h] | 700,000 | 11882 |
| PG-11810 |  | Formwork | 4d | 2025-04-01 A | 2025-04-05 A | PG-11809 FF+4d | 100% | 2025-03-31 | 2025-04-04 | L&T [320000 h] | 320,000 | 11883 |

| ID | WBS | Activity | Duration | Start | Finish | Predecessors | Complete | Remaining | Planned start | Planned finish | Total float | Resources | Cost | MSP Activity ID |
| --- | --- | --- | --- | --- | --- | --- | --- | --- | --- | --- | --- | --- | --- | --- |
|  | 1.3.1.3.2.15.2 | **Slab, Beams & Staircase** |  | 2025-04-04 | 2025-04-14 |  |  |  |  |  |  |  |  |  |
| PG-11811 |  | Formwork | 3d | 2025-04-04 A | 2025-04-08 A | PG-11810 FF+2d | 100% |  | 2025-04-03 | 2025-04-07 |  | L&T [220000 h] | 220,000 | 11885 |
| PG-11812 |  | Reinforcement | 3d | 2025-04-07 A | 2025-04-12 A | PG-11811 FF+2d | 100% |  | 2025-04-07 | 2025-04-10 |  | L&T [520000 h] | 520,000 | 11886 |
| PG-11813 |  | Concrete | 1d | 2025-04-12 A | 2025-04-14 A | PG-11812 | 100% |  | 2025-04-11 | 2025-04-12 |  | L&T [880000 h] | 880,000 | 11887 |
|  | 1.3.1.3.2.16 | **Floor 13** |  | 2025-04-14 | 2025-04-30 |  |  |  |  |  |  |  |  |  |
|  | 1.3.1.3.2.16.1 | **Columns / shear walls** |  | 2025-04-14 | 2025-04-25 |  |  |  |  |  |  |  |  |  |
| PG-11814 |  | Reinforcement | 4d | 2025-04-14 A | 2025-04-21 A | PG-11813 | 100% |  | 2025-04-12 | 2025-04-17 |  | L&T [700000 h] | 700,000 | 11890 |
| PG-11815 |  | Formwork | 4d | 2025-04-21 A | 2025-04-25 A | PG-11814 FF+4d | 100% |  | 2025-04-19 | 2025-04-24 |  | L&T [320000 h] | 320,000 | 11891 |
|  | 1.3.1.3.2.16.2 | **Slab, Beams & Staircase** |  | 2025-04-24 | 2025-04-30 |  |  |  |  |  |  |  |  |  |
| PG-11816 |  | Formwork | 3d | 2025-04-24 A | 2025-04-26 | PG-11815 FF+2d | 51% | 1.47d | 2025-04-23 | 2025-04-26 | 0d | L&T [220000 h] | 220,000 | 11893 |
| PG-11817 |  | Reinforcement | 3d | 2025-04-26 | 2025-04-29 | PG-11816 FF+2d |  |  |  |  | 0d | L&T [520000 h] | 520,000 | 11894 |
| PG-11818 |  | Concrete | 1d | 2025-04-30 | 2025-04-30 | PG-11817 |  |  |  |  | 0d | L&T [880000 h] | 880,000 | 11895 |
|  | 1.3.1.3.2.17 | **Floor 14** |  | 2025-05-01 | 2025-05-15 |  |  |  |  |  |  |  |  |  |
|  | 1.3.1.3.2.17.1 | **Columns / shear walls** |  | 2025-05-01 | 2025-05-09 |  |  |  |  |  |  |  |  |  |
| PG-11819 |  | Reinforcement | 4d | 2025-05-01 | 2025-05-05 | PG-11818 |  |  |  |  | 0d | L&T [700000 h] | 700,000 | 11898 |
| PG-11820 |  | Formwork | 4d | 2025-05-06 | 2025-05-09 | PG-11819 FF+4d |  |  |  |  | 0d | L&T [320000 h] | 320,000 | 11899 |
|  | 1.3.1.3.2.17.2 | **Slab, Beams & Staircase** |  | 2025-05-09 | 2025-05-15 |  |  |  |  |  |  |  |  |  |
| PG-11821 |  | Formwork | 3d | 2025-05-09 | 2025-05-12 | PG-11820 FF+2d |  |  |  |  | 0d | L&T [220000 h] | 220,000 | 11901 |
| PG-11822 |  | Reinforcement | 3d | 2025-05-12 | 2025-05-14 | PG-11821 FF+2d |  |  |  |  | 0d | L&T [520000 h] | 520,000 | 11902 |
| PG-11823 |  | Concrete | 1d | 2025-05-15 | 2025-05-15 | PG-11822 |  |  |  |  | 0d | L&T [880000 h] | 880,000 | 11903 |
|  | 1.3.1.3.2.18 | **Floor 15** |  | 2025-05-16 | 2025-05-30 |  |  |  |  |  |  |  |  |  |
|  | 1.3.1.3.2.18.1 | **Columns / shear walls** |  | 2025-05-16 | 2025-05-24 |  |  |  |  |  |  |  |  |  |
| PG-11824 |  | Reinforcement | 4d | 2025-05-16 | 2025-05-20 | PG-11823 |  |  |  |  | 0d | L&T [700000 h] | 700,000 | 11906 |
| PG-11825 |  | Formwork | 4d | 2025-05-21 | 2025-05-24 | PG-11824 FF+4d |  |  |  |  | 0d | L&T [320000 h] | 320,000 | 11907 |

| ID | WBS | Activity | Duration | Start | Finish | Predecessors | Total float | Resources | Cost | MSP Activity ID |
| --- | --- | --- | --- | --- | --- | --- | --- | --- | --- | --- |
|  | 1.3.1.3.2.18.2 | **Slab, Beams & Staircase** |  | 2025-05-24 | 2025-05-30 |  |  |  |  |  |
| PG-11826 |  | Formwork | 3d | 2025-05-24 | 2025-05-27 | PG-11825 FF+2d | 0d | L&T [220000 h] | 220,000 | 11909 |
| PG-11827 |  | Reinforcement | 3d | 2025-05-27 | 2025-05-29 | PG-11826 FF+2d | 0d | L&T [520000 h] | 520,000 | 11910 |
| PG-11828 |  | Concrete | 1d | 2025-05-30 | 2025-05-30 | PG-11827 | 0d | L&T [880000 h] | 880,000 | 11911 |
|  | 1.3.1.3.2.19 | **Floor 16** |  | 2025-05-31 | 2025-06-12 |  |  |  |  |  |
|  | 1.3.1.3.2.19.1 | **Columns / shear walls** |  | 2025-05-31 | 2025-06-06 |  |  |  |  |  |
| PG-11829 |  | Reinforcement | 4d | 2025-05-31 | 2025-06-04 | PG-11828 | 0d | L&T [700000 h] | 700,000 | 11914 |
| PG-11830 |  | Formwork | 4d | 2025-06-03 | 2025-06-06 | PG-11829 FF+2d | 0d | L&T [320000 h] | 320,000 | 11915 |
|  | 1.3.1.3.2.19.2 | **Slab, Beams & Staircase** |  | 2025-06-06 | 2025-06-12 |  |  |  |  |  |
| PG-11831 |  | Formwork | 3d | 2025-06-06 | 2025-06-09 | PG-11830 FF+2d | 0d | L&T [220000 h] | 220,000 | 11917 |
| PG-11832 |  | Reinforcement | 3d | 2025-06-09 | 2025-06-11 | PG-11831 FF+2d | 0d | L&T [520000 h] | 520,000 | 11918 |
| PG-11833 |  | Concrete | 1d | 2025-06-12 | 2025-06-12 | PG-11832 | 0d | L&T [880000 h] | 880,000 | 11919 |
|  | 1.3.1.3.2.20 | **Floor 17** |  | 2025-06-13 | 2025-06-25 |  |  |  |  |  |
|  | 1.3.1.3.2.20.1 | **Columns / shear walls** |  | 2025-06-13 | 2025-06-19 |  |  |  |  |  |
| PG-11834 |  | Reinforcement | 4d | 2025-06-13 | 2025-06-17 | PG-11833 | 0d | L&T [700000 h] | 700,000 | 11922 |
| PG-11835 |  | Formwork | 4d | 2025-06-16 | 2025-06-19 | PG-11834 FF+2d | 0d | L&T [320000 h] | 320,000 | 11923 |
|  | 1.3.1.3.2.20.2 | **Slab, Beams & Staircase** |  | 2025-06-19 | 2025-06-25 |  |  |  |  |  |
| PG-11836 |  | Formwork | 3d | 2025-06-19 | 2025-06-21 | PG-11835 FF+2d | 0d | L&T [220000 h] | 220,000 | 11925 |
| PG-11837 |  | Reinforcement | 3d | 2025-06-21 | 2025-06-24 | PG-11836 FF+2d | 0d | L&T [520000 h] | 520,000 | 11926 |
| PG-11838 |  | Concrete | 1d | 2025-06-25 | 2025-06-25 | PG-11837 | 0d | L&T [880000 h] | 880,000 | 11927 |
|  | 1.3.1.3.2.21 | **Floor 18** |  | 2025-06-26 | 2025-07-08 |  |  |  |  |  |
|  | 1.3.1.3.2.21.1 | **Columns / shear walls** |  | 2025-06-26 | 2025-07-02 |  |  |  |  |  |
| PG-11839 |  | Reinforcement | 4d | 2025-06-26 | 2025-06-30 | PG-11838 | 0d | L&T [700000 h] | 700,000 | 11930 |
| PG-11840 |  | Formwork | 4d | 2025-06-28 | 2025-07-02 | PG-11839 FF+2d | 0d | L&T [320000 h] | 320,000 | 11931 |

| ID | WBS | Activity | Duration | Start | Finish | Predecessors | Total float | Resources | Cost | MSP Activity ID |
| --- | --- | --- | --- | --- | --- | --- | --- | --- | --- | --- |
|  | 1.3.1.3.2.21.2 | **Slab, Beams & Staircase** |  | 2025-07-02 | 2025-07-08 |  |  |  |  |  |
| PG-11841 |  | Formwork | 3d | 2025-07-02 | 2025-07-04 | PG-11840 FF+2d | 0d | L&T [220000 h] | 220,000 | 11933 |
| PG-11842 |  | Reinforcement | 3d | 2025-07-04 | 2025-07-07 | PG-11841 FF+2d | 0d | L&T [520000 h] | 520,000 | 11934 |
| PG-11843 |  | Concrete | 1d | 2025-07-08 | 2025-07-08 | PG-11842 | 0d | L&T [880000 h] | 880,000 | 11935 |
|  | 1.3.1.3.2.22 | **Floor 19** |  | 2025-07-09 | 2025-07-21 |  |  |  |  |  |
|  | 1.3.1.3.2.22.1 | **Columns / shear walls** |  | 2025-07-09 | 2025-07-15 |  |  |  |  |  |
| PG-11844 |  | Reinforcement | 4d | 2025-07-09 | 2025-07-12 | PG-11843 | 0d | L&T [700000 h] | 700,000 | 11938 |
| PG-11845 |  | Formwork | 4d | 2025-07-11 | 2025-07-15 | PG-11844 FF+2d | 0d | L&T [320000 h] | 320,000 | 11939 |
|  | 1.3.1.3.2.22.2 | **Slab, Beams & Staircase** |  | 2025-07-15 | 2025-07-21 |  |  |  |  |  |
| PG-11846 |  | Formwork | 3d | 2025-07-15 | 2025-07-17 | PG-11845 FF+2d | 0d | L&T [220000 h] | 220,000 | 11941 |
| PG-11847 |  | Reinforcement | 3d | 2025-07-17 | 2025-07-19 | PG-11846 FF+2d | 0d | L&T [520000 h] | 520,000 | 11942 |
| PG-11848 |  | Concrete | 1d | 2025-07-21 | 2025-07-21 | PG-11847 | 0d | L&T [880000 h] | 880,000 | 11943 |
|  | 1.3.1.3.2.23 | **Floor 20** |  | 2025-07-22 | 2025-08-02 |  |  |  |  |  |
|  | 1.3.1.3.2.23.1 | **Columns / shear walls** |  | 2025-07-22 | 2025-07-28 |  |  |  |  |  |
| PG-11849 |  | Reinforcement | 4d | 2025-07-22 | 2025-07-25 | PG-11848 | 0d | L&T [700000 h] | 700,000 | 11946 |
| PG-11850 |  | Formwork | 4d | 2025-07-24 | 2025-07-28 | PG-11849 FF+2d | 0d | L&T [320000 h] | 320,000 | 11947 |
|  | 1.3.1.3.2.23.2 | **Slab, Beams & Staircase** |  | 2025-07-28 | 2025-08-02 |  |  |  |  |  |
| PG-11851 |  | Formwork | 3d | 2025-07-28 | 2025-07-30 | PG-11850 FF+2d | 0d | L&T [220000 h] | 220,000 | 11949 |
| PG-11852 |  | Reinforcement | 3d | 2025-07-30 | 2025-08-01 | PG-11851 FF+2d | 0d | L&T [520000 h] | 520,000 | 11950 |
| PG-11853 |  | Concrete | 1d | 2025-08-02 | 2025-08-02 | PG-11852 | 0d | L&T [880000 h] | 880,000 | 11951 |
|  | 1.3.1.3.2.24 | **Floor 21** |  | 2025-08-04 | 2025-08-16 |  |  |  |  |  |
|  | 1.3.1.3.2.24.1 | **Columns / shear walls** |  | 2025-08-04 | 2025-08-09 |  |  |  |  |  |
| PG-11854 |  | Reinforcement | 4d | 2025-08-04 | 2025-08-07 | PG-11853 | 0d | L&T [700000 h] | 700,000 | 11954 |
| PG-11855 |  | Formwork | 4d | 2025-08-06 | 2025-08-09 | PG-11854 FF+2d | 0d | L&T [320000 h] | 320,000 | 11955 |

| ID | WBS | Activity | Duration | Start | Finish | Predecessors | Total float | Resources | Cost | MSP Activity ID |
| --- | --- | --- | --- | --- | --- | --- | --- | --- | --- | --- |
|  | 1.3.1.3.2.24.2 | **Slab, Beams & Staircase** |  | 2025-08-09 | 2025-08-16 |  |  |  |  |  |
| PG-11856 |  | Formwork | 3d | 2025-08-09 | 2025-08-12 | PG-11855 FF+2d | 0d | L&T [220000 h] | 220,000 | 11957 |
| PG-11857 |  | Reinforcement | 3d | 2025-08-12 | 2025-08-14 | PG-11856 FF+2d | 0d | L&T [520000 h] | 520,000 | 11958 |
| PG-11858 |  | Concrete | 1d | 2025-08-16 | 2025-08-16 | PG-11857 | 0d | L&T [880000 h] | 880,000 | 11959 |
|  | 1.3.1.3.2.25 | **Floor 22** |  | 2025-08-18 | 2025-08-29 |  |  |  |  |  |
|  | 1.3.1.3.2.25.1 | **Columns / shear walls** |  | 2025-08-18 | 2025-08-23 |  |  |  |  |  |
| PG-11859 |  | Reinforcement | 4d | 2025-08-18 | 2025-08-21 | PG-11858 | 0d | L&T [700000 h] | 700,000 | 11962 |
| PG-11860 |  | Formwork | 4d | 2025-08-20 | 2025-08-23 | PG-11859 FF+2d | 0d | L&T [320000 h] | 320,000 | 11963 |
|  | 1.3.1.3.2.25.2 | **Slab, Beams & Staircase** |  | 2025-08-23 | 2025-08-29 |  |  |  |  |  |
| PG-11861 |  | Formwork | 3d | 2025-08-23 | 2025-08-26 | PG-11860 FF+2d | 0d | L&T [220000 h] | 220,000 | 11965 |
| PG-11862 |  | Reinforcement | 3d | 2025-08-26 | 2025-08-28 | PG-11861 FF+2d | 0d | L&T [520000 h] | 520,000 | 11966 |
| PG-11863 |  | Concrete | 1d | 2025-08-29 | 2025-08-29 | PG-11862 | 0d | L&T [880000 h] | 880,000 | 11967 |
|  | 1.3.1.3.2.26 | **Floor 23** |  | 2025-08-30 | 2025-09-11 |  |  |  |  |  |
|  | 1.3.1.3.2.26.1 | **Columns / shear walls** |  | 2025-08-30 | 2025-09-05 |  |  |  |  |  |
| PG-11864 |  | Reinforcement | 4d | 2025-08-30 | 2025-09-03 | PG-11863 | 0d | L&T [700000 h] | 700,000 | 11970 |
| PG-11865 |  | Formwork | 4d | 2025-09-02 | 2025-09-05 | PG-11864 FF+2d | 0d | L&T [320000 h] | 320,000 | 11971 |
|  | 1.3.1.3.2.26.2 | **Slab, Beams & Staircase** |  | 2025-09-05 | 2025-09-11 |  |  |  |  |  |
| PG-11866 |  | Formwork | 3d | 2025-09-05 | 2025-09-08 | PG-11865 FF+2d | 0d | L&T [220000 h] | 220,000 | 11973 |
| PG-11867 |  | Reinforcement | 3d | 2025-09-08 | 2025-09-10 | PG-11866 FF+2d | 0d | L&T [520000 h] | 520,000 | 11974 |
| PG-11868 |  | Concrete | 1d | 2025-09-11 | 2025-09-11 | PG-11867 | 0d | L&T [880000 h] | 880,000 | 11975 |
|  | 1.3.1.3.2.27 | **Floor 24** |  | 2025-09-12 | 2025-09-24 |  |  |  |  |  |
|  | 1.3.1.3.2.27.1 | **Columns / shear walls** |  | 2025-09-12 | 2025-09-18 |  |  |  |  |  |
| PG-11869 |  | Reinforcement | 4d | 2025-09-12 | 2025-09-16 | PG-11868 | 0d | L&T [700000 h] | 700,000 | 11978 |
| PG-11870 |  | Formwork | 4d | 2025-09-15 | 2025-09-18 | PG-11869 FF+2d | 0d | L&T [320000 h] | 320,000 | 11979 |

| ID | WBS | Activity | Duration | Start | Finish | Predecessors | Total float | Resources | Cost | MSP Activity ID |
| --- | --- | --- | --- | --- | --- | --- | --- | --- | --- | --- |
|  | 1.3.1.3.2.27.2 | **Slab, Beams & Staircase** |  | 2025-09-18 | 2025-09-24 |  |  |  |  |  |
| PG-11871 |  | Formwork | 3d | 2025-09-18 | 2025-09-20 | PG-11870 FF+2d | 0d | L&T [220000 h] | 220,000 | 11981 |
| PG-11872 |  | Reinforcement | 3d | 2025-09-20 | 2025-09-23 | PG-11871 FF+2d | 0d | L&T [520000 h] | 520,000 | 11982 |
| PG-11873 |  | Concrete | 1d | 2025-09-24 | 2025-09-24 | PG-11872 | 0d | L&T [880000 h] | 880,000 | 11983 |
|  | 1.3.1.3.2.28 | **Floor 25** |  | 2025-09-25 | 2025-10-08 |  |  |  |  |  |
|  | 1.3.1.3.2.28.1 | **Columns / shear walls** |  | 2025-09-25 | 2025-10-01 |  |  |  |  |  |
| PG-11874 |  | Reinforcement | 4d | 2025-09-25 | 2025-09-29 | PG-11873 | 0d | L&T [700000 h] | 700,000 | 11986 |
| PG-11875 |  | Formwork | 4d | 2025-09-27 | 2025-10-01 | PG-11874 FF+2d | 0d | L&T [320000 h] | 320,000 | 11987 |
|  | 1.3.1.3.2.28.2 | **Slab, Beams & Staircase** |  | 2025-10-01 | 2025-10-08 |  |  |  |  |  |
| PG-11876 |  | Formwork | 3d | 2025-10-01 | 2025-10-04 | PG-11875 FF+2d | 0d | L&T [220000 h] | 220,000 | 11989 |
| PG-11877 |  | Reinforcement | 3d | 2025-10-04 | 2025-10-07 | PG-11876 FF+2d | 0d | L&T [520000 h] | 520,000 | 11990 |
| PG-11878 |  | Concrete | 1d | 2025-10-08 | 2025-10-08 | PG-11877 | 0d | L&T [880000 h] | 880,000 | 11991 |
|  | 1.3.1.3.2.29 | **Floor 26** |  | 2025-10-09 | 2025-10-21 |  |  |  |  |  |
|  | 1.3.1.3.2.29.1 | **Columns / shear walls** |  | 2025-10-09 | 2025-10-15 |  |  |  |  |  |
| PG-11879 |  | Reinforcement | 4d | 2025-10-09 | 2025-10-13 | PG-11878 | 0d | L&T [700000 h] | 700,000 | 11994 |
| PG-11880 |  | Formwork | 4d | 2025-10-11 | 2025-10-15 | PG-11879 FF+2d | 0d | L&T [320000 h] | 320,000 | 11995 |
|  | 1.3.1.3.2.29.2 | **Slab, Beams & Staircase** |  | 2025-10-15 | 2025-10-21 |  |  |  |  |  |
| PG-11881 |  | Formwork | 3d | 2025-10-15 | 2025-10-17 | PG-11880 FF+2d | 0d | L&T [220000 h] | 220,000 | 11997 |
| PG-11882 |  | Reinforcement | 3d | 2025-10-17 | 2025-10-20 | PG-11881 FF+2d | 0d | L&T [520000 h] | 520,000 | 11998 |
| PG-11883 |  | Concrete | 1d | 2025-10-21 | 2025-10-21 | PG-11882 | 0d | L&T [880000 h] | 880,000 | 11999 |
|  | 1.3.1.3.2.30 | **Floor 27** |  | 2025-10-22 | 2025-11-04 |  |  |  |  |  |
|  | 1.3.1.3.2.30.1 | **Columns / shear walls** |  | 2025-10-22 | 2025-10-28 |  |  |  |  |  |
| PG-11884 |  | Reinforcement | 4d | 2025-10-22 | 2025-10-25 | PG-11883 | 0d | L&T [700000 h] | 700,000 | 12002 |
| PG-11885 |  | Formwork | 4d | 2025-10-24 | 2025-10-28 | PG-11884 FF+2d | 0d | L&T [320000 h] | 320,000 | 12003 |

| ID | WBS | Activity | Duration | Start | Finish | Predecessors | Total float | Free float | Resources | Cost | MSP Activity ID |
| --- | --- | --- | --- | --- | --- | --- | --- | --- | --- | --- | --- |
|  | 1.3.1.3.2.30.2 | **Slab, Beams & Staircase** |  | 2025-10-28 | 2025-11-04 |  |  |  |  |  |  |
| PG-11886 |  | Formwork | 3d | 2025-10-28 | 2025-10-30 | PG-11885 FF+2d | 0d |  | L&T [220000 h] | 220,000 | 12005 |
| PG-11887 |  | Reinforcement | 3d | 2025-10-30 | 2025-11-03 | PG-11886 FF+2d | 0d |  | L&T [520000 h] | 520,000 | 12006 |
| PG-11888 |  | Concrete | 1d | 2025-11-04 | 2025-11-04 | PG-11887 | 0d |  | L&T [880000 h] | 880,000 | 12007 |
|  | 1.3.1.3.2.31 | **Floor 28** |  | 2025-11-05 | 2025-11-17 |  |  |  |  |  |  |
|  | 1.3.1.3.2.31.1 | **Columns / shear walls** |  | 2025-11-05 | 2025-11-11 |  |  |  |  |  |  |
| PG-11889 |  | Reinforcement | 4d | 2025-11-05 | 2025-11-08 | PG-11888 | 0d |  | L&T [700000 h] | 700,000 | 12010 |
| PG-11890 |  | Formwork | 4d | 2025-11-07 | 2025-11-11 | PG-11889 FF+2d | 0d |  | L&T [320000 h] | 320,000 | 12011 |
|  | 1.3.1.3.2.31.2 | **Slab, Beams & Staircase** |  | 2025-11-11 | 2025-11-17 |  |  |  |  |  |  |
| PG-11891 |  | Formwork | 3d | 2025-11-11 | 2025-11-13 | PG-11890 FF+2d | 0d |  | L&T [220000 h] | 220,000 | 12013 |
| PG-11892 |  | Reinforcement | 3d | 2025-11-13 | 2025-11-15 | PG-11891 FF+2d | 0d |  | L&T [520000 h] | 520,000 | 12014 |
| PG-11893 |  | Concrete | 1d | 2025-11-17 | 2025-11-17 | PG-11892 | 0d |  | L&T [880000 h] | 880,000 | 12015 |
|  | 1.3.1.3.2.32 | **Floor 29** |  | 2025-11-17 | 2025-11-29 |  |  |  |  |  |  |
|  | 1.3.1.3.2.32.1 | **Columns / shear walls** |  | 2025-11-17 | 2025-11-24 |  |  |  |  |  |  |
| PG-11894 |  | Reinforcement | 4d | 2025-11-17 | 2025-11-21 | PG-11893 | 0d |  | L&T [700000 h] | 700,000 | 12018 |
| PG-11895 |  | Formwork | 4d | 2025-11-19 | 2025-11-24 | PG-11894 FF+2d | 0d |  | L&T [320000 h] | 320,000 | 12019 |
|  | 1.3.1.3.2.32.2 | **Slab, Beams & Staircase** |  | 2025-11-22 | 2025-11-29 |  |  |  |  |  |  |
| PG-11896 |  | Formwork | 3d | 2025-11-22 | 2025-11-26 | PG-11895 FF+2d | 0d |  | L&T [220000 h] | 220,000 | 12021 |
| PG-11897 |  | Reinforcement | 3d | 2025-11-25 | 2025-11-28 | PG-11896 FF+2d | 0d |  | L&T [520000 h] | 520,000 | 12022 |
| PG-11898 |  | Concrete | 1d | 2025-11-28 | 2025-11-29 | PG-11897 | 0d |  | L&T [880000 h] | 880,000 | 12023 |
|  | 1.3.1.3.2.33 | **Above Terrace Floor** |  | 2025-11-29 | 2026-01-08 |  |  |  |  |  |  |
|  | 1.3.1.3.2.33.1 | **Columns / shear walls/Parapet Walls** |  | 2025-11-29 | 2025-12-13 |  |  |  |  |  |  |
| PG-11899 |  | Reinforcement | 4d | 2025-11-29 | 2025-12-04 | PG-11898, PG-11893, PG-11888, PG-11883, PG-11878, PG-11873, PG-11868 | 51.67d | 0d | L&T [160000 h] | 160,000 | 12026 |
| PG-11900 |  | Formwork | 5d | 2025-12-02 | 2025-12-08 | PG-11899 FF+3d | 51.67d | 0d | L&T [200000 h] | 200,000 | 12027 |
| PG-11901 |  | Concrete | 4.67d | 2025-12-08 | 2025-12-13 | PG-11900 | 51.67d | 0d | L&T [187000 h] | 187,000 | 12028 |

| ID | WBS | Activity | Duration | Start | Finish | Predecessors | Complete | Planned start | Planned finish | Total float | Free float | Resources | Cost | MSP Activity ID |
| --- | --- | --- | --- | --- | --- | --- | --- | --- | --- | --- | --- | --- | --- | --- |
|  | 1.3.1.3.2.33.2 | **Slab, Beams & Staircase Head rooms, Lift headroom** |  | 2025-12-04 | 2026-01-08 |  |  |  |  |  |  |  |  |  |
| PG-11905 |  | Terrace Waterproofing and Protective finishing. | 29.67d | 2025-12-04 | 2026-01-08 | PG-11904 FF+10d |  |  |  | 165.5d | 0d | L&T [1187000 h] | 1,187,000 | 12033 |
| PG-11902 |  | Formwork | 5d | 2025-12-13 | 2025-12-19 | PG-11901 |  |  |  | 58.83d | 0d | L&T [200000 h] | 200,000 | 12030 |
| PG-11903 |  | Reinforcement | 5d | 2025-12-19 | 2025-12-25 | PG-11902 FF+5d |  |  |  | 58.83d | 0d | L&T [200000 h] | 200,000 | 12031 |
| PG-11904 |  | Concrete | 2d | 2025-12-25 | 2025-12-27 | PG-11903 |  |  |  | 58.83d | 0d | L&T [80000 h] | 80,000 | 12032 |
|  | 1.3.1.3.3 | **MEP Internal works** |  | 2024-12-23 | 2026-06-08 |  |  |  |  |  |  |  |  |  |
|  | 1.3.1.3.3.1 | **LBF** |  | 2024-12-23 | 2025-03-10 |  |  |  |  |  |  |  |  |  |
| PG-11906 |  | Surface Drainage System (Chambers and Pipeline for Sump) | 15d | 2024-12-23 A | 2025-01-09 A | PG-11778 | 100% | 2024-12-18 | 2025-01-04 |  |  | L&T [600000 h] | 600,000 | 14515 |
| PG-11907 |  | Pump fixing for collection sump | 2.67d | 2025-02-01 A | 2025-02-05 A | PG-12184 | 100% | 2025-01-28 | 2025-01-30 |  |  | L&T [107000 h] | 107,000 | 14516 |
| PG-11908 |  | FPS Piping and Sprinkler Fixing works | 9.5d | 2025-02-22 A | 2025-03-06 A | PG-11907, PG-12187 FF+5d | 100% | 2025-02-15 | 2025-02-26 |  |  | Nexus (Fire) [304000 h] | 304,000 | 14517 |
| PG-11909 |  | Electrical Conducting and Light Fixing works | 9.5d | 2025-02-25 A | 2025-03-10 A | PG-12187 FF+7d | 100% | 2025-02-18 | 2025-02-28 |  |  | Elexir (Electrical) [304000 h] | 304,000 | 14518 |
|  | 1.3.1.3.3.2 | **UBF** |  | 2025-02-17 | 2025-03-17 |  |  |  |  |  |  |  |  |  |
| PG-11910 |  | Piping for Rainwater and Soil lines in Ceiling | 20d | 2025-02-17 A | 2025-03-13 A | PG-12187 FF+10d | 100% | 2025-02-08 | 2025-03-04 |  |  | Santech (Plumbing) [640000 h] | 640,000 | 14520 |
| PG-11911 |  | FPS Piping and Sprinkler Fixing works | 9.67d | 2025-02-28 A | 2025-03-13 A | PG-11908 FF+5d | 100% | 2025-02-20 | 2025-03-03 |  |  | Nexus (Fire) [309000 h] | 309,000 | 14521 |
| PG-11912 |  | Electrical Conducting and Light Fixing works | 9.5d | 2025-03-04 A | 2025-03-17 A | PG-11909 FF+5d | 100% | 2025-02-24 | 2025-03-06 |  |  | Elexir (Electrical) [304000 h] | 304,000 | 14522 |
|  | 1.3.1.3.3.3 | **Ground Floor** |  | 2024-12-23 | 2025-03-17 |  |  |  |  |  |  |  |  |  |
|  | 1.3.1.3.3.3.1 | **PHE Works** |  | 2024-12-23 | 2025-03-17 |  |  |  |  |  |  |  |  |  |
| PG-11913 |  | 1st Fix - Piping works | 12d | 2024-12-23 A | 2025-01-06 A | PG-11778 | 100% | 2024-12-18 | 2025-01-01 |  |  | Santech (Plumbing) [245000 h] | 245,000 | 14525 |
| PG-11914 |  | 2nd Fix - diverter fixing & Pressure testing | 10d | 2025-01-01 A | 2025-01-14 A | PG-11913 FF+6d | 100% | 2024-12-27 | 2025-01-08 |  |  | Santech (Plumbing) [124000 h] | 124,000 | 14526 |
| PG-11915 |  | Final Fix - CP & Sanitary fixtures | 9.67d | 2025-03-04 A | 2025-03-17 A | PG-12197, PG-12203 FF+6d | 100% | 2025-02-24 | 2025-03-06 |  |  | Santech (Plumbing) [330000 h] | 330,000 | 14527 |
|  | 1.3.1.3.3.3.2 | **Fire Fighting Works** |  | 2025-01-01 | 2025-03-15 |  |  |  |  |  |  |  |  |  |
| PG-11916 |  | 1st Fix - Piping and Shaft hydrant works | 11.67d | 2025-01-01 A | 2025-01-16 A | PG-12194 FF+6d | 100% | 2024-12-27 | 2025-01-09 |  |  | Nexus (Fire) [162000 h] | 162,000 | 14529 |
| PG-11917 |  | 2nd Fix - Sprinkler fixing & Pressure testing | 9.67d | 2025-02-10 A | 2025-02-21 A | PG-12202 FF+6d | 100% | 2025-02-03 | 2025-02-13 |  |  | Nexus (Fire) [145000 h] | 145,000 | 14530 |
| PG-11918 |  | Final Fix - Smoke & heat detectors, FHC , FAS Etc. | 9.67d | 2025-03-04 A | 2025-03-15 A | PG-11917, PG-12203 FF+6d | 100% | 2025-02-24 | 2025-03-06 |  |  | Nexus (Fire) [185000 h] | 185,000 | 14531 |

| ID | WBS | Activity | Duration | Start | Finish | Predecessors | Complete | Planned start | Planned finish | Resources | Cost | MSP Activity ID |
| --- | --- | --- | --- | --- | --- | --- | --- | --- | --- | --- | --- | --- |
|  | 1.3.1.3.3.3.3 | **Electrical Works** |  | 2024-12-23 | 2025-03-15 |  |  |  |  |  |  |  |
| PG-11919 |  | 1st Fix - GI wire pulling | 8d | 2024-12-23 A | 2025-01-01 A | PG-11778 | 100% | 2024-12-18 | 2024-12-27 | Elexir (Electrical) [165000 h] | 165,000 | 14533 |
| PG-11920 |  | 2nd Fix - Wiring works | 14.67d | 2025-02-03 A | 2025-02-20 A | PG-12202 FF+5d | 100% | 2025-01-27 | 2025-02-12 | Elexir (Electrical) [248000 h] | 248,000 | 14534 |
| PG-11921 |  | Final Fix - Electrical Fixtures | 5.67d | 2025-03-08 A | 2025-03-15 A | PG-11920, PG-12203 FF+6d | 100% | 2025-02-28 | 2025-03-06 | Elexir (Electrical) [205000 h] | 205,000 | 14535 |
|  | 1.3.1.3.3.4 | **Floor 1** |  | 2025-01-07 | 2025-04-03 |  |  |  |  |  |  |  |
|  | 1.3.1.3.3.4.1 | **PHE Works** |  | 2025-01-07 | 2025-04-03 |  |  |  |  |  |  |  |
| PG-11922 |  | 1st Fix - Piping works | 12d | 2025-01-07 A | 2025-01-22 A | PG-11783 | 100% | 2025-01-02 | 2025-01-16 | Santech (Plumbing) [245000 h] | 245,000 | 14538 |
| PG-11923 |  | 2nd Fix - diverter fixing & Pressure testing | 10d | 2025-01-17 A | 2025-01-30 A | PG-11922 FF+6d | 100% | 2025-01-11 | 2025-01-23 | Santech (Plumbing) [124000 h] | 124,000 | 14539 |
| PG-11924 |  | Final Fix - CP & Sanitary fixtures | 9.5d | 2025-03-21 A | 2025-04-03 A | PG-12211, PG-12217 FF+6d | 100% | 2025-03-12 | 2025-03-22 | Santech (Plumbing) [330000 h] | 330,000 | 14540 |
|  | 1.3.1.3.3.4.2 | **Fire Fighting Works** |  | 2025-01-17 | 2025-04-02 |  |  |  |  |  |  |  |
| PG-11925 |  | 1st Fix - Piping and Shaft hydrant works | 11.67d | 2025-01-17 A | 2025-01-31 A | PG-12208 FF+6d | 100% | 2025-01-11 | 2025-01-24 | Nexus (Fire) [162000 h] | 162,000 | 14542 |
| PG-11926 |  | 2nd Fix - Sprinkler fixing & Pressure testing | 9.67d | 2025-02-26 A | 2025-03-10 A | PG-12216 FF+6d | 100% | 2025-02-18 | 2025-02-28 | Nexus (Fire) [145000 h] | 145,000 | 14543 |
| PG-11927 |  | Final Fix - Smoke & heat detectors, FHC , FAS Etc. | 9.5d | 2025-03-21 A | 2025-04-02 A | PG-11926, PG-12217 FF+6d | 100% | 2025-03-12 | 2025-03-22 | Nexus (Fire) [185000 h] | 185,000 | 14544 |
|  | 1.3.1.3.3.4.3 | **Electrical Works** |  | 2025-01-07 | 2025-04-02 |  |  |  |  |  |  |  |
| PG-11928 |  | 1st Fix - GI wire pulling | 8d | 2025-01-07 A | 2025-01-16 A | PG-11783 | 100% | 2025-01-02 | 2025-01-11 | Elexir (Electrical) [165000 h] | 165,000 | 14546 |
| PG-11929 |  | 2nd Fix - Wiring works | 14.67d | 2025-02-19 A | 2025-03-10 A | PG-12216 FF+5d | 100% | 2025-02-11 | 2025-02-27 | Elexir (Electrical) [248000 h] | 248,000 | 14547 |
| PG-11930 |  | Final Fix - Electrical Fixtures | 5.5d | 2025-03-26 A | 2025-04-02 A | PG-11929, PG-12217 FF+6d | 100% | 2025-03-25 | 2025-03-31 | Elexir (Electrical) [205000 h] | 205,000 | 14548 |
|  | 1.3.1.3.3.5 | **Floor 2** |  | 2025-01-22 | 2025-04-16 |  |  |  |  |  |  |  |
|  | 1.3.1.3.3.5.1 | **PHE Works** |  | 2025-01-22 | 2025-04-16 |  |  |  |  |  |  |  |
| PG-11931 |  | 1st Fix - Piping works | 12d | 2025-01-22 A | 2025-02-06 A | PG-11788 | 100% | 2025-01-17 | 2025-01-31 | Santech (Plumbing) [245000 h] | 245,000 | 14551 |
| PG-11932 |  | 2nd Fix - diverter fixing & Pressure testing | 10d | 2025-02-01 A | 2025-02-14 A | PG-11931 FF+6d | 100% | 2025-01-27 | 2025-02-07 | Santech (Plumbing) [124000 h] | 124,000 | 14552 |
| PG-11933 |  | Final Fix - CP & Sanitary fixtures | 10.5d | 2025-04-03 A | 2025-04-16 A | PG-12225, PG-12231 FF+6d | 100% | 2025-04-02 | 2025-04-14 | Santech (Plumbing) [330000 h] | 330,000 | 14553 |
|  | 1.3.1.3.3.5.2 | **Fire Fighting Works** |  | 2025-02-01 | 2025-04-16 |  |  |  |  |  |  |  |
| PG-11934 |  | 1st Fix - Piping and Shaft hydrant works | 11.67d | 2025-02-01 A | 2025-02-17 A | PG-12222 FF+6d | 100% | 2025-01-27 | 2025-02-08 | Nexus (Fire) [162000 h] | 162,000 | 14555 |
| PG-11935 |  | 2nd Fix - Sprinkler fixing & Pressure testing | 9.67d | 2025-03-13 A | 2025-03-26 A | PG-12230 FF+6d | 100% | 2025-03-05 | 2025-03-15 | Nexus (Fire) [145000 h] | 145,000 | 14556 |
| PG-11936 |  | Final Fix - Smoke & heat detectors, FHC , FAS Etc. | 10.5d | 2025-04-03 A | 2025-04-16 A | PG-11935, PG-12231 FF+6d | 100% | 2025-04-02 | 2025-04-14 | Nexus (Fire) [185000 h] | 185,000 | 14557 |

| ID | WBS | Activity | Duration | Start | Finish | Predecessors | Complete | Remaining | Planned start | Planned finish | Total float | Free float | Resources | Cost | MSP Activity ID |
| --- | --- | --- | --- | --- | --- | --- | --- | --- | --- | --- | --- | --- | --- | --- | --- |
|  | 1.3.1.3.3.5.3 | **Electrical Works** |  | 2025-01-22 | 2025-04-16 |  |  |  |  |  |  |  |  |  |  |
| PG-11937 |  | 1st Fix - GI wire pulling | 8d | 2025-01-22 A | 2025-02-01 A | PG-11788 | 100% |  | 2025-01-17 | 2025-01-27 |  |  | Elexir (Electrical) [165000 h] | 165,000 | 14559 |
| PG-11938 |  | 2nd Fix - Wiring works | 14.67d | 2025-03-06 A | 2025-03-24 A | PG-12230 FF+5d | 100% |  | 2025-02-26 | 2025-03-14 |  |  | Elexir (Electrical) [248000 h] | 248,000 | 14560 |
| PG-11939 |  | Final Fix - Electrical Fixtures | 6.5d | 2025-04-08 A | 2025-04-16 A | PG-11938, PG-12231 FF+6d | 100% |  | 2025-04-07 | 2025-04-14 |  |  | Elexir (Electrical) [205000 h] | 205,000 | 14561 |
|  | 1.3.1.3.3.6 | **Floor 3** |  | 2025-02-07 | 2025-05-06 |  |  |  |  |  |  |  |  |  |  |
|  | 1.3.1.3.3.6.1 | **PHE Works** |  | 2025-02-07 | 2025-05-06 |  |  |  |  |  |  |  |  |  |  |
| PG-11940 |  | 1st Fix - Piping works | 12d | 2025-02-07 A | 2025-02-22 A | PG-11793 | 100% |  | 2025-02-01 | 2025-02-15 |  |  | Santech (Plumbing) [245000 h] | 245,000 | 14564 |
| PG-11941 |  | 2nd Fix - diverter fixing & Pressure testing | 10d | 2025-02-18 A | 2025-03-04 A | PG-11940 FF+6d | 100% |  | 2025-02-11 | 2025-02-22 |  |  | Santech (Plumbing) [124000 h] | 124,000 | 14565 |
| PG-11942 |  | Final Fix - CP & Sanitary fixtures | 9.5d | 2025-04-25 | 2025-05-06 | PG-12239, PG-12245 FF+6d |  |  |  |  | 400.11d | 0d | Santech (Plumbing) [330000 h] | 330,000 | 14566 |
|  | 1.3.1.3.3.6.2 | **Fire Fighting Works** |  | 2025-02-18 | 2025-05-06 |  |  |  |  |  |  |  |  |  |  |
| PG-11943 |  | 1st Fix - Piping and Shaft hydrant works | 11.67d | 2025-02-18 A | 2025-03-04 A | PG-12236 FF+6d | 100% |  | 2025-02-11 | 2025-02-24 |  |  | Nexus (Fire) [162000 h] | 162,000 | 14568 |
| PG-11944 |  | 2nd Fix - Sprinkler fixing & Pressure testing | 9.83d | 2025-03-31 A | 2025-04-11 A | PG-12244 FF+6d | 100% |  | 2025-03-29 | 2025-04-09 |  |  | Nexus (Fire) [145000 h] | 145,000 | 14569 |
| PG-11945 |  | Final Fix - Smoke & heat detectors, FHC , FAS Etc. | 9.5d | 2025-04-25 | 2025-05-06 | PG-11944, PG-12245 FF+6d |  |  |  |  | 400.11d | 0d | Nexus (Fire) [185000 h] | 185,000 | 14570 |
|  | 1.3.1.3.3.6.3 | **Electrical Works** |  | 2025-02-07 | 2025-05-06 |  |  |  |  |  |  |  |  |  |  |
| PG-11946 |  | 1st Fix - GI wire pulling | 8d | 2025-02-07 A | 2025-02-17 A | PG-11793 | 100% |  | 2025-02-01 | 2025-02-11 |  |  | Elexir (Electrical) [165000 h] | 165,000 | 14572 |
| PG-11947 |  | 2nd Fix - Wiring works | 14.83d | 2025-03-24 A | 2025-04-10 A | PG-12244 FF+5d | 100% |  | 2025-03-22 | 2025-04-08 |  |  | Elexir (Electrical) [248000 h] | 248,000 | 14573 |
| PG-11948 |  | Final Fix - Electrical Fixtures | 5.5d | 2025-04-30 | 2025-05-06 | PG-11947, PG-12245 FF+6d |  |  |  |  | 400.11d | 0d | Elexir (Electrical) [205000 h] | 205,000 | 14574 |
|  | 1.3.1.3.3.7 | **Floor 4** |  | 2025-02-24 | 2025-05-20 |  |  |  |  |  |  |  |  |  |  |
|  | 1.3.1.3.3.7.1 | **PHE Works** |  | 2025-02-24 | 2025-05-20 |  |  |  |  |  |  |  |  |  |  |
| PG-11949 |  | 1st Fix - Piping works | 12d | 2025-02-24 A | 2025-03-10 A | PG-11798 | 100% |  | 2025-02-17 | 2025-03-03 |  |  | Santech (Plumbing) [245000 h] | 245,000 | 14577 |
| PG-11950 |  | 2nd Fix - diverter fixing & Pressure testing | 10d | 2025-03-05 A | 2025-03-18 A | PG-11949 FF+6d | 100% |  | 2025-02-26 | 2025-03-10 |  |  | Santech (Plumbing) [124000 h] | 124,000 | 14578 |
| PG-11951 |  | Final Fix - CP & Sanitary fixtures | 8.5d | 2025-05-09 | 2025-05-20 | PG-12253, PG-12259 FF+6d |  |  |  |  | 387.62d | 0d | Santech (Plumbing) [330000 h] | 330,000 | 14579 |
|  | 1.3.1.3.3.7.2 | **Fire Fighting Works** |  | 2025-03-05 | 2025-05-20 |  |  |  |  |  |  |  |  |  |  |
| PG-11952 |  | 1st Fix - Piping and Shaft hydrant works | 11.67d | 2025-03-05 A | 2025-03-20 A | PG-12250 FF+6d | 100% |  | 2025-02-26 | 2025-03-11 |  |  | Nexus (Fire) [162000 h] | 162,000 | 14581 |
| PG-11953 |  | 2nd Fix - Sprinkler fixing & Pressure testing | 10d | 2025-04-14 A | 2025-04-25 | PG-12258 FF+6d | 90% | 0.96d | 2025-04-12 | 2025-04-24 | 399.54d | 11.92d | Nexus (Fire) [145000 h] | 145,000 | 14582 |
| PG-11954 |  | Final Fix - Smoke & heat detectors, FHC , FAS Etc. | 8.5d | 2025-05-09 | 2025-05-20 | PG-11953, PG-12259 FF+6d |  |  |  |  | 387.62d | 0d | Nexus (Fire) [185000 h] | 185,000 | 14583 |

| ID | WBS | Activity | Duration | Start | Finish | Predecessors | Complete | Planned start | Planned finish | Total float | Free float | Resources | Cost | MSP Activity ID |
| --- | --- | --- | --- | --- | --- | --- | --- | --- | --- | --- | --- | --- | --- | --- |
|  | 1.3.1.3.3.7.3 | **Electrical Works** |  | 2025-02-24 | 2025-05-20 |  |  |  |  |  |  |  |  |  |
| PG-11955 |  | 1st Fix - GI wire pulling | 8d | 2025-02-24 A | 2025-03-04 A | PG-11798 | 100% | 2025-02-17 | 2025-02-26 |  |  | Elexir (Electrical) [165000 h] | 165,000 | 14585 |
| PG-11956 |  | 2nd Fix - Wiring works | 15d | 2025-04-07 A | 2025-04-25 A | PG-12258 FF+5d | 100% | 2025-04-07 | 2025-04-24 |  |  | Elexir (Electrical) [248000 h] | 248,000 | 14586 |
| PG-11957 |  | Final Fix - Electrical Fixtures | 5.5d | 2025-05-13 | 2025-05-20 | PG-11956, PG-12259 FF+6d |  |  |  | 387.62d | 0d | Elexir (Electrical) [205000 h] | 205,000 | 14587 |
|  | 1.3.1.3.3.8 | **Floor 5** |  | 2025-03-11 | 2025-08-12 |  |  |  |  |  |  |  |  |  |
|  | 1.3.1.3.3.8.1 | **PHE Works** |  | 2025-03-11 | 2025-08-12 |  |  |  |  |  |  |  |  |  |
| PG-11958 |  | 1st Fix - Piping works | 12d | 2025-03-11 A | 2025-03-26 A | PG-11803 | 100% | 2025-03-04 | 2025-03-18 |  |  | Santech (Plumbing) [245000 h] | 245,000 | 14590 |
| PG-11959 |  | 2nd Fix - diverter fixing & Pressure testing | 10d | 2025-03-21 A | 2025-04-02 A | PG-11958 FF+6d | 100% | 2025-03-13 | 2025-03-25 |  |  | Santech (Plumbing) [124000 h] | 124,000 | 14591 |
| PG-11960 |  | Final Fix - CP & Sanitary fixtures | 10.5d | 2025-07-30 | 2025-08-12 | PG-12267, PG-12273 FF+6d |  |  |  | 317.83d | 0d | Santech (Plumbing) [330000 h] | 330,000 | 14592 |
|  | 1.3.1.3.3.8.2 | **Fire Fighting Works** |  | 2025-03-20 | 2025-08-12 |  |  |  |  |  |  |  |  |  |
| PG-11961 |  | 1st Fix - Piping and Shaft hydrant works | 11.67d | 2025-03-20 A | 2025-04-03 A | PG-12264 FF+6d | 100% | 2025-03-13 | 2025-03-26 |  |  | Nexus (Fire) [162000 h] | 162,000 | 14594 |
| PG-11962 |  | 2nd Fix - Sprinkler fixing & Pressure testing | 10d | 2025-07-09 | 2025-07-21 | PG-12272 FF+6d |  |  |  | 325.83d | 8d | Nexus (Fire) [145000 h] | 145,000 | 14595 |
| PG-11963 |  | Final Fix - Smoke & heat detectors, FHC , FAS Etc. | 10.5d | 2025-07-30 | 2025-08-12 | PG-11962, PG-12273 FF+6d |  |  |  | 317.83d | 0d | Nexus (Fire) [185000 h] | 185,000 | 14596 |
|  | 1.3.1.3.3.8.3 | **Electrical Works** |  | 2025-03-11 | 2025-08-12 |  |  |  |  |  |  |  |  |  |
| PG-11964 |  | 1st Fix - GI wire pulling | 7.67d | 2025-03-11 A | 2025-03-19 A | PG-11803 | 100% | 2025-03-04 | 2025-03-12 |  |  | Elexir (Electrical) [165000 h] | 165,000 | 14598 |
| PG-11965 |  | 2nd Fix - Wiring works | 12.83d | 2025-07-04 | 2025-07-19 | PG-12272 FF+5d |  |  |  | 330.83d | 13d | Elexir (Electrical) [248000 h] | 248,000 | 14599 |
| PG-11966 |  | Final Fix - Electrical Fixtures | 6.5d | 2025-08-04 | 2025-08-12 | PG-11965, PG-12273 FF+6d |  |  |  | 317.83d | 0d | Elexir (Electrical) [205000 h] | 205,000 | 14600 |
|  | 1.3.1.3.3.9 | **Floor 6** |  | 2025-03-27 | 2025-06-17 |  |  |  |  |  |  |  |  |  |
|  | 1.3.1.3.3.9.1 | **PHE Works** |  | 2025-03-27 | 2025-06-17 |  |  |  |  |  |  |  |  |  |
| PG-11967 |  | 1st Fix - Piping works | 12d | 2025-03-27 A | 2025-04-10 A | PG-11808 | 100% |  |  |  |  | Santech (Plumbing) [245000 h] | 245,000 | 14603 |
| PG-11968 |  | 2nd Fix - diverter fixing & Pressure testing | 10d | 2025-04-05 A | 2025-04-19 A | PG-11967 FF+6d | 100% | 2025-04-05 | 2025-04-17 |  |  | Santech (Plumbing) [124000 h] | 124,000 | 14604 |
| PG-11969 |  | Final Fix - CP & Sanitary fixtures | 9.5d | 2025-06-06 | 2025-06-17 | PG-12281, PG-12287 FF+6d |  |  |  | 365.07d | 0d | Santech (Plumbing) [330000 h] | 330,000 | 14605 |
|  | 1.3.1.3.3.9.2 | **Fire Fighting Works** |  | 2025-04-07 | 2025-06-17 |  |  |  |  |  |  |  |  |  |
| PG-11970 |  | 1st Fix - Piping and Shaft hydrant works | 11.67d | 2025-04-07 A | 2025-04-22 A | PG-12278 FF+6d | 100% | 2025-04-05 | 2025-04-18 |  |  | Nexus (Fire) [162000 h] | 162,000 | 14607 |
| PG-11971 |  | 2nd Fix - Sprinkler fixing & Pressure testing | 10d | 2025-05-14 | 2025-05-26 | PG-12286 FF+6d |  |  |  | 375.07d | 10d | Nexus (Fire) [145000 h] | 145,000 | 14608 |
| PG-11972 |  | Final Fix - Smoke & heat detectors, FHC , FAS Etc. | 9.5d | 2025-06-06 | 2025-06-17 | PG-11971, PG-12287 FF+6d |  |  |  | 365.07d | 0d | Nexus (Fire) [185000 h] | 185,000 | 14609 |

| ID | WBS | Activity | Duration | Start | Finish | Predecessors | Complete | Remaining | Planned start | Planned finish | Total float | Free float | Resources | Cost | MSP Activity ID |
| --- | --- | --- | --- | --- | --- | --- | --- | --- | --- | --- | --- | --- | --- | --- | --- |
|  | 1.3.1.3.3.9.3 | **Electrical Works** |  | 2025-03-27 | 2025-06-17 |  |  |  |  |  |  |  |  |  |  |
| PG-11973 |  | 1st Fix - GI wire pulling | 7.67d | 2025-03-27 A | 2025-04-05 A | PG-11808 | 100% |  | 2025-03-27 | 2025-04-04 |  |  | Elexir (Electrical) [165000 h] | 165,000 | 14611 |
| PG-11974 |  | 2nd Fix - Wiring works | 13.67d | 2025-05-08 | 2025-05-24 | PG-12286 FF+5d |  |  |  |  | 380.07d | 15d | Elexir (Electrical) [248000 h] | 248,000 | 14612 |
| PG-11975 |  | Final Fix - Electrical Fixtures | 5.5d | 2025-06-11 | 2025-06-17 | PG-11974, PG-12287 FF+6d |  |  |  |  | 365.07d | 0d | Elexir (Electrical) [205000 h] | 205,000 | 14613 |
|  | 1.3.1.3.3.10 | **Floor 7** |  | 2025-04-14 | 2025-07-04 |  |  |  |  |  |  |  |  |  |  |
|  | 1.3.1.3.3.10.1 | **PHE Works** |  | 2025-04-14 | 2025-07-04 |  |  |  |  |  |  |  |  |  |  |
| PG-11976 |  | 1st Fix - Piping works | 12d | 2025-04-14 A | 2025-04-28 | PG-11813 | 75% | 2.99d | 2025-04-12 | 2025-04-26 | 352.51d | 0.71d | Santech (Plumbing) [245000 h] | 245,000 | 14616 |
| PG-11977 |  | 2nd Fix - diverter fixing & Pressure testing | 10d | 2025-04-24 A | 2025-05-06 | PG-11976 FF+6d | 3% | 9.7d |  |  | 351.8d | 0d | Santech (Plumbing) [124000 h] | 124,000 | 14617 |
| PG-11978 |  | Final Fix - CP & Sanitary fixtures | 8.5d | 2025-06-24 | 2025-07-04 | PG-12295, PG-12301 FF+6d |  |  |  |  | 351.8d | 0d | Santech (Plumbing) [330000 h] | 330,000 | 14618 |
|  | 1.3.1.3.3.10.2 | **Fire Fighting Works** |  | 2025-04-24 | 2025-07-04 |  |  |  |  |  |  |  |  |  |  |
| PG-11979 |  | 1st Fix - Piping and Shaft hydrant works | 11.67d | 2025-04-24 A | 2025-05-08 | PG-12292 FF+6d | 3% | 11.32d | 2025-04-23 | 2025-05-06 | 397.85d | 0d | Nexus (Fire) [162000 h] | 162,000 | 14620 |
| PG-11980 |  | 2nd Fix - Sprinkler fixing & Pressure testing | 10d | 2025-05-31 | 2025-06-12 | PG-12300 FF+6d |  |  |  |  | 361.8d | 10d | Nexus (Fire) [145000 h] | 145,000 | 14621 |
| PG-11981 |  | Final Fix - Smoke & heat detectors, FHC , FAS Etc. | 8.5d | 2025-06-24 | 2025-07-04 | PG-11980, PG-12301 FF+6d |  |  |  |  | 351.8d | 0d | Nexus (Fire) [185000 h] | 185,000 | 14622 |
|  | 1.3.1.3.3.10.3 | **Electrical Works** |  | 2025-04-14 | 2025-07-04 |  |  |  |  |  |  |  |  |  |  |
| PG-11982 |  | 1st Fix - GI wire pulling | 7.67d | 2025-04-14 A | 2025-04-23 A | PG-11813 | 100% |  | 2025-04-12 | 2025-04-21 |  |  | Elexir (Electrical) [165000 h] | 165,000 | 14624 |
| PG-11983 |  | 2nd Fix - Wiring works | 14.67d | 2025-05-26 | 2025-06-11 | PG-12300 FF+5d |  |  |  |  | 365.8d | 14d | Elexir (Electrical) [248000 h] | 248,000 | 14625 |
| PG-11984 |  | Final Fix - Electrical Fixtures | 5.5d | 2025-06-27 | 2025-07-04 | PG-11983, PG-12301 FF+6d |  |  |  |  | 351.8d | 0d | Elexir (Electrical) [205000 h] | 205,000 | 14626 |
|  | 1.3.1.3.3.11 | **Floor 8** |  | 2025-05-01 | 2025-07-21 |  |  |  |  |  |  |  |  |  |  |
|  | 1.3.1.3.3.11.1 | **PHE Works** |  | 2025-05-01 | 2025-07-21 |  |  |  |  |  |  |  |  |  |  |
| PG-11985 |  | 1st Fix - Piping works | 12d | 2025-05-01 | 2025-05-14 | PG-11818 |  |  |  |  | 336.5d | 0d | Santech (Plumbing) [245000 h] | 245,000 | 14629 |
| PG-11986 |  | 2nd Fix - diverter fixing & Pressure testing | 10d | 2025-05-10 | 2025-05-21 | PG-11985 FF+6d |  |  |  |  | 336.5d | 0d | Santech (Plumbing) [124000 h] | 124,000 | 14630 |
| PG-11987 |  | Final Fix - CP & Sanitary fixtures | 9.5d | 2025-07-10 | 2025-07-21 | PG-12309, PG-12315 FF+6d |  |  |  |  | 336.5d | 0d | Santech (Plumbing) [330000 h] | 330,000 | 14631 |
|  | 1.3.1.3.3.11.2 | **Fire Fighting Works** |  | 2025-05-09 | 2025-07-21 |  |  |  |  |  |  |  |  |  |  |
| PG-11988 |  | 1st Fix - Piping and Shaft hydrant works | 11.67d | 2025-05-09 | 2025-05-23 | PG-12306 FF+6d |  |  |  |  | 382.5d | 0d | Nexus (Fire) [162000 h] | 162,000 | 14633 |
| PG-11989 |  | 2nd Fix - Sprinkler fixing & Pressure testing | 10d | 2025-06-17 | 2025-06-27 | PG-12314 FF+6d |  |  |  |  | 346.5d | 10d | Nexus (Fire) [145000 h] | 145,000 | 14634 |
| PG-11990 |  | Final Fix - Smoke & heat detectors, FHC , FAS Etc. | 9.5d | 2025-07-10 | 2025-07-21 | PG-11989, PG-12315 FF+6d |  |  |  |  | 336.5d | 0d | Nexus (Fire) [185000 h] | 185,000 | 14635 |

| ID | WBS | Activity | Duration | Start | Finish | Predecessors | Total float | Free float | Resources | Cost | MSP Activity ID |
| --- | --- | --- | --- | --- | --- | --- | --- | --- | --- | --- | --- |
|  | 1.3.1.3.3.11.3 | **Electrical Works** |  | 2025-05-01 | 2025-07-21 |  |  |  |  |  |  |
| PG-11991 |  | 1st Fix - GI wire pulling | 7.67d | 2025-05-01 | 2025-05-09 | PG-11818 | 382.5d | 0d | Elexir (Electrical) [165000 h] | 165,000 | 14637 |
| PG-11992 |  | 2nd Fix - Wiring works | 13.67d | 2025-06-11 | 2025-06-26 | PG-12314 FF+5d | 351.5d | 15d | Elexir (Electrical) [248000 h] | 248,000 | 14638 |
| PG-11993 |  | Final Fix - Electrical Fixtures | 5.5d | 2025-07-15 | 2025-07-21 | PG-11992, PG-12315 FF+6d | 336.5d | 0d | Elexir (Electrical) [205000 h] | 205,000 | 14639 |
|  | 1.3.1.3.3.12 | **Floor 9** |  | 2025-05-16 | 2025-08-02 |  |  |  |  |  |  |
|  | 1.3.1.3.3.12.1 | **PHE Works** |  | 2025-05-16 | 2025-08-02 |  |  |  |  |  |  |
| PG-11994 |  | 1st Fix - Piping works | 12d | 2025-05-16 | 2025-05-29 | PG-11823 | 325.33d | 0d | Santech (Plumbing) [245000 h] | 245,000 | 14642 |
| PG-11995 |  | 2nd Fix - diverter fixing & Pressure testing | 10d | 2025-05-26 | 2025-06-05 | PG-11994 FF+6d | 325.33d | 0d | Santech (Plumbing) [124000 h] | 124,000 | 14643 |
| PG-11996 |  | Final Fix - CP & Sanitary fixtures | 9.33d | 2025-07-23 | 2025-08-02 | PG-12323, PG-12329 FF+6d | 325.33d | 0d | Santech (Plumbing) [330000 h] | 330,000 | 14644 |
|  | 1.3.1.3.3.12.2 | **Fire Fighting Works** |  | 2025-05-24 | 2025-08-02 |  |  |  |  |  |  |
| PG-11997 |  | 1st Fix - Piping and Shaft hydrant works | 11.67d | 2025-05-24 | 2025-06-07 | PG-12320 FF+6d | 371.17d | 0d | Nexus (Fire) [162000 h] | 162,000 | 14646 |
| PG-11998 |  | 2nd Fix - Sprinkler fixing & Pressure testing | 10d | 2025-07-02 | 2025-07-12 | PG-12328 FF+6d | 333.5d | 8.17d | Nexus (Fire) [145000 h] | 145,000 | 14647 |
| PG-11999 |  | Final Fix - Smoke & heat detectors, FHC , FAS Etc. | 9.33d | 2025-07-23 | 2025-08-02 | PG-11998, PG-12329 FF+6d | 325.33d | 0d | Nexus (Fire) [185000 h] | 185,000 | 14648 |
|  | 1.3.1.3.3.12.3 | **Electrical Works** |  | 2025-05-16 | 2025-08-02 |  |  |  |  |  |  |
| PG-12000 |  | 1st Fix - GI wire pulling | 7.83d | 2025-05-16 | 2025-05-24 | PG-11823 | 371.17d | 0d | Elexir (Electrical) [165000 h] | 165,000 | 14650 |
| PG-12001 |  | 2nd Fix - Wiring works | 13.67d | 2025-06-26 | 2025-07-11 | PG-12328 FF+5d | 338.33d | 13d | Elexir (Electrical) [248000 h] | 248,000 | 14651 |
| PG-12002 |  | Final Fix - Electrical Fixtures | 5.5d | 2025-07-28 | 2025-08-02 | PG-12001, PG-12329 FF+6d | 325.33d | 0d | Elexir (Electrical) [205000 h] | 205,000 | 14652 |
|  | 1.3.1.3.3.13 | **Floor 10** |  | 2025-05-31 | 2025-08-20 |  |  |  |  |  |  |
|  | 1.3.1.3.3.13.1 | **PHE Works** |  | 2025-05-31 | 2025-08-20 |  |  |  |  |  |  |
| PG-12003 |  | 1st Fix - Piping works | 12d | 2025-05-31 | 2025-06-13 | PG-11828 | 311.17d | 0d | Santech (Plumbing) [245000 h] | 245,000 | 14655 |
| PG-12004 |  | 2nd Fix - diverter fixing & Pressure testing | 10d | 2025-06-10 | 2025-06-20 | PG-12003 FF+6d | 311.17d | 0d | Santech (Plumbing) [124000 h] | 124,000 | 14656 |
| PG-12005 |  | Final Fix - CP & Sanitary fixtures | 9.5d | 2025-08-08 | 2025-08-20 | PG-12337, PG-12343 FF+6d | 311.17d | 0d | Santech (Plumbing) [330000 h] | 330,000 | 14657 |
|  | 1.3.1.3.3.13.2 | **Fire Fighting Works** |  | 2025-06-09 | 2025-08-20 |  |  |  |  |  |  |
| PG-12006 |  | 1st Fix - Piping and Shaft hydrant works | 11.67d | 2025-06-09 | 2025-06-23 | PG-12334 FF+6d | 358.17d | 0d | Nexus (Fire) [162000 h] | 162,000 | 14659 |
| PG-12007 |  | 2nd Fix - Sprinkler fixing & Pressure testing | 10d | 2025-07-17 | 2025-07-28 | PG-12342 FF+6d | 320.17d | 9d | Nexus (Fire) [145000 h] | 145,000 | 14660 |
| PG-12008 |  | Final Fix - Smoke & heat detectors, FHC , FAS Etc. | 9.5d | 2025-08-08 | 2025-08-20 | PG-12007, PG-12343 FF+6d | 311.17d | 0d | Nexus (Fire) [185000 h] | 185,000 | 14661 |

| ID | WBS | Activity | Duration | Start | Finish | Predecessors | Total float | Free float | Resources | Cost | MSP Activity ID |
| --- | --- | --- | --- | --- | --- | --- | --- | --- | --- | --- | --- |
|  | 1.3.1.3.3.13.3 | **Electrical Works** |  | 2025-05-31 | 2025-08-20 |  |  |  |  |  |  |
| PG-12009 |  | 1st Fix - GI wire pulling | 7.67d | 2025-05-31 | 2025-06-09 | PG-11828 | 358.17d | 0d | Elexir (Electrical) [165000 h] | 165,000 | 14663 |
| PG-12010 |  | 2nd Fix - Wiring works | 12.83d | 2025-07-12 | 2025-07-26 | PG-12342 FF+5d | 325.17d | 14d | Elexir (Electrical) [248000 h] | 248,000 | 14664 |
| PG-12011 |  | Final Fix - Electrical Fixtures | 5.5d | 2025-08-13 | 2025-08-20 | PG-12010, PG-12343 FF+6d | 311.17d | 0d | Elexir (Electrical) [205000 h] | 205,000 | 14665 |
|  | 1.3.1.3.3.14 | **Floor 11** |  | 2025-06-13 | 2025-09-02 |  |  |  |  |  |  |
|  | 1.3.1.3.3.14.1 | **PHE Works** |  | 2025-06-13 | 2025-09-02 |  |  |  |  |  |  |
| PG-12012 |  | 1st Fix - Piping works | 12d | 2025-06-13 | 2025-06-26 | PG-11833 | 300.5d | 0d | Santech (Plumbing) [245000 h] | 245,000 | 14668 |
| PG-12013 |  | 2nd Fix - diverter fixing & Pressure testing | 10d | 2025-06-23 | 2025-07-03 | PG-12012 FF+6d | 300.5d | 0d | Santech (Plumbing) [124000 h] | 124,000 | 14669 |
| PG-12014 |  | Final Fix - CP & Sanitary fixtures | 9.5d | 2025-08-22 | 2025-09-02 | PG-12351, PG-12357 FF+6d | 300.5d | 0d | Santech (Plumbing) [330000 h] | 330,000 | 14670 |
|  | 1.3.1.3.3.14.2 | **Fire Fighting Works** |  | 2025-06-21 | 2025-09-02 |  |  |  |  |  |  |
| PG-12015 |  | 1st Fix - Piping and Shaft hydrant works | 11.67d | 2025-06-21 | 2025-07-05 | PG-12348 FF+6d | 347.17d | 0d | Nexus (Fire) [162000 h] | 162,000 | 14672 |
| PG-12016 |  | 2nd Fix - Sprinkler fixing & Pressure testing | 10d | 2025-07-30 | 2025-08-09 | PG-12356 FF+6d | 309.5d | 9d | Nexus (Fire) [145000 h] | 145,000 | 14673 |
| PG-12017 |  | Final Fix - Smoke & heat detectors, FHC , FAS Etc. | 9.5d | 2025-08-22 | 2025-09-02 | PG-12016, PG-12357 FF+6d | 300.5d | 0d | Nexus (Fire) [185000 h] | 185,000 | 14674 |
|  | 1.3.1.3.3.14.3 | **Electrical Works** |  | 2025-06-13 | 2025-09-02 |  |  |  |  |  |  |
| PG-12018 |  | 1st Fix - GI wire pulling | 7.83d | 2025-06-13 | 2025-06-21 | PG-11833 | 347.17d | 0d | Elexir (Electrical) [165000 h] | 165,000 | 14676 |
| PG-12019 |  | 2nd Fix - Wiring works | 12.83d | 2025-07-25 | 2025-08-08 | PG-12356 FF+5d | 314.5d | 14d | Elexir (Electrical) [248000 h] | 248,000 | 14677 |
| PG-12020 |  | Final Fix - Electrical Fixtures | 5.5d | 2025-08-27 | 2025-09-02 | PG-12019, PG-12357 FF+6d | 300.5d | 0d | Elexir (Electrical) [205000 h] | 205,000 | 14678 |
|  | 1.3.1.3.3.15 | **Floor 12** |  | 2025-06-26 | 2025-09-18 |  |  |  |  |  |  |
|  | 1.3.1.3.3.15.1 | **PHE Works** |  | 2025-06-26 | 2025-09-18 |  |  |  |  |  |  |
| PG-12021 |  | 1st Fix - Piping works | 12d | 2025-06-26 | 2025-07-09 | PG-11838 | 287.17d | 0d | Santech (Plumbing) [245000 h] | 245,000 | 14681 |
| PG-12022 |  | 2nd Fix - diverter fixing & Pressure testing | 10d | 2025-07-05 | 2025-07-16 | PG-12021 FF+6d | 287.17d | 0d | Santech (Plumbing) [124000 h] | 124,000 | 14682 |
| PG-12023 |  | Final Fix - CP & Sanitary fixtures | 11.5d | 2025-09-05 | 2025-09-18 | PG-12365, PG-12371 FF+6d | 287.17d | 0d | Santech (Plumbing) [330000 h] | 330,000 | 14683 |
|  | 1.3.1.3.3.15.2 | **Fire Fighting Works** |  | 2025-07-04 | 2025-09-18 |  |  |  |  |  |  |
| PG-12024 |  | 1st Fix - Piping and Shaft hydrant works | 11.67d | 2025-07-04 | 2025-07-18 | PG-12362 FF+6d | 334.33d | 0d | Nexus (Fire) [162000 h] | 162,000 | 14685 |
| PG-12025 |  | 2nd Fix - Sprinkler fixing & Pressure testing | 9.67d | 2025-08-12 | 2025-08-23 | PG-12370 FF+6d | 297.17d | 10d | Nexus (Fire) [145000 h] | 145,000 | 14686 |
| PG-12026 |  | Final Fix - Smoke & heat detectors, FHC , FAS Etc. | 11.5d | 2025-09-05 | 2025-09-18 | PG-12025, PG-12371 FF+6d | 287.17d | 0d | Nexus (Fire) [185000 h] | 185,000 | 14687 |

| ID | WBS | Activity | Duration | Start | Finish | Predecessors | Total float | Free float | Resources | Cost | MSP Activity ID |
| --- | --- | --- | --- | --- | --- | --- | --- | --- | --- | --- | --- |
|  | 1.3.1.3.3.15.3 | **Electrical Works** |  | 2025-06-26 | 2025-09-18 |  |  |  |  |  |  |
| PG-12027 |  | 1st Fix - GI wire pulling | 7.67d | 2025-06-26 | 2025-07-04 | PG-11838 | 334.33d | 0d | Elexir (Electrical) [165000 h] | 165,000 | 14689 |
| PG-12028 |  | 2nd Fix - Wiring works | 13.5d | 2025-08-06 | 2025-08-22 | PG-12370 FF+5d | 304.17d | 17d | Elexir (Electrical) [248000 h] | 248,000 | 14690 |
| PG-12029 |  | Final Fix - Electrical Fixtures | 5.5d | 2025-09-12 | 2025-09-18 | PG-12028, PG-12371 FF+6d | 287.17d | 0d | Elexir (Electrical) [205000 h] | 205,000 | 14691 |
|  | 1.3.1.3.3.16 | **Floor 13** |  | 2025-07-09 | 2025-10-01 |  |  |  |  |  |  |
|  | 1.3.1.3.3.16.1 | **PHE Works** |  | 2025-07-09 | 2025-10-01 |  |  |  |  |  |  |
| PG-12030 |  | 1st Fix - Piping works | 12d | 2025-07-09 | 2025-07-22 | PG-11843 | 276.5d | 0d | Santech (Plumbing) [245000 h] | 245,000 | 14694 |
| PG-12031 |  | 2nd Fix - diverter fixing & Pressure testing | 10d | 2025-07-18 | 2025-07-29 | PG-12030 FF+6d | 276.5d | 0d | Santech (Plumbing) [124000 h] | 124,000 | 14695 |
| PG-12032 |  | Final Fix - CP & Sanitary fixtures | 10.5d | 2025-09-19 | 2025-10-01 | PG-12379, PG-12385 FF+6d | 276.5d | 0d | Santech (Plumbing) [330000 h] | 330,000 | 14696 |
|  | 1.3.1.3.3.16.2 | **Fire Fighting Works** |  | 2025-07-17 | 2025-10-01 |  |  |  |  |  |  |
| PG-12033 |  | 1st Fix - Piping and Shaft hydrant works | 11.67d | 2025-07-17 | 2025-07-31 | PG-12376 FF+6d | 323.5d | 0d | Nexus (Fire) [162000 h] | 162,000 | 14698 |
| PG-12034 |  | 2nd Fix - Sprinkler fixing & Pressure testing | 9.67d | 2025-08-26 | 2025-09-05 | PG-12384 FF+6d | 287.5d | 11d | Nexus (Fire) [145000 h] | 145,000 | 14699 |
| PG-12035 |  | Final Fix - Smoke & heat detectors, FHC , FAS Etc. | 10.5d | 2025-09-19 | 2025-10-01 | PG-12034, PG-12385 FF+6d | 276.5d | 0d | Nexus (Fire) [185000 h] | 185,000 | 14700 |
|  | 1.3.1.3.3.16.3 | **Electrical Works** |  | 2025-07-09 | 2025-10-01 |  |  |  |  |  |  |
| PG-12036 |  | 1st Fix - GI wire pulling | 7.67d | 2025-07-09 | 2025-07-17 | PG-11843 | 323.5d | 0d | Elexir (Electrical) [165000 h] | 165,000 | 14702 |
| PG-12037 |  | 2nd Fix - Wiring works | 13.5d | 2025-08-20 | 2025-09-04 | PG-12384 FF+5d | 293.5d | 17d | Elexir (Electrical) [248000 h] | 248,000 | 14703 |
| PG-12038 |  | Final Fix - Electrical Fixtures | 5.5d | 2025-09-25 | 2025-10-01 | PG-12037, PG-12385 FF+6d | 276.5d | 0d | Elexir (Electrical) [205000 h] | 205,000 | 14704 |
|  | 1.3.1.3.3.17 | **Floor 14** |  | 2025-07-22 | 2025-10-13 |  |  |  |  |  |  |
|  | 1.3.1.3.3.17.1 | **PHE Works** |  | 2025-07-22 | 2025-10-13 |  |  |  |  |  |  |
| PG-12039 |  | 1st Fix - Piping works | 12d | 2025-07-22 | 2025-08-04 | PG-11848 | 267.5d | 0d | Santech (Plumbing) [245000 h] | 245,000 | 14707 |
| PG-12040 |  | 2nd Fix - diverter fixing & Pressure testing | 10d | 2025-07-31 | 2025-08-11 | PG-12039 FF+6d | 267.5d | 0d | Santech (Plumbing) [124000 h] | 124,000 | 14708 |
| PG-12041 |  | Final Fix - CP & Sanitary fixtures | 9.5d | 2025-10-01 | 2025-10-13 | PG-12393, PG-12399 FF+6d | 267.5d | 0d | Santech (Plumbing) [330000 h] | 330,000 | 14709 |
|  | 1.3.1.3.3.17.2 | **Fire Fighting Works** |  | 2025-07-30 | 2025-10-13 |  |  |  |  |  |  |
| PG-12042 |  | 1st Fix - Piping and Shaft hydrant works | 11.67d | 2025-07-30 | 2025-08-13 | PG-12390 FF+6d | 314.5d | 0d | Nexus (Fire) [162000 h] | 162,000 | 14711 |
| PG-12043 |  | 2nd Fix - Sprinkler fixing & Pressure testing | 9.67d | 2025-09-08 | 2025-09-18 | PG-12398 FF+6d | 277.5d | 10d | Nexus (Fire) [145000 h] | 145,000 | 14712 |
| PG-12044 |  | Final Fix - Smoke & heat detectors, FHC , FAS Etc. | 9.5d | 2025-10-01 | 2025-10-13 | PG-12043, PG-12399 FF+6d | 267.5d | 0d | Nexus (Fire) [185000 h] | 185,000 | 14713 |

| ID | WBS | Activity | Duration | Start | Finish | Predecessors | Planned start | Planned finish | Total float | Free float | Resources | Cost | MSP Activity ID |
| --- | --- | --- | --- | --- | --- | --- | --- | --- | --- | --- | --- | --- | --- |
|  | 1.3.1.3.3.17.3 | **Electrical Works** |  | 2025-07-22 | 2025-10-13 |  |  |  |  |  |  |  |  |
| PG-12045 |  | 1st Fix - GI wire pulling | 7.67d | 2025-07-22 | 2025-07-30 | PG-11848 |  |  | 314.5d | 0d | Elexir (Electrical) [165000 h] | 165,000 | 14715 |
| PG-12046 |  | 2nd Fix - Wiring works | 14.5d | 2025-09-01 | 2025-09-17 | PG-12398 FF+5d |  |  | 282.5d | 15d | Elexir (Electrical) [248000 h] | 248,000 | 14716 |
| PG-12047 |  | Final Fix - Electrical Fixtures | 5.5d | 2025-10-07 | 2025-10-13 | PG-12046, PG-12399 FF+6d |  |  | 267.5d | 0d | Elexir (Electrical) [205000 h] | 205,000 | 14717 |
|  | 1.3.1.3.3.18 | **Floor 15** |  | 2025-08-04 | 2026-01-14 |  |  |  |  |  |  |  |  |
|  | 1.3.1.3.3.18.1 | **PHE Works** |  | 2025-08-04 | 2026-01-14 |  |  |  |  |  |  |  |  |
| PG-12048 |  | 1st Fix - Piping works | 12d | 2025-08-04 | 2025-08-18 | PG-11853 |  |  | 113.5d | 0d | Santech (Plumbing) [245000 h] | 245,000 | 14720 |
| PG-12049 |  | 2nd Fix - diverter fixing & Pressure testing | 10d | 2025-08-13 | 2025-08-25 | PG-12048 FF+6d |  |  | 113.5d | 68.33d | Santech (Plumbing) [124000 h] | 124,000 | 14721 |
| PG-12050 |  | Final Fix - CP & Sanitary fixtures | 10.5d | 2026-01-02 | 2026-01-14 | PG-12407, PG-12413 FF+6d |  |  | 186.83d | 0d | Santech (Plumbing) [330000 h] | 330,000 | 14722 |
|  | 1.3.1.3.3.18.2 | **Fire Fighting Works** |  | 2025-08-12 | 2026-01-14 |  |  |  |  |  |  |  |  |
| PG-12051 |  | 1st Fix - Piping and Shaft hydrant works | 11.67d | 2025-08-12 | 2025-08-27 | PG-12404 FF+6d |  |  | 303.33d | 0d | Nexus (Fire) [162000 h] | 162,000 | 14724 |
| PG-12052 |  | 2nd Fix - Sprinkler fixing & Pressure testing | 9.67d | 2025-12-11 | 2025-12-23 | PG-12412 FF+6d | 2025-12-11 | 2025-12-22 | 195.83d | 9d | Nexus (Fire) [145000 h] | 145,000 | 14725 |
| PG-12053 |  | Final Fix - Smoke & heat detectors, FHC , FAS Etc. | 10.5d | 2026-01-02 | 2026-01-14 | PG-12052, PG-12413 FF+6d |  |  | 186.83d | 0d | Nexus (Fire) [185000 h] | 185,000 | 14726 |
|  | 1.3.1.3.3.18.3 | **Electrical Works** |  | 2025-08-04 | 2026-01-14 |  |  |  |  |  |  |  |  |
| PG-12054 |  | 1st Fix - GI wire pulling | 7.67d | 2025-08-04 | 2025-08-12 | PG-11853 |  |  | 303.33d | 0d | Elexir (Electrical) [165000 h] | 165,000 | 14728 |
| PG-12055 |  | 2nd Fix - Wiring works | 13.5d | 2025-12-05 | 2025-12-22 | PG-12412 FF+5d |  |  | 201.83d | 15d | Elexir (Electrical) [248000 h] | 248,000 | 14729 |
| PG-12056 |  | Final Fix - Electrical Fixtures | 5.5d | 2026-01-08 | 2026-01-14 | PG-12055, PG-12413 FF+6d |  |  | 186.83d | 0d | Elexir (Electrical) [205000 h] | 205,000 | 14730 |
|  | 1.3.1.3.3.19 | **Floor 16** |  | 2025-08-18 | 2025-11-08 |  |  |  |  |  |  |  |  |
|  | 1.3.1.3.3.19.1 | **PHE Works** |  | 2025-08-18 | 2025-11-08 |  |  |  |  |  |  |  |  |
| PG-12057 |  | 1st Fix - Piping works | 12d | 2025-08-18 | 2025-08-30 | PG-11858 |  |  | 245.33d | 0d | Santech (Plumbing) [245000 h] | 245,000 | 14733 |
| PG-12058 |  | 2nd Fix - diverter fixing & Pressure testing | 10d | 2025-08-27 | 2025-09-06 | PG-12057 FF+6d |  |  | 245.33d | 0d | Santech (Plumbing) [124000 h] | 124,000 | 14734 |
| PG-12059 |  | Final Fix - CP & Sanitary fixtures | 10.67d | 2025-10-27 | 2025-11-08 | PG-12421, PG-12427 FF+6d |  |  | 245.33d | 0d | Santech (Plumbing) [330000 h] | 330,000 | 14735 |
|  | 1.3.1.3.3.19.2 | **Fire Fighting Works** |  | 2025-08-26 | 2025-11-08 |  |  |  |  |  |  |  |  |
| PG-12060 |  | 1st Fix - Piping and Shaft hydrant works | 11.67d | 2025-08-26 | 2025-09-09 | PG-12418 FF+6d |  |  | 292.5d | 0d | Nexus (Fire) [162000 h] | 162,000 | 14737 |
| PG-12061 |  | 2nd Fix - Sprinkler fixing & Pressure testing | 9.83d | 2025-10-04 | 2025-10-15 | PG-12426 FF+6d |  |  | 254.33d | 9d | Nexus (Fire) [145000 h] | 145,000 | 14738 |
| PG-12062 |  | Final Fix - Smoke & heat detectors, FHC , FAS Etc. | 10.67d | 2025-10-27 | 2025-11-08 | PG-12061, PG-12427 FF+6d |  |  | 245.33d | 0d | Nexus (Fire) [185000 h] | 185,000 | 14739 |

| ID | WBS | Activity | Duration | Start | Finish | Predecessors | Total float | Free float | Resources | Cost | MSP Activity ID |
| --- | --- | --- | --- | --- | --- | --- | --- | --- | --- | --- | --- |
|  | 1.3.1.3.3.19.3 | **Electrical Works** |  | 2025-08-18 | 2025-11-08 |  |  |  |  |  |  |
| PG-12063 |  | 1st Fix - GI wire pulling | 7.67d | 2025-08-18 | 2025-08-26 | PG-11858 | 292.5d | 0d | Elexir (Electrical) [165000 h] | 165,000 | 14741 |
| PG-12064 |  | 2nd Fix - Wiring works | 12.5d | 2025-09-29 | 2025-10-14 | PG-12426 FF+5d | 260.33d | 15d | Elexir (Electrical) [248000 h] | 248,000 | 14742 |
| PG-12065 |  | Final Fix - Electrical Fixtures | 5.67d | 2025-11-03 | 2025-11-08 | PG-12064, PG-12427 FF+6d | 245.33d | 0d | Elexir (Electrical) [205000 h] | 205,000 | 14743 |
|  | 1.3.1.3.3.20 | **Floor 17** |  | 2025-08-30 | 2025-11-20 |  |  |  |  |  |  |
|  | 1.3.1.3.3.20.1 | **PHE Works** |  | 2025-08-30 | 2025-11-20 |  |  |  |  |  |  |
| PG-12066 |  | 1st Fix - Piping works | 12d | 2025-08-30 | 2025-09-12 | PG-11863 | 234.33d | 0d | Santech (Plumbing) [245000 h] | 245,000 | 14746 |
| PG-12067 |  | 2nd Fix - diverter fixing & Pressure testing | 10d | 2025-09-09 | 2025-09-19 | PG-12066 FF+6d | 234.33d | 0d | Santech (Plumbing) [124000 h] | 124,000 | 14747 |
| PG-12068 |  | Final Fix - CP & Sanitary fixtures | 10.67d | 2025-11-08 | 2025-11-20 | PG-12435, PG-12441 FF+6d | 234.33d | 0d | Santech (Plumbing) [330000 h] | 330,000 | 14748 |
|  | 1.3.1.3.3.20.2 | **Fire Fighting Works** |  | 2025-09-08 | 2025-11-20 |  |  |  |  |  |  |
| PG-12069 |  | 1st Fix - Piping and Shaft hydrant works | 11.67d | 2025-09-08 | 2025-09-22 | PG-12432 FF+6d | 282.33d | 0d | Nexus (Fire) [162000 h] | 162,000 | 14750 |
| PG-12070 |  | 2nd Fix - Sprinkler fixing & Pressure testing | 10d | 2025-10-17 | 2025-10-28 | PG-12440 FF+6d | 242.33d | 8d | Nexus (Fire) [145000 h] | 145,000 | 14751 |
| PG-12071 |  | Final Fix - Smoke & heat detectors, FHC , FAS Etc. | 10.67d | 2025-11-08 | 2025-11-20 | PG-12070, PG-12441 FF+6d | 234.33d | 0d | Nexus (Fire) [185000 h] | 185,000 | 14752 |
|  | 1.3.1.3.3.20.3 | **Electrical Works** |  | 2025-08-30 | 2025-11-20 |  |  |  |  |  |  |
| PG-12072 |  | 1st Fix - GI wire pulling | 7.67d | 2025-08-30 | 2025-09-08 | PG-11863 | 282.33d | 0d | Elexir (Electrical) [165000 h] | 165,000 | 14754 |
| PG-12073 |  | 2nd Fix - Wiring works | 13.5d | 2025-10-11 | 2025-10-27 | PG-12440 FF+5d | 248.33d | 14d | Elexir (Electrical) [248000 h] | 248,000 | 14755 |
| PG-12074 |  | Final Fix - Electrical Fixtures | 5.67d | 2025-11-14 | 2025-11-20 | PG-12073, PG-12441 FF+6d | 234.33d | 0d | Elexir (Electrical) [205000 h] | 205,000 | 14756 |
|  | 1.3.1.3.3.21 | **Floor 18** |  | 2025-09-12 | 2025-12-03 |  |  |  |  |  |  |
|  | 1.3.1.3.3.21.1 | **PHE Works** |  | 2025-09-12 | 2025-12-03 |  |  |  |  |  |  |
| PG-12075 |  | 1st Fix - Piping works | 12d | 2025-09-12 | 2025-09-25 | PG-11868 | 223.33d | 0d | Santech (Plumbing) [245000 h] | 245,000 | 14759 |
| PG-12076 |  | 2nd Fix - diverter fixing & Pressure testing | 10d | 2025-09-22 | 2025-10-03 | PG-12075 FF+6d | 223.33d | 0d | Santech (Plumbing) [124000 h] | 124,000 | 14760 |
| PG-12077 |  | Final Fix - CP & Sanitary fixtures | 10.67d | 2025-11-21 | 2025-12-03 | PG-12449, PG-12455 FF+6d | 223.33d | 0d | Santech (Plumbing) [330000 h] | 330,000 | 14761 |
|  | 1.3.1.3.3.21.2 | **Fire Fighting Works** |  | 2025-09-20 | 2025-12-03 |  |  |  |  |  |  |
| PG-12078 |  | 1st Fix - Piping and Shaft hydrant works | 11.67d | 2025-09-20 | 2025-10-06 | PG-12446 FF+6d | 271.33d | 0d | Nexus (Fire) [162000 h] | 162,000 | 14763 |
| PG-12079 |  | 2nd Fix - Sprinkler fixing & Pressure testing | 10d | 2025-10-30 | 2025-11-11 | PG-12454 FF+6d | 231.33d | 8d | Nexus (Fire) [145000 h] | 145,000 | 14764 |
| PG-12080 |  | Final Fix - Smoke & heat detectors, FHC , FAS Etc. | 10.67d | 2025-11-21 | 2025-12-03 | PG-12079, PG-12455 FF+6d | 223.33d | 0d | Nexus (Fire) [185000 h] | 185,000 | 14765 |

| ID | WBS | Activity | Duration | Start | Finish | Predecessors | Total float | Free float | Resources | Cost | MSP Activity ID |
| --- | --- | --- | --- | --- | --- | --- | --- | --- | --- | --- | --- |
|  | 1.3.1.3.3.21.3 | **Electrical Works** |  | 2025-09-12 | 2025-12-03 |  |  |  |  |  |  |
| PG-12081 |  | 1st Fix - GI wire pulling | 7.67d | 2025-09-12 | 2025-09-20 | PG-11868 | 271.33d | 0d | Elexir (Electrical) [165000 h] | 165,000 | 14767 |
| PG-12082 |  | 2nd Fix - Wiring works | 13.5d | 2025-10-24 | 2025-11-10 | PG-12454 FF+5d | 237.33d | 14d | Elexir (Electrical) [248000 h] | 248,000 | 14768 |
| PG-12083 |  | Final Fix - Electrical Fixtures | 5.67d | 2025-11-27 | 2025-12-03 | PG-12082, PG-12455 FF+6d | 223.33d | 0d | Elexir (Electrical) [205000 h] | 205,000 | 14769 |
|  | 1.3.1.3.3.22 | **Floor 19** |  | 2025-09-25 | 2025-12-16 |  |  |  |  |  |  |
|  | 1.3.1.3.3.22.1 | **PHE Works** |  | 2025-09-25 | 2025-12-16 |  |  |  |  |  |  |
| PG-12084 |  | 1st Fix - Piping works | 12d | 2025-09-25 | 2025-10-09 | PG-11873 | 212.33d | 0d | Santech (Plumbing) [245000 h] | 245,000 | 14772 |
| PG-12085 |  | 2nd Fix - diverter fixing & Pressure testing | 10d | 2025-10-06 | 2025-10-16 | PG-12084 FF+6d | 212.33d | 0d | Santech (Plumbing) [124000 h] | 124,000 | 14773 |
| PG-12086 |  | Final Fix - CP & Sanitary fixtures | 10.67d | 2025-12-04 | 2025-12-16 | PG-12463, PG-12469 FF+6d | 212.33d | 0d | Santech (Plumbing) [330000 h] | 330,000 | 14774 |
|  | 1.3.1.3.3.22.2 | **Fire Fighting Works** |  | 2025-10-04 | 2025-12-16 |  |  |  |  |  |  |
| PG-12087 |  | 1st Fix - Piping and Shaft hydrant works | 11.67d | 2025-10-04 | 2025-10-18 | PG-12460 FF+6d | 260.33d | 0d | Nexus (Fire) [162000 h] | 162,000 | 14776 |
| PG-12088 |  | 2nd Fix - Sprinkler fixing & Pressure testing | 10d | 2025-11-13 | 2025-11-24 | PG-12468 FF+6d | 220.33d | 8d | Nexus (Fire) [145000 h] | 145,000 | 14777 |
| PG-12089 |  | Final Fix - Smoke & heat detectors, FHC , FAS Etc. | 10.67d | 2025-12-04 | 2025-12-16 | PG-12088, PG-12469 FF+6d | 212.33d | 0d | Nexus (Fire) [185000 h] | 185,000 | 14778 |
|  | 1.3.1.3.3.22.3 | **Electrical Works** |  | 2025-09-25 | 2025-12-16 |  |  |  |  |  |  |
| PG-12090 |  | 1st Fix - GI wire pulling | 7.67d | 2025-09-25 | 2025-10-04 | PG-11873 | 260.33d | 0d | Elexir (Electrical) [165000 h] | 165,000 | 14780 |
| PG-12091 |  | 2nd Fix - Wiring works | 13.5d | 2025-11-07 | 2025-11-22 | PG-12468 FF+5d | 226.33d | 14d | Elexir (Electrical) [248000 h] | 248,000 | 14781 |
| PG-12092 |  | Final Fix - Electrical Fixtures | 5.67d | 2025-12-10 | 2025-12-16 | PG-12091, PG-12469 FF+6d | 212.33d | 0d | Elexir (Electrical) [205000 h] | 205,000 | 14782 |
|  | 1.3.1.3.3.23 | **Floor 20** |  | 2025-10-09 | 2025-12-30 |  |  |  |  |  |  |
|  | 1.3.1.3.3.23.1 | **PHE Works** |  | 2025-10-09 | 2025-12-30 |  |  |  |  |  |  |
| PG-12093 |  | 1st Fix - Piping works | 12d | 2025-10-09 | 2025-10-22 | PG-11878 | 200.67d | 0d | Santech (Plumbing) [245000 h] | 245,000 | 14785 |
| PG-12094 |  | 2nd Fix - diverter fixing & Pressure testing | 10d | 2025-10-18 | 2025-10-29 | PG-12093 FF+6d | 200.67d | 0d | Santech (Plumbing) [124000 h] | 124,000 | 14786 |
| PG-12095 |  | Final Fix - CP & Sanitary fixtures | 9.33d | 2025-12-19 | 2025-12-30 | PG-12477, PG-12483 FF+6d | 200.67d | 0d | Santech (Plumbing) [330000 h] | 330,000 | 14787 |
|  | 1.3.1.3.3.23.2 | **Fire Fighting Works** |  | 2025-10-17 | 2025-12-30 |  |  |  |  |  |  |
| PG-12096 |  | 1st Fix - Piping and Shaft hydrant works | 11.67d | 2025-10-17 | 2025-10-31 | PG-12474 FF+6d | 248.5d | 0d | Nexus (Fire) [162000 h] | 162,000 | 14789 |
| PG-12097 |  | 2nd Fix - Sprinkler fixing & Pressure testing | 9.67d | 2025-11-26 | 2025-12-06 | PG-12482 FF+6d | 210.67d | 10d | Nexus (Fire) [145000 h] | 145,000 | 14790 |
| PG-12098 |  | Final Fix - Smoke & heat detectors, FHC , FAS Etc. | 9.33d | 2025-12-19 | 2025-12-30 | PG-12097, PG-12483 FF+6d | 200.67d | 0d | Nexus (Fire) [185000 h] | 185,000 | 14791 |

| ID | WBS | Activity | Duration | Start | Finish | Predecessors | Total float | Free float | Resources | Cost | MSP Activity ID |
| --- | --- | --- | --- | --- | --- | --- | --- | --- | --- | --- | --- |
|  | 1.3.1.3.3.23.3 | **Electrical Works** |  | 2025-10-09 | 2025-12-30 |  |  |  |  |  |  |
| PG-12099 |  | 1st Fix - GI wire pulling | 7.83d | 2025-10-09 | 2025-10-17 | PG-11878 | 248.5d | 0d | Elexir (Electrical) [165000 h] | 165,000 | 14793 |
| PG-12100 |  | 2nd Fix - Wiring works | 13.67d | 2025-11-20 | 2025-12-05 | PG-12482 FF+5d | 215.67d | 15d | Elexir (Electrical) [248000 h] | 248,000 | 14794 |
| PG-12101 |  | Final Fix - Electrical Fixtures | 5.33d | 2025-12-24 | 2025-12-30 | PG-12100, PG-12483 FF+6d | 200.67d | 0d | Elexir (Electrical) [205000 h] | 205,000 | 14795 |
|  | 1.3.1.3.3.24 | **Floor 21** |  | 2025-10-22 | 2026-01-12 |  |  |  |  |  |  |
|  | 1.3.1.3.3.24.1 | **PHE Works** |  | 2025-10-22 | 2026-01-12 |  |  |  |  |  |  |
| PG-12102 |  | 1st Fix - Piping works | 11.67d | 2025-10-22 | 2025-11-05 | PG-11883 | 189.83d | 0d | Santech (Plumbing) [245000 h] | 245,000 | 14798 |
| PG-12103 |  | 2nd Fix - diverter fixing & Pressure testing | 8.67d | 2025-11-03 | 2025-11-12 | PG-12102 FF+6d | 189.83d | 0d | Santech (Plumbing) [124000 h] | 124,000 | 14799 |
| PG-12104 |  | Final Fix - CP & Sanitary fixtures | 10.5d | 2025-12-30 | 2026-01-12 | PG-12491, PG-12497 FF+6d | 189.83d | 0d | Santech (Plumbing) [330000 h] | 330,000 | 14800 |
|  | 1.3.1.3.3.24.2 | **Fire Fighting Works** |  | 2025-10-30 | 2026-01-12 |  |  |  |  |  |  |
| PG-12105 |  | 1st Fix - Piping and Shaft hydrant works | 11.67d | 2025-10-30 | 2025-11-14 | PG-12488 FF+6d | 237.33d | 0d | Nexus (Fire) [162000 h] | 162,000 | 14802 |
| PG-12106 |  | 2nd Fix - Sprinkler fixing & Pressure testing | 9.5d | 2025-12-09 | 2025-12-19 | PG-12496 FF+6d | 198.83d | 9d | Nexus (Fire) [145000 h] | 145,000 | 14803 |
| PG-12107 |  | Final Fix - Smoke & heat detectors, FHC , FAS Etc. | 10.5d | 2025-12-30 | 2026-01-12 | PG-12497 FF+6d, PG-12106 | 189.83d | 0d | Nexus (Fire) [185000 h] | 185,000 | 14804 |
|  | 1.3.1.3.3.24.3 | **Electrical Works** |  | 2025-10-22 | 2025-12-30 |  |  |  |  |  |  |
| PG-12108 |  | 1st Fix - GI wire pulling | 7.83d | 2025-10-22 | 2025-10-30 | PG-11883 | 237.33d | 0d | Elexir (Electrical) [165000 h] | 165,000 | 14806 |
| PG-12109 |  | 2nd Fix - Wiring works | 13.67d | 2025-11-20 | 2025-12-05 | PG-12482 FF+5d | 215.67d | 15d | Elexir (Electrical) [248000 h] | 248,000 | 14807 |
| PG-12110 |  | Final Fix - Electrical Fixtures | 5.33d | 2025-12-24 | 2025-12-30 | PG-12109, PG-12483 FF+6d | 200.67d | 10.83d | Elexir (Electrical) [205000 h] | 205,000 | 14808 |
|  | 1.3.1.3.3.25 | **Floor 22** |  | 2025-11-05 | 2026-01-24 |  |  |  |  |  |  |
|  | 1.3.1.3.3.25.1 | **PHE Works** |  | 2025-11-05 | 2026-01-24 |  |  |  |  |  |  |
| PG-12111 |  | 1st Fix - Piping works | 11.67d | 2025-11-05 | 2025-11-18 | PG-11888 | 178.83d | 0d | Santech (Plumbing) [245000 h] | 245,000 | 14811 |
| PG-12112 |  | 2nd Fix - diverter fixing & Pressure testing | 8.67d | 2025-11-15 | 2025-11-25 | PG-12111 FF+6d | 178.83d | 0d | Santech (Plumbing) [124000 h] | 124,000 | 14812 |
| PG-12113 |  | Final Fix - CP & Sanitary fixtures | 10.5d | 2026-01-12 | 2026-01-24 | PG-12505, PG-12511 FF+6d | 178.83d | 0d | Santech (Plumbing) [330000 h] | 330,000 | 14813 |
|  | 1.3.1.3.3.25.2 | **Fire Fighting Works** |  | 2025-11-13 | 2026-01-24 |  |  |  |  |  |  |
| PG-12114 |  | 1st Fix - Piping and Shaft hydrant works | 11.67d | 2025-11-13 | 2025-11-27 | PG-12502 FF+6d | 226.33d | 0d | Nexus (Fire) [162000 h] | 162,000 | 14815 |
| PG-12115 |  | 2nd Fix - Sprinkler fixing & Pressure testing | 9.5d | 2025-12-22 | 2026-01-01 | PG-12510 FF+6d | 187.83d | 9d | Nexus (Fire) [145000 h] | 145,000 | 14816 |
| PG-12116 |  | Final Fix - Smoke & heat detectors, FHC , FAS Etc. | 10.5d | 2026-01-12 | 2026-01-24 | PG-12115, PG-12511 FF+6d | 178.83d | 0d | Nexus (Fire) [185000 h] | 185,000 | 14817 |

| ID | WBS | Activity | Duration | Start | Finish | Predecessors | Total float | Free float | Resources | Cost | MSP Activity ID |
| --- | --- | --- | --- | --- | --- | --- | --- | --- | --- | --- | --- |
|  | 1.3.1.3.3.25.3 | **Electrical Works** |  | 2025-11-05 | 2026-01-24 |  |  |  |  |  |  |
| PG-12117 |  | 1st Fix - GI wire pulling | 7.83d | 2025-11-05 | 2025-11-13 | PG-11888 | 226.33d | 0d | Elexir (Electrical) [165000 h] | 165,000 | 14819 |
| PG-12118 |  | 2nd Fix - Wiring works | 13.5d | 2025-12-16 | 2025-12-31 | PG-12510 FF+5d | 193.83d | 15d | Elexir (Electrical) [248000 h] | 248,000 | 14820 |
| PG-12119 |  | Final Fix - Electrical Fixtures | 5.5d | 2026-01-17 | 2026-01-24 | PG-12118, PG-12511 FF+6d | 178.83d | 0d | Elexir (Electrical) [205000 h] | 205,000 | 14821 |
|  | 1.3.1.3.3.26 | **Floor 23** |  | 2025-11-17 | 2026-02-06 |  |  |  |  |  |  |
|  | 1.3.1.3.3.26.1 | **PHE Works** |  | 2025-11-17 | 2026-02-06 |  |  |  |  |  |  |
| PG-12120 |  | 1st Fix - Piping works | 10.67d | 2025-11-17 | 2025-11-29 | PG-11893 | 168.17d | 0d | Santech (Plumbing) [245000 h] | 245,000 | 14824 |
| PG-12121 |  | 2nd Fix - diverter fixing & Pressure testing | 9.67d | 2025-11-25 | 2025-12-06 | PG-12120 FF+6d | 168.17d | 0d | Santech (Plumbing) [124000 h] | 124,000 | 14825 |
| PG-12122 |  | Final Fix - CP & Sanitary fixtures | 9.33d | 2026-01-27 | 2026-02-06 | PG-12519, PG-12525 FF+6d | 168.17d | 0d | Santech (Plumbing) [330000 h] | 330,000 | 14826 |
|  | 1.3.1.3.3.26.2 | **Fire Fighting Works** |  | 2025-11-25 | 2026-02-06 |  |  |  |  |  |  |
| PG-12123 |  | 1st Fix - Piping and Shaft hydrant works | 11.83d | 2025-11-25 | 2025-12-09 | PG-12516 FF+6d | 215.67d | 0d | Nexus (Fire) [162000 h] | 162,000 | 14828 |
| PG-12124 |  | 2nd Fix - Sprinkler fixing & Pressure testing | 10.67d | 2025-12-31 | 2026-01-13 | PG-12524 FF+6d | 179.17d | 11d | Nexus (Fire) [145000 h] | 145,000 | 14829 |
| PG-12125 |  | Final Fix - Smoke & heat detectors, FHC , FAS Etc. | 9.33d | 2026-01-27 | 2026-02-06 | PG-12124, PG-12525 FF+6d | 168.17d | 0d | Nexus (Fire) [185000 h] | 185,000 | 14830 |
|  | 1.3.1.3.3.26.3 | **Electrical Works** |  | 2025-11-17 | 2026-02-06 |  |  |  |  |  |  |
| PG-12126 |  | 1st Fix - GI wire pulling | 6.83d | 2025-11-17 | 2025-11-25 | PG-11893 | 215.67d | 0d | Elexir (Electrical) [165000 h] | 165,000 | 14832 |
| PG-12127 |  | 2nd Fix - Wiring works | 14.67d | 2025-12-25 | 2026-01-12 | PG-12524 FF+5d | 184.17d | 16d | Elexir (Electrical) [248000 h] | 248,000 | 14833 |
| PG-12128 |  | Final Fix - Electrical Fixtures | 5.33d | 2026-01-31 | 2026-02-06 | PG-12127, PG-12525 FF+6d | 168.17d | 0d | Elexir (Electrical) [205000 h] | 205,000 | 14834 |
|  | 1.3.1.3.3.27 | **Floor 24** |  | 2025-11-29 | 2026-02-20 |  |  |  |  |  |  |
|  | 1.3.1.3.3.27.1 | **PHE Works** |  | 2025-11-29 | 2026-02-20 |  |  |  |  |  |  |
| PG-12129 |  | 1st Fix - Piping works | 11.67d | 2025-11-29 | 2025-12-13 | PG-11898 | 0d |  | Santech (Plumbing) [245000 h] | 245,000 | 14837 |
| PG-12130 |  | 2nd Fix - diverter fixing & Pressure testing | 9.67d | 2025-12-09 | 2025-12-20 | PG-12129 FF+6d | 156.83d | 0d | Santech (Plumbing) [124000 h] | 124,000 | 14838 |
| PG-12131 |  | Final Fix - CP & Sanitary fixtures | 9.67d | 2026-02-09 | 2026-02-20 | PG-12533, PG-12539 FF+6d | 156.83d | 0d | Santech (Plumbing) [330000 h] | 330,000 | 14839 |
|  | 1.3.1.3.3.27.2 | **Fire Fighting Works** |  | 2025-12-10 | 2026-02-20 |  |  |  |  |  |  |
| PG-12132 |  | 1st Fix - Piping and Shaft hydrant works | 11.33d | 2025-12-10 | 2025-12-23 | PG-12530 FF+6d | 204.33d | 0d | Nexus (Fire) [162000 h] | 162,000 | 14841 |
| PG-12133 |  | 2nd Fix - Sprinkler fixing & Pressure testing | 10.33d | 2026-01-15 | 2026-01-28 | PG-12538 FF+6d | 166.83d | 10d | Nexus (Fire) [145000 h] | 145,000 | 14842 |
| PG-12134 |  | Final Fix - Smoke & heat detectors, FHC , FAS Etc. | 9.67d | 2026-02-09 | 2026-02-20 | PG-12133, PG-12539 FF+6d | 156.83d | 0d | Nexus (Fire) [185000 h] | 185,000 | 14843 |

| ID | WBS | Activity | Duration | Start | Finish | Predecessors | Total float | Free float | Resources | Cost | MSP Activity ID |
| --- | --- | --- | --- | --- | --- | --- | --- | --- | --- | --- | --- |
|  | 1.3.1.3.3.27.3 | **Electrical Works** |  | 2025-11-29 | 2026-02-20 |  |  |  |  |  |  |
| PG-12135 |  | 1st Fix - GI wire pulling | 7.83d | 2025-11-29 | 2025-12-09 | PG-11898 | 204.33d | 0d | Elexir (Electrical) [165000 h] | 165,000 | 14845 |
| PG-12136 |  | 2nd Fix - Wiring works | 14.33d | 2026-01-09 | 2026-01-27 | PG-12538 FF+5d | 171.83d | 15d | Elexir (Electrical) [248000 h] | 248,000 | 14846 |
| PG-12137 |  | Final Fix - Electrical Fixtures | 5.67d | 2026-02-13 | 2026-02-20 | PG-12136, PG-12539 FF+6d | 156.83d | 0d | Elexir (Electrical) [205000 h] | 205,000 | 14847 |
|  | 1.3.1.3.3.28 | **Floor 25** |  | 2025-12-22 | 2026-03-13 |  |  |  |  |  |  |
|  | 1.3.1.3.3.28.1 | **PHE Works** |  | 2025-12-22 | 2026-03-13 |  |  |  |  |  |  |
| PG-12138 |  | 1st Fix - Piping works | 10.83d | 2025-12-22 | 2026-01-03 | PG-12129 FS+7d | 64.17d | 0d | Santech (Plumbing) [245000 h] | 245,000 | 14850 |
| PG-12139 |  | 2nd Fix - diverter fixing & Pressure testing | 8.67d | 2025-12-31 | 2026-01-10 | PG-12138 FF+6d | 89.17d | 0d | Santech (Plumbing) [124000 h] | 124,000 | 14851 |
| PG-12140 |  | Final Fix - CP & Sanitary fixtures | 9.33d | 2026-03-03 | 2026-03-13 | PG-12547, PG-12553 FF+6d | 137.67d | 0d | Santech (Plumbing) [330000 h] | 330,000 | 14852 |
|  | 1.3.1.3.3.28.2 | **Fire Fighting Works** |  | 2025-12-31 | 2026-03-13 |  |  |  |  |  |  |
| PG-12141 |  | 1st Fix - Piping and Shaft hydrant works | 11.5d | 2025-12-31 | 2026-01-14 | PG-12544 FF+6d | 100.33d | 0d | Nexus (Fire) [162000 h] | 162,000 | 14854 |
| PG-12142 |  | 2nd Fix - Sprinkler fixing & Pressure testing | 9.33d | 2026-02-07 | 2026-02-18 | PG-12552 FF+6d | 148.33d | 10.67d | Nexus (Fire) [145000 h] | 145,000 | 14855 |
| PG-12143 |  | Final Fix - Smoke & heat detectors, FHC , FAS Etc. | 9.33d | 2026-03-03 | 2026-03-13 | PG-12142, PG-12553 FF+6d | 137.67d | 0d | Nexus (Fire) [185000 h] | 185,000 | 14856 |
|  | 1.3.1.3.3.28.3 | **Electrical Works** |  | 2025-12-22 | 2026-03-13 |  |  |  |  |  |  |
| PG-12144 |  | 1st Fix - GI wire pulling | 7.67d | 2025-12-22 | 2025-12-31 | PG-12129 FS+7d | 0d |  | Elexir (Electrical) [165000 h] | 165,000 | 14858 |
| PG-12145 |  | 2nd Fix - Wiring works | 15.33d | 2026-01-30 | 2026-02-17 | PG-12552 FF+5d | 153.33d | 15.67d | Elexir (Electrical) [248000 h] | 248,000 | 14859 |
| PG-12146 |  | Final Fix - Electrical Fixtures | 5.33d | 2026-03-07 | 2026-03-13 | PG-12145, PG-12553 FF+6d | 137.67d | 0d | Elexir (Electrical) [205000 h] | 205,000 | 14860 |
|  | 1.3.1.3.3.29 | **Floor 26** |  | 2026-01-12 | 2026-04-03 |  |  |  |  |  |  |
|  | 1.3.1.3.3.29.1 | **PHE Works** |  | 2026-01-12 | 2026-04-03 |  |  |  |  |  |  |
| PG-12147 |  | 1st Fix - Piping works | 11.83d | 2026-01-12 | 2026-01-27 | PG-12138 FS+7d | 64.17d | 0d | Santech (Plumbing) [245000 h] | 245,000 | 14863 |
| PG-12148 |  | 2nd Fix - diverter fixing & Pressure testing | 10.67d | 2026-01-20 | 2026-02-03 | PG-12147 FF+6d | 118.33d | 0d | Santech (Plumbing) [124000 h] | 124,000 | 14864 |
| PG-12149 |  | Final Fix - CP & Sanitary fixtures | 8.33d | 2026-03-25 | 2026-04-03 | PG-12561, PG-12567 FF+6d | 118.33d | 0d | Santech (Plumbing) [330000 h] | 330,000 | 14865 |
|  | 1.3.1.3.3.29.2 | **Fire Fighting Works** |  | 2026-01-21 | 2026-04-03 |  |  |  |  |  |  |
| PG-12150 |  | 1st Fix - Piping and Shaft hydrant works | 11.67d | 2026-01-21 | 2026-02-04 | PG-12558 FF+6d | 167.5d | 0d | Nexus (Fire) [162000 h] | 162,000 | 14867 |
| PG-12151 |  | 2nd Fix - Sprinkler fixing & Pressure testing | 10.33d | 2026-02-27 | 2026-03-12 | PG-12566 FF+6d | 129.33d | 11d | Nexus (Fire) [145000 h] | 145,000 | 14868 |
| PG-12152 |  | Final Fix - Smoke & heat detectors, FHC , FAS Etc. | 8.33d | 2026-03-25 | 2026-04-03 | PG-12151, PG-12567 FF+6d | 118.33d | 0d | Nexus (Fire) [185000 h] | 185,000 | 14869 |

| ID | WBS | Activity | Duration | Start | Finish | Predecessors | Total float | Free float | Resources | Cost | MSP Activity ID |
| --- | --- | --- | --- | --- | --- | --- | --- | --- | --- | --- | --- |
|  | 1.3.1.3.3.29.3 | **Electrical Works** |  | 2026-01-12 | 2026-04-03 |  |  |  |  |  |  |
| PG-12153 |  | 1st Fix - GI wire pulling | 7.67d | 2026-01-12 | 2026-01-20 | PG-12138 FS+7d | 167.5d | 0d | Elexir (Electrical) [165000 h] | 165,000 | 14871 |
| PG-12154 |  | 2nd Fix - Wiring works | 15.33d | 2026-02-20 | 2026-03-11 | PG-12566 FF+5d | 133.33d | 15d | Elexir (Electrical) [248000 h] | 248,000 | 14872 |
| PG-12155 |  | Final Fix - Electrical Fixtures | 5.33d | 2026-03-28 | 2026-04-03 | PG-12154, PG-12567 FF+6d | 118.33d | 0d | Elexir (Electrical) [205000 h] | 205,000 | 14873 |
|  | 1.3.1.3.3.30 | **Floor 27** |  | 2026-02-04 | 2026-04-25 |  |  |  |  |  |  |
|  | 1.3.1.3.3.30.1 | **PHE Works** |  | 2026-02-04 | 2026-04-25 |  |  |  |  |  |  |
| PG-12156 |  | 1st Fix - Piping works | 11.67d | 2026-02-04 | 2026-02-17 | PG-12147 FS+7d | 64.17d | 0d | Santech (Plumbing) [245000 h] | 245,000 | 15380 |
| PG-12157 |  | 2nd Fix - diverter fixing & Pressure testing | 9.67d | 2026-02-13 | 2026-02-24 | PG-12156 FF+6d | 100.5d | 0d | Santech (Plumbing) [124000 h] | 124,000 | 15381 |
| PG-12158 |  | Final Fix - CP & Sanitary fixtures | 10.67d | 2026-04-13 | 2026-04-25 | PG-12575, PG-12581 FF+6d | 100.5d | 0d | Santech (Plumbing) [330000 h] | 330,000 | 15382 |
|  | 1.3.1.3.3.30.2 | **Fire Fighting Works** |  | 2026-02-13 | 2026-04-25 |  |  |  |  |  |  |
| PG-12159 |  | 1st Fix - Piping and Shaft hydrant works | 11.67d | 2026-02-13 | 2026-02-26 | PG-12572 FF+6d | 149.17d | 0d | Nexus (Fire) [162000 h] | 162,000 | 15384 |
| PG-12160 |  | 2nd Fix - Sprinkler fixing & Pressure testing | 8.5d | 2026-03-24 | 2026-04-02 | PG-12580 FF+6d | 109.5d | 9d | Nexus (Fire) [145000 h] | 145,000 | 15385 |
| PG-12161 |  | Final Fix - Smoke & heat detectors, FHC , FAS Etc. | 10.67d | 2026-04-13 | 2026-04-25 | PG-12160, PG-12581 FF+6d | 100.5d | 0d | Nexus (Fire) [185000 h] | 185,000 | 15386 |
|  | 1.3.1.3.3.30.3 | **Electrical Works** |  | 2026-02-04 | 2026-04-25 |  |  |  |  |  |  |
| PG-12162 |  | 1st Fix - GI wire pulling | 7.67d | 2026-02-04 | 2026-02-12 | PG-12147 FS+7d | 149.17d | 0d | Elexir (Electrical) [165000 h] | 165,000 | 15388 |
| PG-12163 |  | 2nd Fix - Wiring works | 13.5d | 2026-03-17 | 2026-04-01 | PG-12580 FF+5d | 115.5d | 15d | Elexir (Electrical) [248000 h] | 248,000 | 15389 |
| PG-12164 |  | Final Fix - Electrical Fixtures | 5.67d | 2026-04-18 | 2026-04-25 | PG-12163, PG-12581 FF+6d | 100.5d | 0d | Elexir (Electrical) [205000 h] | 205,000 | 15390 |
|  | 1.3.1.3.3.31 | **Floor 28** |  | 2026-02-25 | 2026-05-18 |  |  |  |  |  |  |
|  | 1.3.1.3.3.31.1 | **PHE Works** |  | 2026-02-25 | 2026-05-18 |  |  |  |  |  |  |
| PG-12165 |  | 1st Fix - Piping works | 11.67d | 2026-02-25 | 2026-03-11 | PG-12156 FS+7d | 64.17d | 0d | Santech (Plumbing) [245000 h] | 245,000 | 15393 |
| PG-12166 |  | 2nd Fix - diverter fixing & Pressure testing | 9.67d | 2026-03-06 | 2026-03-18 | PG-12165 FF+6d | 82.5d | 0d | Santech (Plumbing) [124000 h] | 124,000 | 15394 |
| PG-12167 |  | Final Fix - CP & Sanitary fixtures | 9.67d | 2026-05-06 | 2026-05-18 | PG-12589, PG-12595 FF+6d | 82.5d | 0d | Santech (Plumbing) [330000 h] | 330,000 | 15395 |
|  | 1.3.1.3.3.31.2 | **Fire Fighting Works** |  | 2026-03-06 | 2026-05-18 |  |  |  |  |  |  |
| PG-12168 |  | 1st Fix - Piping and Shaft hydrant works | 11.67d | 2026-03-06 | 2026-03-20 | PG-12586 FF+6d | 130.17d | 0d | Nexus (Fire) [162000 h] | 162,000 | 15397 |
| PG-12169 |  | 2nd Fix - Sprinkler fixing & Pressure testing | 9.5d | 2026-04-14 | 2026-04-24 | PG-12594 FF+6d | 92.83d | 10.33d | Nexus (Fire) [145000 h] | 145,000 | 15398 |
| PG-12170 |  | Final Fix - Smoke & heat detectors, FHC , FAS Etc. | 9.67d | 2026-05-06 | 2026-05-18 | PG-12169, PG-12595 FF+6d | 82.5d | 0d | Nexus (Fire) [185000 h] | 185,000 | 15399 |

| ID | WBS | Activity | Duration | Start | Finish | Predecessors | Complete | Planned start | Planned finish | Total float | Free float | Constraint | Resources | Cost | MSP Activity ID |
| --- | --- | --- | --- | --- | --- | --- | --- | --- | --- | --- | --- | --- | --- | --- | --- |
|  | 1.3.1.3.3.31.3 | **Electrical Works** |  | 2026-02-25 | 2026-05-18 |  |  |  |  |  |  |  |  |  |  |
| PG-12171 |  | 1st Fix - GI wire pulling | 7.67d | 2026-02-25 | 2026-03-06 | PG-12156 FS+7d |  |  |  | 130.17d | 0d |  | Elexir (Electrical) [165000 h] | 165,000 | 15401 |
| PG-12172 |  | 2nd Fix - Wiring works | 14.5d | 2026-04-07 | 2026-04-23 | PG-12594 FF+5d |  |  |  | 97.83d | 15.33d |  | Elexir (Electrical) [248000 h] | 248,000 | 15402 |
| PG-12173 |  | Final Fix - Electrical Fixtures | 5.67d | 2026-05-11 | 2026-05-18 | PG-12172, PG-12595 FF+6d |  |  |  | 82.5d | 0d |  | Elexir (Electrical) [205000 h] | 205,000 | 15403 |
|  | 1.3.1.3.3.32 | **Floor 29** |  | 2026-03-19 | 2026-06-08 |  |  |  |  |  |  |  |  |  |  |
|  | 1.3.1.3.3.32.1 | **PHE Works** |  | 2026-03-19 | 2026-06-08 |  |  |  |  |  |  |  |  |  |  |
| PG-12174 |  | 1st Fix - Piping works | 11.67d | 2026-03-19 | 2026-04-02 | PG-12165 FS+7d |  |  |  | 64.17d | 0d |  | Santech (Plumbing) [245000 h] | 245,000 | 15406 |
| PG-12175 |  | 2nd Fix - diverter fixing & Pressure testing | 9.67d | 2026-03-28 | 2026-04-09 | PG-12174 FF+6d |  |  |  | 64.17d | 0d |  | Santech (Plumbing) [124000 h] | 124,000 | 15407 |
| PG-12176 |  | Final Fix - CP & Sanitary fixtures | 9.67d | 2026-05-28 | 2026-06-08 | PG-12603, PG-12609 FF+6d |  |  |  | 64.17d | 0d |  | Santech (Plumbing) [330000 h] | 330,000 | 15408 |
|  | 1.3.1.3.3.32.2 | **Fire Fighting Works** |  | 2026-03-27 | 2026-06-08 |  |  |  |  |  |  |  |  |  |  |
| PG-12177 |  | 1st Fix - Piping and Shaft hydrant works | 12.5d | 2026-03-27 | 2026-04-11 | PG-12600 FF+6d |  |  |  | 105.83d | 0d |  | Nexus (Fire) [162000 h] | 162,000 | 15410 |
| PG-12178 |  | 2nd Fix - Sprinkler fixing & Pressure testing | 9.5d | 2026-05-05 | 2026-05-16 | PG-12608 FF+6d |  |  |  | 74.17d | 0d |  | Nexus (Fire) [145000 h] | 145,000 | 15411 |
| PG-12179 |  | Final Fix - Smoke & heat detectors, FHC , FAS Etc. | 9.67d | 2026-05-28 | 2026-06-08 | PG-12178, PG-12609 FF+6d |  |  |  | 64.17d | 0d |  | Nexus (Fire) [185000 h] | 185,000 | 15412 |
|  | 1.3.1.3.3.32.3 | **Electrical Works** |  | 2026-03-19 | 2026-06-08 |  |  |  |  |  |  |  |  |  |  |
| PG-12180 |  | 1st Fix - GI wire pulling | 7.67d | 2026-03-19 | 2026-03-28 | PG-12165 FS+7d |  |  |  | 105.83d | 0d |  | Elexir (Electrical) [165000 h] | 165,000 | 15414 |
| PG-12181 |  | 2nd Fix - Wiring works | 16.5d | 2026-04-25 | 2026-05-15 | PG-12608 FF+5d |  |  |  | 79.17d | 15d |  | Elexir (Electrical) [248000 h] | 248,000 | 15415 |
| PG-12182 |  | Final Fix - Electrical Fixtures | 5.67d | 2026-06-02 | 2026-06-08 | PG-12181, PG-12609 FF+6d |  |  |  | 64.17d | 0d |  | Elexir (Electrical) [205000 h] | 205,000 | 15416 |
|  | 1.3.1.3.4 | **Civil Finishes - Units** |  | 2024-12-23 | 2026-06-01 |  |  |  |  |  |  |  |  |  |  |
|  | 1.3.1.3.4.1 | **LBF** |  | 2024-12-23 | 2025-04-03 |  |  |  |  |  |  |  |  |  |  |
| PG-12183 |  | Backfilling Above Raft | 30d | 2024-12-23 A | 2025-01-27 A | PG-11778 | 100% | 2024-12-18 | 2025-01-22 |  |  |  | L&T [1200000 h] | 1,200,000 | 14876 |
| PG-12184 |  | Car wash water collection sump with cap | 12.83d | 2025-01-17 A | 2025-02-01 A | PG-11906 FF+5d, PG-12183 FF+5d | 100% | 2025-01-13 | 2025-01-28 |  |  | finish on or after 2023-10-20 | L&T [513000 h] | 513,000 | 14877 |
| PG-12185 |  | Surface Drain to slope | 8.67d | 2025-01-28 A | 2025-02-08 A | PG-12184 FF+5d | 100% | 2025-01-23 | 2025-02-03 |  |  |  | L&T [347000 h] | 347,000 | 14878 |
| PG-12186 |  | Grade Slab | 10.67d | 2025-02-01 A | 2025-02-15 A | PG-12185 FF+5d | 100% | 2025-01-27 | 2025-02-08 |  |  |  | L&T [427000 h] | 427,000 | 14879 |
| PG-12187 |  | First Coat Painting works | 14.67d | 2025-02-10 A | 2025-02-28 A | PG-12186 FF+10d | 100% | 2025-02-03 | 2025-02-19 |  |  |  | Surfa Coats (Painting) [381000 h] | 381,000 | 14880 |
| PG-12188 |  | Final coat painting | 9.5d | 2025-03-17 A | 2025-03-28 A | PG-11912, PG-11909 | 100% | 2025-03-06 | 2025-03-17 |  |  |  | Surfa Coats (Painting) [247000 h] | 247,000 | 14881 |
| PG-12189 |  | Car park marking and column corner beading fixing | 8.67d | 2025-03-24 A | 2025-04-03 A | PG-12188 FF+5d | 100% | 2025-03-22 | 2025-04-02 |  |  |  | L&T [347000 h] | 347,000 | 14882 |

| ID | WBS | Activity | Duration | Start | Finish | Predecessors | Complete | Planned start | Planned finish | Resources | Cost | MSP Activity ID |
| --- | --- | --- | --- | --- | --- | --- | --- | --- | --- | --- | --- | --- |
|  | 1.3.1.3.4.2 | **UBF** |  | 2025-02-07 | 2025-04-12 |  |  |  |  |  |  |  |
| PG-12190 |  | Surface Drain with Grade Slab to slope | 15d | 2025-02-07 A | 2025-02-25 A | PG-12183 FS+10d | 100% | 2025-02-03 | 2025-02-20 | L&T [600000 h] | 600,000 | 14884 |
| PG-12191 |  | First Coat Paint works | 11.67d | 2025-03-13 A | 2025-03-28 A | PG-12190, PG-11911, PG-11910 | 100% | 2025-03-04 | 2025-03-17 | Surfa Coats (Painting) [303000 h] | 303,000 | 14885 |
| PG-12192 |  | Final Coat Paint Works | 9.67d | 2025-03-18 A | 2025-03-31 A | PG-12191, PG-11912 FF+5d | 100% | 2025-03-18 | 2025-03-28 | Surfa Coats (Painting) [251000 h] | 251,000 | 14886 |
| PG-12193 |  | Car park marking and column corner beading fixing | 9.67d | 2025-03-31 A | 2025-04-12 A | PG-12192 | 100% | 2025-03-29 | 2025-04-10 | L&T [387000 h] | 387,000 | 14887 |
|  | 1.3.1.3.4.3 | **Ground Floor** |  | 2024-12-23 | 2025-03-08 |  |  |  |  |  |  |  |
|  | 1.3.1.3.4.3.1 | **Ceiling Finishing works - Civil** |  | 2025-01-01 | 2025-03-08 |  |  |  |  |  |  |  |
| PG-12194 |  | Gypsum Plastering | 6d | 2025-01-01 A | 2025-01-08 A | PG-11919 | 100% | 2024-12-27 | 2025-01-03 | L&T [195000 h] | 195,000 | 14890 |
| PG-12195 |  | Cornice fixing | 4d | 2025-01-18 A | 2025-01-24 A | PG-11916 FF+6d | 100% | 2025-01-13 | 2025-01-17 | Interiors (False celing) [62000 h] | 62,000 | 14891 |
| PG-12197 |  | Toilet False ceiling | 4d | 2025-01-27 A | 2025-01-31 A | PG-12205 FF+5d | 100% | 2025-01-21 | 2025-01-25 | Interiors (False celing) [86000 h] | 86,000 | 14893 |
| PG-12196 |  | Painting Works - Putty, Primer and 1st | 6d | 2025-02-06 A | 2025-02-14 A | PG-12195, PG-12200 | 100% | 2025-01-31 | 2025-02-07 | Surfa Coats (Painting) [130000 h] | 130,000 | 14892 |
| PG-12198 |  | Final Coat Painting | 17.67d | 2025-02-14 A | 2025-03-08 A | PG-12196, PG-12207 | 100% | 2025-02-07 | 2025-02-27 | Surfa Coats (Painting) [125000 h] | 125,000 | 14894 |
|  | 1.3.1.3.4.3.2 | **Wall Finishing works - Civil** |  | 2024-12-23 | 2025-03-08 |  |  |  |  |  |  |  |
| PG-12199 |  | Balcony Railing Fixing works | 4d | 2024-12-23 A | 2024-12-27 A | PG-11778 | 100% | 2024-12-18 | 2024-12-23 | L&T [165000 h] | 165,000 | 14896 |
| PG-12201 |  | Dadoing - Wet area | 5d | 2025-01-14 A | 2025-01-20 A | PG-11914 | 100% | 2025-01-08 | 2025-01-14 | L&T [168000 h] | 168,000 | 14898 |
| PG-12200 |  | UPVC Windows & Sliding doors | 5d | 2025-01-31 A | 2025-02-06 A | PG-12199, PG-12206 FF+5d | 100% | 2025-01-25 | 2025-01-31 | Fenesta (UPVC Windows) [430000 h] | 430,000 | 14897 |
| PG-12202 |  | Painting Works - Putty, Primer and 1st | 6d | 2025-02-06 A | 2025-02-14 A | PG-12200 | 100% | 2025-01-31 | 2025-02-07 | Surfa Coats (Painting) [188000 h] | 188,000 | 14899 |
| PG-12203 |  | Final Coat Painting | 17.67d | 2025-02-14 A | 2025-03-08 A | PG-12207 | 100% | 2025-02-07 | 2025-02-27 | Surfa Coats (Painting) [172000 h] | 172,000 | 14900 |
|  | 1.3.1.3.4.3.3 | **Floor Finishing Works - Civil** |  | 2024-12-23 | 2025-02-14 |  |  |  |  |  |  |  |
| PG-12204 |  | Waterproofing for sunken areas | 3d | 2024-12-23 A | 2024-12-26 A | PG-11778 | 100% | 2024-12-18 | 2024-12-21 | L&T [64000 h] | 64,000 | 14902 |
| PG-12205 |  | Floor Tiling - Wet area | 5d | 2025-01-20 A | 2025-01-25 A | PG-12204, PG-12201 | 100% | 2025-01-14 | 2025-01-20 | L&T [126000 h] | 126,000 | 14903 |
| PG-12206 |  | Floor Tiling - Dry area | 5d | 2025-01-25 A | 2025-01-31 A | PG-12205 FF+5d | 100% | 2025-01-20 | 2025-01-25 | L&T [335000 h] | 335,000 | 14904 |
| PG-12207 |  | Wooden doors | 5d | 2025-02-08 A | 2025-02-14 A | PG-12202 FF | 100% | 2025-02-01 | 2025-02-07 | Morph (Wooden Doors) [330000 h] | 330,000 | 14905 |
|  | 1.3.1.3.4.4 | **Floor 1** |  | 2025-01-07 | 2025-03-26 |  |  |  |  |  |  |  |
|  | 1.3.1.3.4.4.1 | **Ceiling Finishing works - Civil** |  | 2025-01-16 | 2025-03-26 |  |  |  |  |  |  |  |
| PG-12208 |  | Gypsum Plastering | 6d | 2025-01-16 A | 2025-01-24 A | PG-11928 | 100% | 2025-01-11 | 2025-01-18 | L&T [195000 h] | 195,000 | 14908 |
| PG-12209 |  | Cornice fixing | 4d | 2025-02-03 A | 2025-02-07 A | PG-11925 FF+6d | 100% | 2025-01-28 | 2025-02-01 | Interiors (False celing) [62000 h] | 62,000 | 14909 |
| PG-12211 |  | Toilet False ceiling | 4d | 2025-02-13 A | 2025-02-18 A | PG-12219 FF+5d | 100% | 2025-02-05 | 2025-02-10 | Interiors (False celing) [86000 h] | 86,000 | 14911 |
| PG-12210 |  | Painting Works - Putty, Primer and 1st | 6d | 2025-02-24 A | 2025-03-04 A | PG-12209, PG-12214 | 100% | 2025-02-15 | 2025-02-22 | Surfa Coats (Painting) [130000 h] | 130,000 | 14910 |
| PG-12212 |  | Final Coat Painting | 18.5d | 2025-03-04 A | 2025-03-26 A | PG-12210, PG-12221 | 100% | 2025-02-22 | 2025-03-15 | Surfa Coats (Painting) [125000 h] | 125,000 | 14912 |

| ID | WBS | Activity | Duration | Start | Finish | Predecessors | Complete | Planned start | Planned finish | Resources | Cost | MSP Activity ID |
| --- | --- | --- | --- | --- | --- | --- | --- | --- | --- | --- | --- | --- |
|  | 1.3.1.3.4.4.2 | **Wall Finishing works - Civil** |  | 2025-01-07 | 2025-03-25 |  |  |  |  |  |  |  |
| PG-12213 |  | Balcony Railing Fixing works | 4d | 2025-01-07 A | 2025-01-11 A | PG-11783 | 100% | 2025-01-02 | 2025-01-07 | L&T [165000 h] | 165,000 | 14914 |
| PG-12215 |  | Dadoing - Wet area | 5d | 2025-01-30 A | 2025-02-05 A | PG-11923 | 100% | 2025-01-23 | 2025-01-29 | L&T [168000 h] | 168,000 | 14916 |
| PG-12214 |  | UPVC Windows & Sliding doors | 5d | 2025-02-18 A | 2025-02-24 A | PG-12213, PG-12220 FF+5d | 100% | 2025-02-10 | 2025-02-15 | Fenesta (UPVC Windows) [430000 h] | 430,000 | 14915 |
| PG-12216 |  | Painting Works - Putty, Primer and 1st | 6d | 2025-02-24 A | 2025-03-03 A | PG-12214 | 100% | 2025-02-15 | 2025-02-22 | Surfa Coats (Painting) [188000 h] | 188,000 | 14917 |
| PG-12217 |  | Final Coat Painting | 18.5d | 2025-03-04 A | 2025-03-25 A | PG-12221 | 100% | 2025-02-22 | 2025-03-15 | Surfa Coats (Painting) [172000 h] | 172,000 | 14918 |
|  | 1.3.1.3.4.4.3 | **Floor Finishing Works - Civil** |  | 2025-01-07 | 2025-03-04 |  |  |  |  |  |  |  |
| PG-12218 |  | Waterproofing for sunken areas | 3d | 2025-01-07 A | 2025-01-10 A | PG-11783 | 100% | 2025-01-02 | 2025-01-06 | L&T [64000 h] | 64,000 | 14920 |
| PG-12219 |  | Floor Tiling - Wet area | 5d | 2025-02-05 A | 2025-02-12 A | PG-12218, PG-12215 | 100% | 2025-01-29 | 2025-02-04 | L&T [126000 h] | 126,000 | 14921 |
| PG-12220 |  | Floor Tiling - Dry area | 5d | 2025-02-12 A | 2025-02-18 A | PG-12219 FF+5d | 100% | 2025-02-04 | 2025-02-10 | L&T [335000 h] | 335,000 | 14922 |
| PG-12221 |  | Wooden doors | 5d | 2025-02-25 A | 2025-03-04 A | PG-12216 FF | 100% | 2025-02-17 | 2025-02-22 | Morph (Wooden Doors) [330000 h] | 330,000 | 14923 |
|  | 1.3.1.3.4.5 | **Floor 2** |  | 2025-01-22 | 2025-04-10 |  |  |  |  |  |  |  |
|  | 1.3.1.3.4.5.1 | **Ceiling Finishing works - Civil** |  | 2025-02-01 | 2025-04-10 |  |  |  |  |  |  |  |
| PG-12222 |  | Gypsum Plastering | 6d | 2025-02-01 A | 2025-02-08 A | PG-11937 | 100% | 2025-01-27 | 2025-02-03 | L&T [195000 h] | 195,000 | 14926 |
| PG-12223 |  | Cornice fixing | 4d | 2025-02-19 A | 2025-02-24 A | PG-11934 FF+6d | 100% | 2025-02-12 | 2025-02-17 | Interiors (False celing) [62000 h] | 62,000 | 14927 |
| PG-12225 |  | Toilet False ceiling | 4d | 2025-02-27 A | 2025-03-04 A | PG-12233 FF+5d | 100% | 2025-02-20 | 2025-02-25 | Interiors (False celing) [86000 h] | 86,000 | 14929 |
| PG-12224 |  | Painting Works - Putty, Primer and 1st | 6d | 2025-03-11 A | 2025-03-18 A | PG-12223, PG-12228 | 100% | 2025-03-03 | 2025-03-10 | Surfa Coats (Painting) [130000 h] | 130,000 | 14928 |
| PG-12226 |  | Final Coat Painting | 17.67d | 2025-03-18 A | 2025-04-10 A | PG-12224, PG-12235 | 100% | 2025-03-10 | 2025-03-29 | Surfa Coats (Painting) [125000 h] | 125,000 | 14930 |
|  | 1.3.1.3.4.5.2 | **Wall Finishing works - Civil** |  | 2025-01-22 | 2025-04-08 |  |  |  |  |  |  |  |
| PG-12227 |  | Balcony Railing Fixing works | 4d | 2025-01-22 A | 2025-01-28 A | PG-11788 | 100% | 2025-01-17 | 2025-01-22 | L&T [165000 h] | 165,000 | 14932 |
| PG-12229 |  | Dadoing - Wet area | 5d | 2025-02-14 A | 2025-02-20 A | PG-11932 | 100% | 2025-02-07 | 2025-02-13 | L&T [168000 h] | 168,000 | 14934 |
| PG-12228 |  | UPVC Windows & Sliding doors | 5d | 2025-03-04 A | 2025-03-11 A | PG-12227, PG-12234 FF+5d | 100% | 2025-02-25 | 2025-03-03 | Fenesta (UPVC Windows) [430000 h] | 430,000 | 14933 |
| PG-12230 |  | Painting Works - Putty, Primer and 1st | 6d | 2025-03-11 A | 2025-03-18 A | PG-12228 | 100% | 2025-03-03 | 2025-03-10 | Surfa Coats (Painting) [188000 h] | 188,000 | 14935 |
| PG-12231 |  | Final Coat Painting | 17.67d | 2025-03-18 A | 2025-04-08 A | PG-12235 | 100% | 2025-03-10 | 2025-03-29 | Surfa Coats (Painting) [172000 h] | 172,000 | 14936 |

| ID | WBS | Activity | Duration | Start | Finish | Predecessors | Complete | Remaining | Planned start | Planned finish | Total float | Free float | Resources | Cost | MSP Activity ID |
| --- | --- | --- | --- | --- | --- | --- | --- | --- | --- | --- | --- | --- | --- | --- | --- |
|  | 1.3.1.3.4.5.3 | **Floor Finishing Works - Civil** |  | 2025-01-22 | 2025-03-18 |  |  |  |  |  |  |  |  |  |  |
| PG-12232 |  | Waterproofing for sunken areas | 3d | 2025-01-22 A | 2025-01-27 A | PG-11788 | 100% |  | 2025-01-17 | 2025-01-21 |  |  | L&T [64000 h] | 64,000 | 14938 |
| PG-12233 |  | Floor Tiling - Wet area | 5d | 2025-02-20 A | 2025-02-26 A | PG-12232, PG-12229 | 100% |  | 2025-02-13 | 2025-02-19 |  |  | L&T [126000 h] | 126,000 | 14939 |
| PG-12234 |  | Floor Tiling - Dry area | 5d | 2025-02-26 A | 2025-03-04 A | PG-12233 FF+5d | 100% |  | 2025-02-19 | 2025-02-25 |  |  | L&T [335000 h] | 335,000 | 14940 |
| PG-12235 |  | Wooden doors | 5d | 2025-03-12 A | 2025-03-18 A | PG-12230 FF | 100% |  | 2025-03-04 | 2025-03-10 |  |  | Morph (Wooden Doors) [330000 h] | 330,000 | 14941 |
|  | 1.3.1.3.4.6 | **Floor 3** |  | 2025-02-07 | 2025-04-29 |  |  |  |  |  |  |  |  |  |  |
|  | 1.3.1.3.4.6.1 | **Ceiling Finishing works - Civil** |  | 2025-02-17 | 2025-04-28 |  |  |  |  |  |  |  |  |  |  |
| PG-12236 |  | Gypsum Plastering | 6d | 2025-02-17 A | 2025-02-25 A | PG-11946 | 100% |  | 2025-02-11 | 2025-02-18 |  |  | L&T [195000 h] | 195,000 | 14944 |
| PG-12237 |  | Cornice fixing | 4d | 2025-03-06 A | 2025-03-11 A | PG-11943 FF+6d | 100% |  | 2025-02-27 | 2025-03-04 |  |  | Interiors (False celing) [62000 h] | 62,000 | 14945 |
| PG-12239 |  | Toilet False ceiling | 4d | 2025-03-17 A | 2025-03-21 A | PG-12247 FF+5d | 100% |  | 2025-03-07 | 2025-03-12 |  |  | Interiors (False celing) [86000 h] | 86,000 | 14947 |
| PG-12238 |  | Painting Works - Putty, Primer and 1st | 6d | 2025-03-27 A | 2025-04-03 A | PG-12237, PG-12242 | 100% |  |  |  |  |  | Surfa Coats (Painting) [130000 h] | 130,000 | 14946 |
| PG-12240 |  | Final Coat Painting | 19.33d | 2025-04-04 A | 2025-04-28 | PG-12238, PG-12249 | 87% | 2.49d | 2025-04-03 | 2025-04-25 | 437.18d | 37.07d | Surfa Coats (Painting) [125000 h] | 125,000 | 14948 |
|  | 1.3.1.3.4.6.2 | **Wall Finishing works - Civil** |  | 2025-02-07 | 2025-04-29 |  |  |  |  |  |  |  |  |  |  |
| PG-12241 |  | Balcony Railing Fixing works | 4d | 2025-02-07 A | 2025-02-12 A | PG-11793 | 100% |  | 2025-02-01 | 2025-02-06 |  |  | L&T [165000 h] | 165,000 | 14950 |
| PG-12243 |  | Dadoing - Wet area | 5d | 2025-03-04 A | 2025-03-10 A | PG-11941 | 100% |  | 2025-02-22 | 2025-02-28 |  |  | L&T [168000 h] | 168,000 | 14952 |
| PG-12242 |  | UPVC Windows & Sliding doors | 5d | 2025-03-21 A | 2025-03-27 A | PG-12241, PG-12248 FF+5d | 100% |  | 2025-03-12 | 2025-03-18 |  |  | Fenesta (UPVC Windows) [430000 h] | 430,000 | 14951 |
| PG-12244 |  | Painting Works - Putty, Primer and 1st | 6d | 2025-03-27 A | 2025-04-04 A | PG-12242 | 100% |  | 2025-03-27 | 2025-04-03 |  |  | Surfa Coats (Painting) [188000 h] | 188,000 | 14953 |
| PG-12245 |  | Final Coat Painting | 19.33d | 2025-04-04 A | 2025-04-29 | PG-12249 | 80% | 3.89d | 2025-04-03 | 2025-04-25 | 400.11d | 0d | Surfa Coats (Painting) [172000 h] | 172,000 | 14954 |
|  | 1.3.1.3.4.6.3 | **Floor Finishing Works - Civil** |  | 2025-02-07 | 2025-04-04 |  |  |  |  |  |  |  |  |  |  |
| PG-12246 |  | Waterproofing for sunken areas | 3d | 2025-02-07 A | 2025-02-11 A | PG-11793 | 100% |  | 2025-02-01 | 2025-02-05 |  |  | L&T [64000 h] | 64,000 | 14956 |
| PG-12247 |  | Floor Tiling - Wet area | 5d | 2025-03-10 A | 2025-03-15 A | PG-12246, PG-12243 | 100% |  | 2025-02-28 | 2025-03-06 |  |  | L&T [126000 h] | 126,000 | 14957 |
| PG-12248 |  | Floor Tiling - Dry area | 5d | 2025-03-15 A | 2025-03-21 A | PG-12247 FF+5d | 100% |  | 2025-03-06 | 2025-03-12 |  |  | L&T [335000 h] | 335,000 | 14958 |
| PG-12249 |  | Wooden doors | 5d | 2025-03-29 A | 2025-04-04 A | PG-12244 FF | 100% |  | 2025-03-28 | 2025-04-03 |  |  | Morph (Wooden Doors) [330000 h] | 330,000 | 14959 |
|  | 1.3.1.3.4.7 | **Floor 4** |  | 2025-02-24 | 2025-05-13 |  |  |  |  |  |  |  |  |  |  |
|  | 1.3.1.3.4.7.1 | **Ceiling Finishing works - Civil** |  | 2025-03-04 | 2025-05-13 |  |  |  |  |  |  |  |  |  |  |
| PG-12250 |  | Gypsum Plastering | 6d | 2025-03-04 A | 2025-03-12 A | PG-11955 | 100% |  | 2025-02-26 | 2025-03-05 |  |  | L&T [195000 h] | 195,000 | 14962 |
| PG-12251 |  | Cornice fixing | 4d | 2025-03-22 A | 2025-03-27 A | PG-11952 FF+6d | 100% |  |  |  |  |  | Interiors (False celing) [62000 h] | 62,000 | 14963 |
| PG-12253 |  | Toilet False ceiling | 4d | 2025-04-01 A | 2025-04-05 A | PG-12261 FF+5d | 100% |  | 2025-03-31 | 2025-04-04 |  |  | Interiors (False celing) [86000 h] | 86,000 | 14965 |
| PG-12252 |  | Painting Works - Putty, Primer and 1st | 6d | 2025-04-11 A | 2025-04-19 A | PG-12251, PG-12256 | 100% |  | 2025-04-11 | 2025-04-18 |  |  | Surfa Coats (Painting) [130000 h] | 130,000 | 14964 |
| PG-12254 |  | Final Coat Painting | 18.33d | 2025-04-19 A | 2025-05-13 | PG-12252, PG-12263 | 17% | 15.16d | 2025-04-24 | 2025-05-16 | 424.51d | 36.89d | Surfa Coats (Painting) [125000 h] | 125,000 | 14966 |

| ID | WBS | Activity | Duration | Start | Finish | Predecessors | Complete | Remaining | Planned start | Planned finish | Total float | Free float | Resources | Cost | MSP Activity ID |
| --- | --- | --- | --- | --- | --- | --- | --- | --- | --- | --- | --- | --- | --- | --- | --- |
|  | 1.3.1.3.4.7.2 | **Wall Finishing works - Civil** |  | 2025-02-24 | 2025-05-13 |  |  |  |  |  |  |  |  |  |  |
| PG-12255 |  | Balcony Railing Fixing works | 4d | 2025-02-24 A | 2025-02-28 A | PG-11798 | 100% |  | 2025-02-17 | 2025-02-21 |  |  | L&T [165000 h] | 165,000 | 14968 |
| PG-12257 |  | Dadoing - Wet area | 5d | 2025-03-18 A | 2025-03-24 A | PG-11950 | 100% |  | 2025-03-10 | 2025-03-15 |  |  | L&T [168000 h] | 168,000 | 14970 |
| PG-12256 |  | UPVC Windows & Sliding doors | 5d | 2025-04-05 A | 2025-04-11 A | PG-12255, PG-12262 FF+5d | 100% |  |  |  |  |  | Fenesta (UPVC Windows) [430000 h] | 430,000 | 14969 |
| PG-12258 |  | Painting Works - Putty, Primer and 1st | 6d | 2025-04-11 A | 2025-04-18 A | PG-12256 | 100% |  |  |  |  |  | Surfa Coats (Painting) [188000 h] | 188,000 | 14971 |
| PG-12259 |  | Final Coat Painting | 18.33d | 2025-04-19 A | 2025-05-13 | PG-12263 | 16% | 15.38d | 2025-04-18 | 2025-05-09 | 387.62d | 0d | Surfa Coats (Painting) [172000 h] | 172,000 | 14972 |
|  | 1.3.1.3.4.7.3 | **Floor Finishing Works - Civil** |  | 2025-02-24 | 2025-04-19 |  |  |  |  |  |  |  |  |  |  |
| PG-12260 |  | Waterproofing for sunken areas | 3d | 2025-02-24 A | 2025-02-27 A | PG-11798 | 100% |  | 2025-02-17 | 2025-02-20 |  |  | L&T [64000 h] | 64,000 | 14974 |
| PG-12261 |  | Floor Tiling - Wet area | 5d | 2025-03-24 A | 2025-03-31 A | PG-12260, PG-12257 | 100% |  | 2025-03-22 | 2025-03-28 |  |  | L&T [126000 h] | 126,000 | 14975 |
| PG-12262 |  | Floor Tiling - Dry area | 5d | 2025-03-31 A | 2025-04-05 A | PG-12261 FF+5d | 100% |  | 2025-03-29 | 2025-04-04 |  |  | L&T [335000 h] | 335,000 | 14976 |
| PG-12263 |  | Wooden doors | 5d | 2025-04-12 A | 2025-04-19 A | PG-12258 FF | 100% |  | 2025-04-11 | 2025-04-17 |  |  | Morph (Wooden Doors) [330000 h] | 330,000 | 14977 |
|  | 1.3.1.3.4.8 | **Floor 5** |  | 2025-03-11 | 2025-08-05 |  |  |  |  |  |  |  |  |  |  |
|  | 1.3.1.3.4.8.1 | **Ceiling Finishing works - Civil** |  | 2025-03-19 | 2025-08-05 |  |  |  |  |  |  |  |  |  |  |
| PG-12264 |  | Gypsum Plastering | 6d | 2025-03-19 A | 2025-03-27 A | PG-11964 | 100% |  | 2025-03-13 | 2025-03-20 |  |  | L&T [195000 h] | 195,000 | 14980 |
| PG-12265 |  | Cornice fixing | 4d | 2025-04-05 A | 2025-04-11 A | PG-11961 FF+6d | 100% |  | 2025-04-07 | 2025-04-10 |  |  | Interiors (False celing) [62000 h] | 62,000 | 14981 |
| PG-12267 |  | Toilet False ceiling | 4d | 2025-06-26 | 2025-07-01 | PG-12275 FF+5d |  |  |  |  | 342.83d | 25d | Interiors (False celing) [86000 h] | 86,000 | 14983 |
| PG-12266 |  | Painting Works - Putty, Primer and 1st | 6d | 2025-07-07 | 2025-07-14 | PG-12265, PG-12270 |  |  |  |  | 353.5d | 0d | Surfa Coats (Painting) [130000 h] | 130,000 | 14982 |
| PG-12268 |  | Final Coat Painting | 18.5d | 2025-07-14 | 2025-08-05 | PG-12266, PG-12277 |  |  |  |  | 353.5d | 35.67d | Surfa Coats (Painting) [125000 h] | 125,000 | 14984 |
|  | 1.3.1.3.4.8.2 | **Wall Finishing works - Civil** |  | 2025-03-11 | 2025-08-05 |  |  |  |  |  |  |  |  |  |  |
| PG-12269 |  | Balcony Railing Fixing works | 4d | 2025-03-11 A | 2025-03-15 A | PG-11803 | 100% |  | 2025-03-04 | 2025-03-08 |  |  | L&T [165000 h] | 165,000 | 14986 |
| PG-12271 |  | Dadoing - Wet area | 5d | 2025-06-13 | 2025-06-19 | PG-10006, PG-11959 |  |  |  |  | 317.83d | 0d | L&T [168000 h] | 168,000 | 14988 |
| PG-12270 |  | UPVC Windows & Sliding doors | 5d | 2025-07-01 | 2025-07-07 | PG-12269, PG-12276 FF+5d |  |  |  |  | 317.83d | 0d | Fenesta (UPVC Windows) [430000 h] | 430,000 | 14987 |
| PG-12272 |  | Painting Works - Putty, Primer and 1st | 6d | 2025-07-07 | 2025-07-14 | PG-12270 |  |  |  |  | 317.83d | 0d | Surfa Coats (Painting) [188000 h] | 188,000 | 14989 |
| PG-12273 |  | Final Coat Painting | 18.5d | 2025-07-14 | 2025-08-05 | PG-12277 |  |  |  |  | 317.83d | 0d | Surfa Coats (Painting) [172000 h] | 172,000 | 14990 |

| ID | WBS | Activity | Duration | Start | Finish | Predecessors | Complete | Remaining | Planned start | Planned finish | Total float | Free float | Resources | Cost | MSP Activity ID |
| --- | --- | --- | --- | --- | --- | --- | --- | --- | --- | --- | --- | --- | --- | --- | --- |
|  | 1.3.1.3.4.8.3 | **Floor Finishing Works - Civil** |  | 2025-03-11 | 2025-07-14 |  |  |  |  |  |  |  |  |  |  |
| PG-12274 |  | Waterproofing for sunken areas | 3d | 2025-03-11 A | 2025-03-14 A | PG-11803 | 100% |  | 2025-03-04 | 2025-03-07 |  |  | L&T [64000 h] | 64,000 | 14992 |
| PG-12275 |  | Floor Tiling - Wet area | 5d | 2025-06-19 | 2025-06-25 | PG-12274, PG-12271 |  |  |  |  | 317.83d | 0d | L&T [126000 h] | 126,000 | 14993 |
| PG-12276 |  | Floor Tiling - Dry area | 5d | 2025-06-25 | 2025-07-01 | PG-12275 FF+5d |  |  |  |  | 317.83d | 0d | L&T [335000 h] | 335,000 | 14994 |
| PG-12277 |  | Wooden doors | 5d | 2025-07-08 | 2025-07-14 | PG-12272 FF |  |  |  |  | 317.83d | 0d | Morph (Wooden Doors) [330000 h] | 330,000 | 14995 |
|  | 1.3.1.3.4.9 | **Floor 6** |  | 2025-03-27 | 2025-06-11 |  |  |  |  |  |  |  |  |  |  |
|  | 1.3.1.3.4.9.1 | **Ceiling Finishing works - Civil** |  | 2025-04-05 | 2025-06-11 |  |  |  |  |  |  |  |  |  |  |
| PG-12278 |  | Gypsum Plastering | 6d | 2025-04-05 A | 2025-04-14 A | PG-11973 | 100% |  | 2025-04-05 | 2025-04-12 |  |  | L&T [195000 h] | 195,000 | 14998 |
| PG-12279 |  | Cornice fixing | 4d | 2025-04-24 A | 2025-04-29 | PG-11970 FF+6d | 26% | 2.97d | 2025-04-23 | 2025-04-28 | 410.42d | 10.68d | Interiors (False celing) [62000 h] | 62,000 | 14999 |
| PG-12281 |  | Toilet False ceiling | 4d | 2025-05-01 | 2025-05-06 | PG-12289 FF+5d |  |  |  |  | 392.07d | 27d | Interiors (False celing) [86000 h] | 86,000 | 15001 |
| PG-12280 |  | Painting Works - Putty, Primer and 1st | 6d | 2025-05-12 | 2025-05-19 | PG-12279, PG-12284 |  |  |  |  | 399.74d | 0d | Surfa Coats (Painting) [130000 h] | 130,000 | 15000 |
| PG-12282 |  | Final Coat Painting | 20.5d | 2025-05-19 | 2025-06-11 | PG-12280, PG-12291 |  |  |  |  | 399.74d | 34.67d | Surfa Coats (Painting) [125000 h] | 125,000 | 15002 |
|  | 1.3.1.3.4.9.2 | **Wall Finishing works - Civil** |  | 2025-03-27 | 2025-06-10 |  |  |  |  |  |  |  |  |  |  |
| PG-12283 |  | Balcony Railing Fixing works | 4d | 2025-03-27 A | 2025-04-01 A | PG-11808 | 100% |  |  |  |  |  | L&T [165000 h] | 165,000 | 15004 |
| PG-12285 |  | Dadoing - Wet area | 5d | 2025-04-19 A | 2025-04-25 A | PG-11968 | 100% |  | 2025-04-18 | 2025-04-24 |  |  | L&T [168000 h] | 168,000 | 15006 |
| PG-12284 |  | UPVC Windows & Sliding doors | 5d | 2025-05-06 | 2025-05-12 | PG-12283, PG-12290 FF+5d |  |  |  |  | 365.07d | 0d | Fenesta (UPVC Windows) [430000 h] | 430,000 | 15005 |
| PG-12286 |  | Painting Works - Putty, Primer and 1st | 6d | 2025-05-12 | 2025-05-19 | PG-12284 |  |  |  |  | 365.07d | 0d | Surfa Coats (Painting) [188000 h] | 188,000 | 15007 |
| PG-12287 |  | Final Coat Painting | 19.5d | 2025-05-19 | 2025-06-10 | PG-12291 |  |  |  |  | 365.07d | 0d | Surfa Coats (Painting) [172000 h] | 172,000 | 15008 |
|  | 1.3.1.3.4.9.3 | **Floor Finishing Works - Civil** |  | 2025-03-27 | 2025-05-19 |  |  |  |  |  |  |  |  |  |  |
| PG-12288 |  | Waterproofing for sunken areas | 3d | 2025-03-27 A | 2025-03-31 A | PG-11808 | 100% |  |  |  |  |  | L&T [64000 h] | 64,000 | 15010 |
| PG-12289 |  | Floor Tiling - Wet area | 5d | 2025-04-25 A | 2025-04-30 | PG-12288, PG-12285 | 11% | 4.43d | 2025-04-24 | 2025-04-30 | 365.07d | 0d | L&T [126000 h] | 126,000 | 15011 |
| PG-12290 |  | Floor Tiling - Dry area | 5d | 2025-04-30 | 2025-05-06 | PG-12289 FF+5d |  |  |  |  | 365.07d | 0d | L&T [335000 h] | 335,000 | 15012 |
| PG-12291 |  | Wooden doors | 5d | 2025-05-13 | 2025-05-19 | PG-12286 FF |  |  |  |  | 365.07d | 0d | Morph (Wooden Doors) [330000 h] | 330,000 | 15013 |
|  | 1.3.1.3.4.10 | **Floor 7** |  | 2025-04-14 | 2025-06-28 |  |  |  |  |  |  |  |  |  |  |
|  | 1.3.1.3.4.10.1 | **Ceiling Finishing works - Civil** |  | 2025-04-23 | 2025-06-28 |  |  |  |  |  |  |  |  |  |  |
| PG-12292 |  | Gypsum Plastering | 6d | 2025-04-23 A | 2025-04-30 | PG-11982 | 27% | 4.37d |  |  | 398.8d | 0.95d | L&T [195000 h] | 195,000 | 15016 |
| PG-12293 |  | Cornice fixing | 4d | 2025-05-10 | 2025-05-15 | PG-11979 FF+6d |  |  |  |  | 397.85d | 12.38d | Interiors (False celing) [62000 h] | 62,000 | 15017 |
| PG-12295 |  | Toilet False ceiling | 4d | 2025-05-19 | 2025-05-23 | PG-12303 FF+5d |  |  |  |  | 378.8d | 27d | Interiors (False celing) [86000 h] | 86,000 | 15019 |
| PG-12294 |  | Painting Works - Putty, Primer and 1st | 6d | 2025-05-29 | 2025-06-05 | PG-12293, PG-12298 |  |  |  |  | 385.47d | 0d | Surfa Coats (Painting) [130000 h] | 130,000 | 15018 |
| PG-12296 |  | Final Coat Painting | 19.5d | 2025-06-05 | 2025-06-28 | PG-12294, PG-12305 |  |  |  |  | 385.47d | 33.67d | Surfa Coats (Painting) [125000 h] | 125,000 | 15020 |

| ID | WBS | Activity | Duration | Start | Finish | Predecessors | Complete | Planned start | Planned finish | Total float | Free float | Resources | Cost | MSP Activity ID |
| --- | --- | --- | --- | --- | --- | --- | --- | --- | --- | --- | --- | --- | --- | --- |
|  | 1.3.1.3.4.10.2 | **Wall Finishing works - Civil** |  | 2025-04-14 | 2025-06-27 |  |  |  |  |  |  |  |  |  |
| PG-12297 |  | Balcony Railing Fixing works | 4d | 2025-04-14 A | 2025-04-18 A | PG-11813 | 100% | 2025-04-12 | 2025-04-17 |  |  | L&T [165000 h] | 165,000 | 15022 |
| PG-12299 |  | Dadoing - Wet area | 5d | 2025-05-06 | 2025-05-12 | PG-11977 |  |  |  | 351.8d | 0d | L&T [168000 h] | 168,000 | 15024 |
| PG-12298 |  | UPVC Windows & Sliding doors | 5d | 2025-05-23 | 2025-05-29 | PG-12297, PG-12304 FF+5d |  |  |  | 351.8d | 0d | Fenesta (UPVC Windows) [430000 h] | 430,000 | 15023 |
| PG-12300 |  | Painting Works - Putty, Primer and 1st | 6d | 2025-05-29 | 2025-06-05 | PG-12298 |  |  |  | 351.8d | 0d | Surfa Coats (Painting) [188000 h] | 188,000 | 15025 |
| PG-12301 |  | Final Coat Painting | 18.5d | 2025-06-05 | 2025-06-27 | PG-12305 |  |  |  | 351.8d | 0d | Surfa Coats (Painting) [172000 h] | 172,000 | 15026 |
|  | 1.3.1.3.4.10.3 | **Floor Finishing Works - Civil** |  | 2025-04-14 | 2025-06-05 |  |  |  |  |  |  |  |  |  |
| PG-12302 |  | Waterproofing for sunken areas | 3d | 2025-04-14 A | 2025-04-17 A | PG-11813 | 100% | 2025-04-12 | 2025-04-16 |  |  | L&T [64000 h] | 64,000 | 15028 |
| PG-12303 |  | Floor Tiling - Wet area | 5d | 2025-05-12 | 2025-05-17 | PG-12302, PG-12299 |  |  |  | 351.8d | 0d | L&T [126000 h] | 126,000 | 15029 |
| PG-12304 |  | Floor Tiling - Dry area | 5d | 2025-05-17 | 2025-05-23 | PG-12303 FF+5d |  |  |  | 351.8d | 0d | L&T [335000 h] | 335,000 | 15030 |
| PG-12305 |  | Wooden doors | 5d | 2025-05-30 | 2025-06-05 | PG-12300 FF |  |  |  | 351.8d | 0d | Morph (Wooden Doors) [330000 h] | 330,000 | 15031 |
|  | 1.3.1.3.4.11 | **Floor 8** |  | 2025-05-01 | 2025-07-15 |  |  |  |  |  |  |  |  |  |
|  | 1.3.1.3.4.11.1 | **Ceiling Finishing works - Civil** |  | 2025-05-09 | 2025-07-15 |  |  |  |  |  |  |  |  |  |
| PG-12306 |  | Gypsum Plastering | 6d | 2025-05-09 | 2025-05-16 | PG-11991 |  |  |  | 382.5d | 0d | L&T [195000 h] | 195,000 | 15034 |
| PG-12307 |  | Cornice fixing | 4d | 2025-05-26 | 2025-05-30 | PG-11988 FF+6d |  |  |  | 382.5d | 12.33d | Interiors (False celing) [62000 h] | 62,000 | 15035 |
| PG-12309 |  | Toilet False ceiling | 4d | 2025-06-04 | 2025-06-07 | PG-12317 FF+5d |  |  |  | 363.5d | 27d | Interiors (False celing) [86000 h] | 86,000 | 15037 |
| PG-12308 |  | Painting Works - Putty, Primer and 1st | 6d | 2025-06-14 | 2025-06-20 | PG-12307, PG-12312 |  |  |  | 370.17d | 0d | Surfa Coats (Painting) [130000 h] | 130,000 | 15036 |
| PG-12310 |  | Final Coat Painting | 20.5d | 2025-06-21 | 2025-07-15 | PG-12308, PG-12319 |  |  |  | 370.17d | 33.67d | Surfa Coats (Painting) [125000 h] | 125,000 | 15038 |
|  | 1.3.1.3.4.11.2 | **Wall Finishing works - Civil** |  | 2025-05-01 | 2025-07-14 |  |  |  |  |  |  |  |  |  |
| PG-12311 |  | Balcony Railing Fixing works | 4d | 2025-05-01 | 2025-05-05 | PG-11818 |  |  |  | 365.5d | 29d | L&T [165000 h] | 165,000 | 15040 |
| PG-12313 |  | Dadoing - Wet area | 5d | 2025-05-22 | 2025-05-27 | PG-11986 |  |  |  | 336.5d | 0d | L&T [168000 h] | 168,000 | 15042 |
| PG-12312 |  | UPVC Windows & Sliding doors | 5d | 2025-06-09 | 2025-06-13 | PG-12311, PG-12318 FF+5d |  |  |  | 336.5d | 0d | Fenesta (UPVC Windows) [430000 h] | 430,000 | 15041 |
| PG-12314 |  | Painting Works - Putty, Primer and 1st | 6d | 2025-06-14 | 2025-06-20 | PG-12312 |  |  |  | 336.5d | 0d | Surfa Coats (Painting) [188000 h] | 188,000 | 15043 |
| PG-12315 |  | Final Coat Painting | 19.5d | 2025-06-21 | 2025-07-14 | PG-12319 |  |  |  | 336.5d | 0d | Surfa Coats (Painting) [172000 h] | 172,000 | 15044 |

| ID | WBS | Activity | Duration | Start | Finish | Predecessors | Total float | Free float | Resources | Cost | MSP Activity ID |
| --- | --- | --- | --- | --- | --- | --- | --- | --- | --- | --- | --- |
|  | 1.3.1.3.4.11.3 | **Floor Finishing Works - Civil** |  | 2025-05-01 | 2025-06-20 |  |  |  |  |  |  |
| PG-12316 |  | Waterproofing for sunken areas | 3d | 2025-05-01 | 2025-05-03 | PG-11818 | 356.5d | 20d | L&T [64000 h] | 64,000 | 15046 |
| PG-12317 |  | Floor Tiling - Wet area | 5d | 2025-05-28 | 2025-06-02 | PG-12316, PG-12313 | 336.5d | 0d | L&T [126000 h] | 126,000 | 15047 |
| PG-12318 |  | Floor Tiling - Dry area | 5d | 2025-06-03 | 2025-06-07 | PG-12317 FF+5d | 336.5d | 0d | L&T [335000 h] | 335,000 | 15048 |
| PG-12319 |  | Wooden doors | 5d | 2025-06-16 | 2025-06-20 | PG-12314 FF | 336.5d | 0d | Morph (Wooden Doors) [330000 h] | 330,000 | 15049 |
|  | 1.3.1.3.4.12 | **Floor 9** |  | 2025-05-16 | 2025-07-28 |  |  |  |  |  |  |
|  | 1.3.1.3.4.12.1 | **Ceiling Finishing works - Civil** |  | 2025-05-24 | 2025-07-28 |  |  |  |  |  |  |
| PG-12320 |  | Gypsum Plastering | 6d | 2025-05-24 | 2025-05-31 | PG-12000 | 371.17d | 0d | L&T [195000 h] | 195,000 | 15052 |
| PG-12321 |  | Cornice fixing | 4d | 2025-06-10 | 2025-06-14 | PG-11997 FF+6d | 371.17d | 12.17d | Interiors (False celing) [62000 h] | 62,000 | 15053 |
| PG-12323 |  | Toilet False ceiling | 4d | 2025-06-19 | 2025-06-23 | PG-12331 FF+5d | 350.5d | 25.17d | Interiors (False celing) [86000 h] | 86,000 | 15055 |
| PG-12322 |  | Painting Works - Putty, Primer and 1st | 6d | 2025-06-30 | 2025-07-05 | PG-12321, PG-12326 | 359d | 0d | Surfa Coats (Painting) [130000 h] | 130,000 | 15054 |
| PG-12324 |  | Final Coat Painting | 18.67d | 2025-07-07 | 2025-07-28 | PG-12322, PG-12333 | 359d | 33.67d | Surfa Coats (Painting) [125000 h] | 125,000 | 15056 |
|  | 1.3.1.3.4.12.2 | **Wall Finishing works - Civil** |  | 2025-05-16 | 2025-07-26 |  |  |  |  |  |  |
| PG-12325 |  | Balcony Railing Fixing works | 4d | 2025-05-16 | 2025-05-20 | PG-11823 | 354.33d | 29d | L&T [165000 h] | 165,000 | 15058 |
| PG-12327 |  | Dadoing - Wet area | 5d | 2025-06-06 | 2025-06-11 | PG-11995 | 325.33d | 0d | L&T [168000 h] | 168,000 | 15060 |
| PG-12326 |  | UPVC Windows & Sliding doors | 5d | 2025-06-24 | 2025-06-28 | PG-12325, PG-12332 FF+5d | 325.33d | 0d | Fenesta (UPVC Windows) [430000 h] | 430,000 | 15059 |
| PG-12328 |  | Painting Works - Putty, Primer and 1st | 6d | 2025-06-30 | 2025-07-05 | PG-12326 | 325.33d | 0d | Surfa Coats (Painting) [188000 h] | 188,000 | 15061 |
| PG-12329 |  | Final Coat Painting | 17.5d | 2025-07-07 | 2025-07-26 | PG-12333 | 325.33d | 0d | Surfa Coats (Painting) [172000 h] | 172,000 | 15062 |
|  | 1.3.1.3.4.12.3 | **Floor Finishing Works - Civil** |  | 2025-05-16 | 2025-07-05 |  |  |  |  |  |  |
| PG-12330 |  | Waterproofing for sunken areas | 3d | 2025-05-16 | 2025-05-19 | PG-11823 | 345.33d | 20d | L&T [64000 h] | 64,000 | 15064 |
| PG-12331 |  | Floor Tiling - Wet area | 5d | 2025-06-12 | 2025-06-17 | PG-12330, PG-12327 | 325.33d | 0d | L&T [126000 h] | 126,000 | 15065 |
| PG-12332 |  | Floor Tiling - Dry area | 5d | 2025-06-18 | 2025-06-23 | PG-12331 FF+5d | 325.33d | 0d | L&T [335000 h] | 335,000 | 15066 |
| PG-12333 |  | Wooden doors | 5d | 2025-07-01 | 2025-07-05 | PG-12328 FF | 325.33d | 0d | Morph (Wooden Doors) [330000 h] | 330,000 | 15067 |
|  | 1.3.1.3.4.13 | **Floor 10** |  | 2025-05-31 | 2025-08-13 |  |  |  |  |  |  |
|  | 1.3.1.3.4.13.1 | **Ceiling Finishing works - Civil** |  | 2025-06-09 | 2025-08-13 |  |  |  |  |  |  |
| PG-12334 |  | Gypsum Plastering | 6d | 2025-06-09 | 2025-06-16 | PG-12009 | 358.17d | 0d | L&T [195000 h] | 195,000 | 15070 |
| PG-12335 |  | Cornice fixing | 4d | 2025-06-25 | 2025-06-30 | PG-12006 FF+6d | 358.17d | 12.33d | Interiors (False celing) [62000 h] | 62,000 | 15071 |
| PG-12337 |  | Toilet False ceiling | 4d | 2025-07-04 | 2025-07-08 | PG-12345 FF+5d | 337.17d | 26d | Interiors (False celing) [86000 h] | 86,000 | 15073 |
| PG-12336 |  | Painting Works - Putty, Primer and 1st | 6d | 2025-07-15 | 2025-07-21 | PG-12335, PG-12340 | 345.83d | 0d | Surfa Coats (Painting) [130000 h] | 130,000 | 15072 |
| PG-12338 |  | Final Coat Painting | 19.5d | 2025-07-22 | 2025-08-13 | PG-12336, PG-12347 | 345.83d | 34.67d | Surfa Coats (Painting) [125000 h] | 125,000 | 15074 |

| ID | WBS | Activity | Duration | Start | Finish | Predecessors | Total float | Free float | Resources | Cost | MSP Activity ID |
| --- | --- | --- | --- | --- | --- | --- | --- | --- | --- | --- | --- |
|  | 1.3.1.3.4.13.2 | **Wall Finishing works - Civil** |  | 2025-05-31 | 2025-08-12 |  |  |  |  |  |  |
| PG-12339 |  | Balcony Railing Fixing works | 4d | 2025-05-31 | 2025-06-04 | PG-11828 | 340.17d | 29d | L&T [165000 h] | 165,000 | 15076 |
| PG-12341 |  | Dadoing - Wet area | 5d | 2025-06-21 | 2025-06-26 | PG-12004 | 311.17d | 0d | L&T [168000 h] | 168,000 | 15078 |
| PG-12340 |  | UPVC Windows & Sliding doors | 5d | 2025-07-09 | 2025-07-14 | PG-12339, PG-12346 FF+5d | 311.17d | 0d | Fenesta (UPVC Windows) [430000 h] | 430,000 | 15077 |
| PG-12342 |  | Painting Works - Putty, Primer and 1st | 6d | 2025-07-15 | 2025-07-21 | PG-12340 | 311.17d | 0d | Surfa Coats (Painting) [188000 h] | 188,000 | 15079 |
| PG-12343 |  | Final Coat Painting | 18.5d | 2025-07-22 | 2025-08-12 | PG-12347 | 311.17d | 0d | Surfa Coats (Painting) [172000 h] | 172,000 | 15080 |
|  | 1.3.1.3.4.13.3 | **Floor Finishing Works - Civil** |  | 2025-05-31 | 2025-07-21 |  |  |  |  |  |  |
| PG-12344 |  | Waterproofing for sunken areas | 3d | 2025-05-31 | 2025-06-03 | PG-11828 | 331.17d | 20d | L&T [64000 h] | 64,000 | 15082 |
| PG-12345 |  | Floor Tiling - Wet area | 5d | 2025-06-27 | 2025-07-02 | PG-12344, PG-12341 | 311.17d | 0d | L&T [126000 h] | 126,000 | 15083 |
| PG-12346 |  | Floor Tiling - Dry area | 5d | 2025-07-03 | 2025-07-08 | PG-12345 FF+5d | 311.17d | 0d | L&T [335000 h] | 335,000 | 15084 |
| PG-12347 |  | Wooden doors | 5d | 2025-07-16 | 2025-07-21 | PG-12342 FF | 311.17d | 0d | Morph (Wooden Doors) [330000 h] | 330,000 | 15085 |
|  | 1.3.1.3.4.14 | **Floor 11** |  | 2025-06-13 | 2025-08-27 |  |  |  |  |  |  |
|  | 1.3.1.3.4.14.1 | **Ceiling Finishing works - Civil** |  | 2025-06-21 | 2025-08-27 |  |  |  |  |  |  |
| PG-12348 |  | Gypsum Plastering | 6d | 2025-06-21 | 2025-06-28 | PG-12018 | 347.17d | 0d | L&T [195000 h] | 195,000 | 15088 |
| PG-12349 |  | Cornice fixing | 4d | 2025-07-08 | 2025-07-12 | PG-12015 FF+6d | 347.17d | 12.17d | Interiors (False celing) [62000 h] | 62,000 | 15089 |
| PG-12351 |  | Toilet False ceiling | 4d | 2025-07-17 | 2025-07-21 | PG-12359 FF+5d | 326.5d | 26d | Interiors (False celing) [86000 h] | 86,000 | 15091 |
| PG-12350 |  | Painting Works - Putty, Primer and 1st | 6d | 2025-07-28 | 2025-08-02 | PG-12349, PG-12354 | 335d | 0d | Surfa Coats (Painting) [130000 h] | 130,000 | 15090 |
| PG-12352 |  | Final Coat Painting | 19.67d | 2025-08-04 | 2025-08-27 | PG-12350, PG-12361 | 335d | 34.5d | Surfa Coats (Painting) [125000 h] | 125,000 | 15092 |
|  | 1.3.1.3.4.14.2 | **Wall Finishing works - Civil** |  | 2025-06-13 | 2025-08-26 |  |  |  |  |  |  |
| PG-12353 |  | Balcony Railing Fixing works | 4d | 2025-06-13 | 2025-06-17 | PG-11833 | 329.5d | 29d | L&T [165000 h] | 165,000 | 15094 |
| PG-12355 |  | Dadoing - Wet area | 5d | 2025-07-04 | 2025-07-09 | PG-12013 | 300.5d | 0d | L&T [168000 h] | 168,000 | 15096 |
| PG-12354 |  | UPVC Windows & Sliding doors | 5d | 2025-07-22 | 2025-07-26 | PG-12353, PG-12360 FF+5d | 300.5d | 0d | Fenesta (UPVC Windows) [430000 h] | 430,000 | 15095 |
| PG-12356 |  | Painting Works - Putty, Primer and 1st | 6d | 2025-07-28 | 2025-08-02 | PG-12354 | 300.5d | 0d | Surfa Coats (Painting) [188000 h] | 188,000 | 15097 |
| PG-12357 |  | Final Coat Painting | 18.5d | 2025-08-04 | 2025-08-26 | PG-12361 | 300.5d | 0d | Surfa Coats (Painting) [172000 h] | 172,000 | 15098 |

| ID | WBS | Activity | Duration | Start | Finish | Predecessors | Total float | Free float | Resources | Cost | MSP Activity ID |
| --- | --- | --- | --- | --- | --- | --- | --- | --- | --- | --- | --- |
|  | 1.3.1.3.4.14.3 | **Floor Finishing Works - Civil** |  | 2025-06-13 | 2025-08-02 |  |  |  |  |  |  |
| PG-12358 |  | Waterproofing for sunken areas | 3d | 2025-06-13 | 2025-06-16 | PG-11833 | 320.5d | 20d | L&T [64000 h] | 64,000 | 15100 |
| PG-12359 |  | Floor Tiling - Wet area | 5d | 2025-07-10 | 2025-07-15 | PG-12358, PG-12355 | 300.5d | 0d | L&T [126000 h] | 126,000 | 15101 |
| PG-12360 |  | Floor Tiling - Dry area | 5d | 2025-07-16 | 2025-07-21 | PG-12359 FF+5d | 300.5d | 0d | L&T [335000 h] | 335,000 | 15102 |
| PG-12361 |  | Wooden doors | 5d | 2025-07-29 | 2025-08-02 | PG-12356 FF | 300.5d | 0d | Morph (Wooden Doors) [330000 h] | 330,000 | 15103 |
|  | 1.3.1.3.4.15 | **Floor 12** |  | 2025-06-26 | 2025-09-11 |  |  |  |  |  |  |
|  | 1.3.1.3.4.15.1 | **Ceiling Finishing works - Civil** |  | 2025-07-04 | 2025-09-11 |  |  |  |  |  |  |
| PG-12362 |  | Gypsum Plastering | 6d | 2025-07-04 | 2025-07-11 | PG-12027 | 334.33d | 0d | L&T [195000 h] | 195,000 | 15106 |
| PG-12363 |  | Cornice fixing | 4d | 2025-07-21 | 2025-07-25 | PG-12024 FF+6d | 334.33d | 12.33d | Interiors (False celing) [62000 h] | 62,000 | 15107 |
| PG-12365 |  | Toilet False ceiling | 4d | 2025-07-30 | 2025-08-02 | PG-12373 FF+5d | 314.17d | 27d | Interiors (False celing) [86000 h] | 86,000 | 15109 |
| PG-12364 |  | Painting Works - Putty, Primer and 1st | 6d | 2025-08-09 | 2025-08-16 | PG-12363, PG-12368 | 322d | 0d | Surfa Coats (Painting) [130000 h] | 130,000 | 15108 |
| PG-12366 |  | Final Coat Painting | 21.5d | 2025-08-18 | 2025-09-11 | PG-12364, PG-12375 | 322d | 34.83d | Surfa Coats (Painting) [125000 h] | 125,000 | 15110 |
|  | 1.3.1.3.4.15.2 | **Wall Finishing works - Civil** |  | 2025-06-26 | 2025-09-11 |  |  |  |  |  |  |
| PG-12367 |  | Balcony Railing Fixing works | 4d | 2025-06-26 | 2025-06-30 | PG-11838 | 316.17d | 29d | L&T [165000 h] | 165,000 | 15112 |
| PG-12369 |  | Dadoing - Wet area | 5d | 2025-07-17 | 2025-07-22 | PG-12022 | 287.17d | 0d | L&T [168000 h] | 168,000 | 15114 |
| PG-12368 |  | UPVC Windows & Sliding doors | 5d | 2025-08-04 | 2025-08-08 | PG-12367, PG-12374 FF+5d | 287.17d | 0d | Fenesta (UPVC Windows) [430000 h] | 430,000 | 15113 |
| PG-12370 |  | Painting Works - Putty, Primer and 1st | 6d | 2025-08-09 | 2025-08-16 | PG-12368 | 287.17d | 0d | Surfa Coats (Painting) [188000 h] | 188,000 | 15115 |
| PG-12371 |  | Final Coat Painting | 21.5d | 2025-08-18 | 2025-09-11 | PG-12375 | 287.17d | 0d | Surfa Coats (Painting) [172000 h] | 172,000 | 15116 |
|  | 1.3.1.3.4.15.3 | **Floor Finishing Works - Civil** |  | 2025-06-26 | 2025-08-16 |  |  |  |  |  |  |
| PG-12372 |  | Waterproofing for sunken areas | 3d | 2025-06-26 | 2025-06-28 | PG-11838 | 307.17d | 20d | L&T [64000 h] | 64,000 | 15118 |
| PG-12373 |  | Floor Tiling - Wet area | 5d | 2025-07-23 | 2025-07-28 | PG-12372, PG-12369 | 287.17d | 0d | L&T [126000 h] | 126,000 | 15119 |
| PG-12374 |  | Floor Tiling - Dry area | 5d | 2025-07-29 | 2025-08-02 | PG-12373 FF+5d | 287.17d | 0d | L&T [335000 h] | 335,000 | 15120 |
| PG-12375 |  | Wooden doors | 5d | 2025-08-11 | 2025-08-16 | PG-12370 FF | 287.17d | 0d | Morph (Wooden Doors) [330000 h] | 330,000 | 15121 |
|  | 1.3.1.3.4.16 | **Floor 13** |  | 2025-07-09 | 2025-09-24 |  |  |  |  |  |  |
|  | 1.3.1.3.4.16.1 | **Ceiling Finishing works - Civil** |  | 2025-07-17 | 2025-09-24 |  |  |  |  |  |  |
| PG-12376 |  | Gypsum Plastering | 6d | 2025-07-17 | 2025-07-24 | PG-12036 | 323.5d | 0d | L&T [195000 h] | 195,000 | 15124 |
| PG-12377 |  | Cornice fixing | 4d | 2025-08-02 | 2025-08-07 | PG-12033 FF+6d | 323.5d | 12.33d | Interiors (False celing) [62000 h] | 62,000 | 15125 |
| PG-12379 |  | Toilet False ceiling | 4d | 2025-08-12 | 2025-08-16 | PG-12387 FF+5d | 304.5d | 28d | Interiors (False celing) [86000 h] | 86,000 | 15127 |
| PG-12378 |  | Painting Works - Putty, Primer and 1st | 6d | 2025-08-23 | 2025-08-29 | PG-12377, PG-12382 | 311.17d | 0d | Surfa Coats (Painting) [130000 h] | 130,000 | 15126 |
| PG-12380 |  | Final Coat Painting | 21.5d | 2025-08-30 | 2025-09-24 | PG-12378, PG-12389 | 311.17d | 34.67d | Surfa Coats (Painting) [125000 h] | 125,000 | 15128 |

| ID | WBS | Activity | Duration | Start | Finish | Predecessors | Total float | Free float | Resources | Cost | MSP Activity ID |
| --- | --- | --- | --- | --- | --- | --- | --- | --- | --- | --- | --- |
|  | 1.3.1.3.4.16.2 | **Wall Finishing works - Civil** |  | 2025-07-09 | 2025-09-24 |  |  |  |  |  |  |
| PG-12381 |  | Balcony Railing Fixing works | 4d | 2025-07-09 | 2025-07-12 | PG-11843 | 305.5d | 29d | L&T [165000 h] | 165,000 | 15130 |
| PG-12383 |  | Dadoing - Wet area | 5d | 2025-07-30 | 2025-08-04 | PG-12031 | 276.5d | 0d | L&T [168000 h] | 168,000 | 15132 |
| PG-12382 |  | UPVC Windows & Sliding doors | 5d | 2025-08-18 | 2025-08-22 | PG-12381, PG-12388 FF+5d | 276.5d | 0d | Fenesta (UPVC Windows) [430000 h] | 430,000 | 15131 |
| PG-12384 |  | Painting Works - Putty, Primer and 1st | 6d | 2025-08-23 | 2025-08-29 | PG-12382 | 276.5d | 0d | Surfa Coats (Painting) [188000 h] | 188,000 | 15133 |
| PG-12385 |  | Final Coat Painting | 21.5d | 2025-08-30 | 2025-09-24 | PG-12389 | 276.5d | 0d | Surfa Coats (Painting) [172000 h] | 172,000 | 15134 |
|  | 1.3.1.3.4.16.3 | **Floor Finishing Works - Civil** |  | 2025-07-09 | 2025-08-29 |  |  |  |  |  |  |
| PG-12386 |  | Waterproofing for sunken areas | 3d | 2025-07-09 | 2025-07-11 | PG-11843 | 296.5d | 20d | L&T [64000 h] | 64,000 | 15136 |
| PG-12387 |  | Floor Tiling - Wet area | 5d | 2025-08-05 | 2025-08-09 | PG-12386, PG-12383 | 276.5d | 0d | L&T [126000 h] | 126,000 | 15137 |
| PG-12388 |  | Floor Tiling - Dry area | 5d | 2025-08-11 | 2025-08-16 | PG-12387 FF+5d | 276.5d | 0d | L&T [335000 h] | 335,000 | 15138 |
| PG-12389 |  | Wooden doors | 5d | 2025-08-25 | 2025-08-29 | PG-12384 FF | 276.5d | 0d | Morph (Wooden Doors) [330000 h] | 330,000 | 15139 |
|  | 1.3.1.3.4.17 | **Floor 14** |  | 2025-07-22 | 2025-10-06 |  |  |  |  |  |  |
|  | 1.3.1.3.4.17.1 | **Ceiling Finishing works - Civil** |  | 2025-07-30 | 2025-10-06 |  |  |  |  |  |  |
| PG-12390 |  | Gypsum Plastering | 6d | 2025-07-30 | 2025-08-06 | PG-12045 | 314.5d | 0d | L&T [195000 h] | 195,000 | 15142 |
| PG-12391 |  | Cornice fixing | 4d | 2025-08-16 | 2025-08-21 | PG-12042 FF+6d | 314.5d | 12.33d | Interiors (False celing) [62000 h] | 62,000 | 15143 |
| PG-12393 |  | Toilet False ceiling | 4d | 2025-08-26 | 2025-08-29 | PG-12401 FF+5d | 294.5d | 27d | Interiors (False celing) [86000 h] | 86,000 | 15145 |
| PG-12392 |  | Painting Works - Putty, Primer and 1st | 6d | 2025-09-05 | 2025-09-11 | PG-12391, PG-12396 | 302.17d | 0d | Surfa Coats (Painting) [130000 h] | 130,000 | 15144 |
| PG-12394 |  | Final Coat Painting | 19.5d | 2025-09-12 | 2025-10-06 | PG-12392, PG-12403 | 302.17d | 34.67d | Surfa Coats (Painting) [125000 h] | 125,000 | 15146 |
|  | 1.3.1.3.4.17.2 | **Wall Finishing works - Civil** |  | 2025-07-22 | 2025-10-06 |  |  |  |  |  |  |
| PG-12395 |  | Balcony Railing Fixing works | 4d | 2025-07-22 | 2025-07-25 | PG-11848 | 296.5d | 29d | L&T [165000 h] | 165,000 | 15148 |
| PG-12397 |  | Dadoing - Wet area | 5d | 2025-08-12 | 2025-08-18 | PG-12040 | 267.5d | 0d | L&T [168000 h] | 168,000 | 15150 |
| PG-12396 |  | UPVC Windows & Sliding doors | 5d | 2025-08-30 | 2025-09-04 | PG-12395, PG-12402 FF+5d | 267.5d | 0d | Fenesta (UPVC Windows) [430000 h] | 430,000 | 15149 |
| PG-12398 |  | Painting Works - Putty, Primer and 1st | 6d | 2025-09-05 | 2025-09-11 | PG-12396 | 267.5d | 0d | Surfa Coats (Painting) [188000 h] | 188,000 | 15151 |
| PG-12399 |  | Final Coat Painting | 19.5d | 2025-09-12 | 2025-10-06 | PG-12403 | 267.5d | 0d | Surfa Coats (Painting) [172000 h] | 172,000 | 15152 |

| ID | WBS | Activity | Duration | Start | Finish | Predecessors | Total float | Free float | Resources | Cost | MSP Activity ID |
| --- | --- | --- | --- | --- | --- | --- | --- | --- | --- | --- | --- |
|  | 1.3.1.3.4.17.3 | **Floor Finishing Works - Civil** |  | 2025-07-22 | 2025-09-11 |  |  |  |  |  |  |
| PG-12400 |  | Waterproofing for sunken areas | 3d | 2025-07-22 | 2025-07-24 | PG-11848 | 287.5d | 20d | L&T [64000 h] | 64,000 | 15154 |
| PG-12401 |  | Floor Tiling - Wet area | 5d | 2025-08-19 | 2025-08-23 | PG-12400, PG-12397 | 267.5d | 0d | L&T [126000 h] | 126,000 | 15155 |
| PG-12402 |  | Floor Tiling - Dry area | 5d | 2025-08-25 | 2025-08-29 | PG-12401 FF+5d | 267.5d | 0d | L&T [335000 h] | 335,000 | 15156 |
| PG-12403 |  | Wooden doors | 5d | 2025-09-06 | 2025-09-11 | PG-12398 FF | 267.5d | 0d | Morph (Wooden Doors) [330000 h] | 330,000 | 15157 |
|  | 1.3.1.3.4.18 | **Floor 15** |  | 2025-08-04 | 2026-01-07 |  |  |  |  |  |  |
|  | 1.3.1.3.4.18.1 | **Ceiling Finishing works - Civil** |  | 2025-08-12 | 2026-01-07 |  |  |  |  |  |  |
| PG-12404 |  | Gypsum Plastering | 6d | 2025-08-12 | 2025-08-20 | PG-12054 | 303.33d | 0d | L&T [195000 h] | 195,000 | 15160 |
| PG-12405 |  | Cornice fixing | 4d | 2025-08-29 | 2025-09-03 | PG-12051 FF+6d | 303.33d | 80.67d | Interiors (False celing) [62000 h] | 62,000 | 15161 |
| PG-12407 |  | Toilet False ceiling | 4d | 2025-11-28 | 2025-12-03 | PG-12415 FF+5d | 212.83d | 26d | Interiors (False celing) [86000 h] | 86,000 | 15163 |
| PG-12406 |  | Painting Works - Putty, Primer and 1st | 6d | 2025-12-09 | 2025-12-16 | PG-12405, PG-12410 | 222.67d | 0d | Surfa Coats (Painting) [130000 h] | 130,000 | 15162 |
| PG-12408 |  | Final Coat Painting | 19.5d | 2025-12-16 | 2026-01-07 | PG-12406, PG-12417 | 222.67d | 35.83d | Surfa Coats (Painting) [125000 h] | 125,000 | 15164 |
|  | 1.3.1.3.4.18.2 | **Wall Finishing works - Civil** |  | 2025-08-04 | 2026-01-07 |  |  |  |  |  |  |
| PG-12409 |  | Balcony Railing Fixing works | 4d | 2025-08-04 | 2025-08-07 | PG-11853 | 142.5d | 97.33d | L&T [165000 h] | 165,000 | 15166 |
| PG-12411 |  | Dadoing - Wet area | 5d | 2025-11-15 | 2025-11-21 | PG-10007, PG-12049 | 45.17d | 0d | L&T [168000 h] | 168,000 | 15168 |
| PG-12410 |  | UPVC Windows & Sliding doors | 5d | 2025-12-03 | 2025-12-09 | PG-12409, PG-12416 FF+5d | 45.17d | 0d | Fenesta (UPVC Windows) [430000 h] | 430,000 | 15167 |
| PG-12412 |  | Painting Works - Putty, Primer and 1st | 6d | 2025-12-09 | 2025-12-16 | PG-12410 | 45.17d | 0d | Surfa Coats (Painting) [188000 h] | 188,000 | 15169 |
| PG-12413 |  | Final Coat Painting | 19.5d | 2025-12-16 | 2026-01-07 | PG-12417 | 186.83d | 0d | Surfa Coats (Painting) [172000 h] | 172,000 | 15170 |
|  | 1.3.1.3.4.18.3 | **Floor Finishing Works - Civil** |  | 2025-08-04 | 2025-12-16 |  |  |  |  |  |  |
| PG-12414 |  | Waterproofing for sunken areas | 3d | 2025-08-04 | 2025-08-06 | PG-11853 | 133.5d | 88.33d | L&T [64000 h] | 64,000 | 15172 |
| PG-12415 |  | Floor Tiling - Wet area | 5d | 2025-11-21 | 2025-11-27 | PG-12414, PG-12411 | 45.17d | 0d | L&T [126000 h] | 126,000 | 15173 |
| PG-12416 |  | Floor Tiling - Dry area | 5d | 2025-11-27 | 2025-12-03 | PG-12415 FF+5d | 45.17d | 0d | L&T [335000 h] | 335,000 | 15174 |
| PG-12417 |  | Wooden doors | 5d | 2025-12-10 | 2025-12-16 | PG-12412 FF | 45.17d | 0d | Morph (Wooden Doors) [330000 h] | 330,000 | 15175 |
|  | 1.3.1.3.4.19 | **Floor 16** |  | 2025-08-18 | 2025-10-31 |  |  |  |  |  |  |
|  | 1.3.1.3.4.19.1 | **Ceiling Finishing works - Civil** |  | 2025-08-26 | 2025-10-31 |  |  |  |  |  |  |
| PG-12418 |  | Gypsum Plastering | 6d | 2025-08-26 | 2025-09-02 | PG-12063 | 292.5d | 0d | L&T [195000 h] | 195,000 | 15178 |
| PG-12419 |  | Cornice fixing | 4d | 2025-09-11 | 2025-09-16 | PG-12060 FF+6d | 292.5d | 12.33d | Interiors (False celing) [62000 h] | 62,000 | 15179 |
| PG-12421 |  | Toilet False ceiling | 4d | 2025-09-20 | 2025-09-24 | PG-12429 FF+5d | 271.33d | 26d | Interiors (False celing) [86000 h] | 86,000 | 15181 |
| PG-12420 |  | Painting Works - Putty, Primer and 1st | 6d | 2025-10-01 | 2025-10-08 | PG-12419, PG-12424 | 280.17d | 0d | Surfa Coats (Painting) [130000 h] | 130,000 | 15180 |
| PG-12422 |  | Final Coat Painting | 19.5d | 2025-10-09 | 2025-10-31 | PG-12420, PG-12431 | 280.17d | 34.83d | Surfa Coats (Painting) [125000 h] | 125,000 | 15182 |

| ID | WBS | Activity | Duration | Start | Finish | Predecessors | Total float | Free float | Resources | Cost | MSP Activity ID |
| --- | --- | --- | --- | --- | --- | --- | --- | --- | --- | --- | --- |
|  | 1.3.1.3.4.19.2 | **Wall Finishing works - Civil** |  | 2025-08-18 | 2025-10-31 |  |  |  |  |  |  |
| PG-12423 |  | Balcony Railing Fixing works | 4d | 2025-08-18 | 2025-08-21 | PG-11858 | 274.33d | 29d | L&T [165000 h] | 165,000 | 15184 |
| PG-12425 |  | Dadoing - Wet area | 5d | 2025-09-08 | 2025-09-12 | PG-12058 | 245.33d | 0d | L&T [168000 h] | 168,000 | 15186 |
| PG-12424 |  | UPVC Windows & Sliding doors | 5d | 2025-09-25 | 2025-09-30 | PG-12423, PG-12430 FF+5d | 245.33d | 0d | Fenesta (UPVC Windows) [430000 h] | 430,000 | 15185 |
| PG-12426 |  | Painting Works - Putty, Primer and 1st | 6d | 2025-10-01 | 2025-10-08 | PG-12424 | 245.33d | 0d | Surfa Coats (Painting) [188000 h] | 188,000 | 15187 |
| PG-12427 |  | Final Coat Painting | 19.67d | 2025-10-09 | 2025-10-31 | PG-12431 | 245.33d | 0d | Surfa Coats (Painting) [172000 h] | 172,000 | 15188 |
|  | 1.3.1.3.4.19.3 | **Floor Finishing Works - Civil** |  | 2025-08-18 | 2025-10-08 |  |  |  |  |  |  |
| PG-12428 |  | Waterproofing for sunken areas | 3d | 2025-08-18 | 2025-08-20 | PG-11858 | 265.33d | 20d | L&T [64000 h] | 64,000 | 15190 |
| PG-12429 |  | Floor Tiling - Wet area | 5d | 2025-09-13 | 2025-09-18 | PG-12428, PG-12425 | 245.33d | 0d | L&T [126000 h] | 126,000 | 15191 |
| PG-12430 |  | Floor Tiling - Dry area | 5d | 2025-09-19 | 2025-09-24 | PG-12429 FF+5d | 245.33d | 0d | L&T [335000 h] | 335,000 | 15192 |
| PG-12431 |  | Wooden doors | 5d | 2025-10-03 | 2025-10-08 | PG-12426 FF | 245.33d | 0d | Morph (Wooden Doors) [330000 h] | 330,000 | 15193 |
|  | 1.3.1.3.4.20 | **Floor 17** |  | 2025-08-30 | 2025-11-13 |  |  |  |  |  |  |
|  | 1.3.1.3.4.20.1 | **Ceiling Finishing works - Civil** |  | 2025-09-08 | 2025-11-13 |  |  |  |  |  |  |
| PG-12432 |  | Gypsum Plastering | 6d | 2025-09-08 | 2025-09-15 | PG-12072 | 282.33d | 0d | L&T [195000 h] | 195,000 | 15196 |
| PG-12433 |  | Cornice fixing | 4d | 2025-09-24 | 2025-09-29 | PG-12069 FF+6d | 282.33d | 12.33d | Interiors (False celing) [62000 h] | 62,000 | 15197 |
| PG-12435 |  | Toilet False ceiling | 4d | 2025-10-04 | 2025-10-08 | PG-12443 FF+5d | 259.33d | 25d | Interiors (False celing) [86000 h] | 86,000 | 15199 |
| PG-12434 |  | Painting Works - Putty, Primer and 1st | 6d | 2025-10-15 | 2025-10-21 | PG-12433, PG-12438 | 270d | 0d | Surfa Coats (Painting) [130000 h] | 130,000 | 15198 |
| PG-12436 |  | Final Coat Painting | 18.67d | 2025-10-22 | 2025-11-13 | PG-12434, PG-12445 | 270d | 35.67d | Surfa Coats (Painting) [125000 h] | 125,000 | 15200 |
|  | 1.3.1.3.4.20.2 | **Wall Finishing works - Civil** |  | 2025-08-30 | 2025-11-13 |  |  |  |  |  |  |
| PG-12437 |  | Balcony Railing Fixing works | 4d | 2025-08-30 | 2025-09-03 | PG-11863 | 263.33d | 29d | L&T [165000 h] | 165,000 | 15202 |
| PG-12439 |  | Dadoing - Wet area | 5d | 2025-09-20 | 2025-09-25 | PG-12067 | 234.33d | 0d | L&T [168000 h] | 168,000 | 15204 |
| PG-12438 |  | UPVC Windows & Sliding doors | 5d | 2025-10-09 | 2025-10-14 | PG-12437, PG-12444 FF+5d | 234.33d | 0d | Fenesta (UPVC Windows) [430000 h] | 430,000 | 15203 |
| PG-12440 |  | Painting Works - Putty, Primer and 1st | 6d | 2025-10-15 | 2025-10-21 | PG-12438 | 234.33d | 0d | Surfa Coats (Painting) [188000 h] | 188,000 | 15205 |
| PG-12441 |  | Final Coat Painting | 18.67d | 2025-10-22 | 2025-11-13 | PG-12445 | 234.33d | 0d | Surfa Coats (Painting) [172000 h] | 172,000 | 15206 |

| ID | WBS | Activity | Duration | Start | Finish | Predecessors | Total float | Free float | Resources | Cost | MSP Activity ID |
| --- | --- | --- | --- | --- | --- | --- | --- | --- | --- | --- | --- |
|  | 1.3.1.3.4.20.3 | **Floor Finishing Works - Civil** |  | 2025-08-30 | 2025-10-21 |  |  |  |  |  |  |
| PG-12442 |  | Waterproofing for sunken areas | 3d | 2025-08-30 | 2025-09-02 | PG-11863 | 254.33d | 20d | L&T [64000 h] | 64,000 | 15208 |
| PG-12443 |  | Floor Tiling - Wet area | 5d | 2025-09-26 | 2025-10-01 | PG-12442, PG-12439 | 234.33d | 0d | L&T [126000 h] | 126,000 | 15209 |
| PG-12444 |  | Floor Tiling - Dry area | 5d | 2025-10-03 | 2025-10-08 | PG-12443 FF+5d | 234.33d | 0d | L&T [335000 h] | 335,000 | 15210 |
| PG-12445 |  | Wooden doors | 5d | 2025-10-16 | 2025-10-21 | PG-12440 FF | 234.33d | 0d | Morph (Wooden Doors) [330000 h] | 330,000 | 15211 |
|  | 1.3.1.3.4.21 | **Floor 18** |  | 2025-09-12 | 2025-11-26 |  |  |  |  |  |  |
|  | 1.3.1.3.4.21.1 | **Ceiling Finishing works - Civil** |  | 2025-09-20 | 2025-11-26 |  |  |  |  |  |  |
| PG-12446 |  | Gypsum Plastering | 6d | 2025-09-20 | 2025-09-27 | PG-12081 | 271.33d | 0d | L&T [195000 h] | 195,000 | 15214 |
| PG-12447 |  | Cornice fixing | 4d | 2025-10-08 | 2025-10-13 | PG-12078 FF+6d | 271.33d | 12.33d | Interiors (False celing) [62000 h] | 62,000 | 15215 |
| PG-12449 |  | Toilet False ceiling | 4d | 2025-10-17 | 2025-10-21 | PG-12457 FF+5d | 248.33d | 25d | Interiors (False celing) [86000 h] | 86,000 | 15217 |
| PG-12448 |  | Painting Works - Putty, Primer and 1st | 6d | 2025-10-28 | 2025-11-04 | PG-12447, PG-12452 | 259d | 0d | Surfa Coats (Painting) [130000 h] | 130,000 | 15216 |
| PG-12450 |  | Final Coat Painting | 18.67d | 2025-11-05 | 2025-11-26 | PG-12448, PG-12459 | 259d | 35.67d | Surfa Coats (Painting) [125000 h] | 125,000 | 15218 |
|  | 1.3.1.3.4.21.2 | **Wall Finishing works - Civil** |  | 2025-09-12 | 2025-11-26 |  |  |  |  |  |  |
| PG-12451 |  | Balcony Railing Fixing works | 4d | 2025-09-12 | 2025-09-16 | PG-11868 | 252.33d | 29d | L&T [165000 h] | 165,000 | 15220 |
| PG-12453 |  | Dadoing - Wet area | 5d | 2025-10-04 | 2025-10-09 | PG-12076 | 223.33d | 0d | L&T [168000 h] | 168,000 | 15222 |
| PG-12452 |  | UPVC Windows & Sliding doors | 5d | 2025-10-22 | 2025-10-27 | PG-12451, PG-12458 FF+5d | 223.33d | 0d | Fenesta (UPVC Windows) [430000 h] | 430,000 | 15221 |
| PG-12454 |  | Painting Works - Putty, Primer and 1st | 6d | 2025-10-28 | 2025-11-04 | PG-12452 | 223.33d | 0d | Surfa Coats (Painting) [188000 h] | 188,000 | 15223 |
| PG-12455 |  | Final Coat Painting | 18.67d | 2025-11-05 | 2025-11-26 | PG-12459 | 223.33d | 0d | Surfa Coats (Painting) [172000 h] | 172,000 | 15224 |
|  | 1.3.1.3.4.21.3 | **Floor Finishing Works - Civil** |  | 2025-09-12 | 2025-11-04 |  |  |  |  |  |  |
| PG-12456 |  | Waterproofing for sunken areas | 3d | 2025-09-12 | 2025-09-15 | PG-11868 | 243.33d | 20d | L&T [64000 h] | 64,000 | 15226 |
| PG-12457 |  | Floor Tiling - Wet area | 5d | 2025-10-10 | 2025-10-15 | PG-12456, PG-12453 | 223.33d | 0d | L&T [126000 h] | 126,000 | 15227 |
| PG-12458 |  | Floor Tiling - Dry area | 5d | 2025-10-16 | 2025-10-21 | PG-12457 FF+5d | 223.33d | 0d | L&T [335000 h] | 335,000 | 15228 |
| PG-12459 |  | Wooden doors | 5d | 2025-10-29 | 2025-11-04 | PG-12454 FF | 223.33d | 0d | Morph (Wooden Doors) [330000 h] | 330,000 | 15229 |
|  | 1.3.1.3.4.22 | **Floor 19** |  | 2025-09-25 | 2025-12-09 |  |  |  |  |  |  |
|  | 1.3.1.3.4.22.1 | **Ceiling Finishing works - Civil** |  | 2025-10-04 | 2025-12-09 |  |  |  |  |  |  |
| PG-12460 |  | Gypsum Plastering | 6d | 2025-10-04 | 2025-10-11 | PG-12090 | 260.33d | 0d | L&T [195000 h] | 195,000 | 15232 |
| PG-12461 |  | Cornice fixing | 4d | 2025-10-21 | 2025-10-25 | PG-12087 FF+6d | 260.33d | 12.33d | Interiors (False celing) [62000 h] | 62,000 | 15233 |
| PG-12463 |  | Toilet False ceiling | 4d | 2025-10-30 | 2025-11-04 | PG-12471 FF+5d | 237.33d | 25d | Interiors (False celing) [86000 h] | 86,000 | 15235 |
| PG-12462 |  | Painting Works - Putty, Primer and 1st | 6d | 2025-11-11 | 2025-11-17 | PG-12461, PG-12466 | 248d | 0d | Surfa Coats (Painting) [130000 h] | 130,000 | 15234 |
| PG-12464 |  | Final Coat Painting | 18.67d | 2025-11-18 | 2025-12-09 | PG-12462, PG-12473 | 248d | 35.67d | Surfa Coats (Painting) [125000 h] | 125,000 | 15236 |

| ID | WBS | Activity | Duration | Start | Finish | Predecessors | Total float | Free float | Resources | Cost | MSP Activity ID |
| --- | --- | --- | --- | --- | --- | --- | --- | --- | --- | --- | --- |
|  | 1.3.1.3.4.22.2 | **Wall Finishing works - Civil** |  | 2025-09-25 | 2025-12-09 |  |  |  |  |  |  |
| PG-12465 |  | Balcony Railing Fixing works | 4d | 2025-09-25 | 2025-09-29 | PG-11873 | 241.33d | 29d | L&T [165000 h] | 165,000 | 15238 |
| PG-12467 |  | Dadoing - Wet area | 5d | 2025-10-17 | 2025-10-22 | PG-12085 | 212.33d | 0d | L&T [168000 h] | 168,000 | 15240 |
| PG-12466 |  | UPVC Windows & Sliding doors | 5d | 2025-11-05 | 2025-11-10 | PG-12465, PG-12472 FF+5d | 212.33d | 0d | Fenesta (UPVC Windows) [430000 h] | 430,000 | 15239 |
| PG-12468 |  | Painting Works - Putty, Primer and 1st | 6d | 2025-11-11 | 2025-11-17 | PG-12466 | 212.33d | 0d | Surfa Coats (Painting) [188000 h] | 188,000 | 15241 |
| PG-12469 |  | Final Coat Painting | 18.67d | 2025-11-18 | 2025-12-09 | PG-12473 | 212.33d | 0d | Surfa Coats (Painting) [172000 h] | 172,000 | 15242 |
|  | 1.3.1.3.4.22.3 | **Floor Finishing Works - Civil** |  | 2025-09-25 | 2025-11-17 |  |  |  |  |  |  |
| PG-12470 |  | Waterproofing for sunken areas | 3d | 2025-09-25 | 2025-09-27 | PG-11873 | 232.33d | 20d | L&T [64000 h] | 64,000 | 15244 |
| PG-12471 |  | Floor Tiling - Wet area | 5d | 2025-10-23 | 2025-10-28 | PG-12470, PG-12467 | 212.33d | 0d | L&T [126000 h] | 126,000 | 15245 |
| PG-12472 |  | Floor Tiling - Dry area | 5d | 2025-10-29 | 2025-11-04 | PG-12471 FF+5d | 212.33d | 0d | L&T [335000 h] | 335,000 | 15246 |
| PG-12473 |  | Wooden doors | 5d | 2025-11-12 | 2025-11-17 | PG-12468 FF | 212.33d | 0d | Morph (Wooden Doors) [330000 h] | 330,000 | 15247 |
|  | 1.3.1.3.4.23 | **Floor 20** |  | 2025-10-09 | 2025-12-23 |  |  |  |  |  |  |
|  | 1.3.1.3.4.23.1 | **Ceiling Finishing works - Civil** |  | 2025-10-17 | 2025-12-23 |  |  |  |  |  |  |
| PG-12474 |  | Gypsum Plastering | 6d | 2025-10-17 | 2025-10-24 | PG-12099 | 248.5d | 0d | L&T [195000 h] | 195,000 | 15250 |
| PG-12475 |  | Cornice fixing | 4d | 2025-11-04 | 2025-11-08 | PG-12096 FF+6d | 248.5d | 12.17d | Interiors (False celing) [62000 h] | 62,000 | 15251 |
| PG-12477 |  | Toilet False ceiling | 4d | 2025-11-13 | 2025-11-17 | PG-12485 FF+5d | 227.67d | 27d | Interiors (False celing) [86000 h] | 86,000 | 15253 |
| PG-12476 |  | Painting Works - Putty, Primer and 1st | 6d | 2025-11-24 | 2025-11-29 | PG-12480, PG-12475 | 236.33d | 0d | Surfa Coats (Painting) [130000 h] | 130,000 | 15252 |
| PG-12478 |  | Final Coat Painting | 19.33d | 2025-12-01 | 2025-12-23 | PG-12476, PG-12487 | 236.33d | 35.67d | Surfa Coats (Painting) [125000 h] | 125,000 | 15254 |
|  | 1.3.1.3.4.23.2 | **Wall Finishing works - Civil** |  | 2025-10-09 | 2025-12-23 |  |  |  |  |  |  |
| PG-12479 |  | Balcony Railing Fixing works | 4d | 2025-10-09 | 2025-10-13 | PG-11878 | 229.67d | 29d | L&T [165000 h] | 165,000 | 15256 |
| PG-12481 |  | Dadoing - Wet area | 5d | 2025-10-30 | 2025-11-05 | PG-12094 | 200.67d | 0d | L&T [168000 h] | 168,000 | 15258 |
| PG-12480 |  | UPVC Windows & Sliding doors | 5d | 2025-11-18 | 2025-11-22 | PG-12507, PG-12479, PG-12486 FF+5d | 200.67d | 0d | Fenesta (UPVC Windows) [430000 h] | 430,000 | 15257 |
| PG-12482 |  | Painting Works - Putty, Primer and 1st | 6d | 2025-11-24 | 2025-11-29 | PG-12480 | 200.67d | 0d | Surfa Coats (Painting) [188000 h] | 188,000 | 15259 |
| PG-12483 |  | Final Coat Painting | 19.33d | 2025-12-01 | 2025-12-23 | PG-12487 | 200.67d | 0d | Surfa Coats (Painting) [172000 h] | 172,000 | 15260 |

| ID | WBS | Activity | Duration | Start | Finish | Predecessors | Total float | Free float | Resources | Cost | MSP Activity ID |
| --- | --- | --- | --- | --- | --- | --- | --- | --- | --- | --- | --- |
|  | 1.3.1.3.4.23.3 | **Floor Finishing Works - Civil** |  | 2025-10-09 | 2025-11-29 |  |  |  |  |  |  |
| PG-12484 |  | Waterproofing for sunken areas | 3d | 2025-10-09 | 2025-10-11 | PG-11878 | 220.67d | 20d | L&T [64000 h] | 64,000 | 15262 |
| PG-12485 |  | Floor Tiling - Wet area | 5d | 2025-11-06 | 2025-11-11 | PG-12484, PG-12481 | 200.67d | 0d | L&T [126000 h] | 126,000 | 15263 |
| PG-12486 |  | Floor Tiling - Dry area | 5d | 2025-11-12 | 2025-11-17 | PG-12485 FF+5d | 200.67d | 0d | L&T [335000 h] | 335,000 | 15264 |
| PG-12487 |  | Wooden doors | 5d | 2025-11-25 | 2025-11-29 | PG-12482 FF | 200.67d | 0d | Morph (Wooden Doors) [330000 h] | 330,000 | 15265 |
|  | 1.3.1.3.4.24 | **Floor 21** |  | 2025-10-22 | 2026-01-05 |  |  |  |  |  |  |
|  | 1.3.1.3.4.24.1 | **Ceiling Finishing works - Civil** |  | 2025-10-30 | 2026-01-05 |  |  |  |  |  |  |
| PG-12488 |  | Gypsum Plastering | 6d | 2025-10-30 | 2025-11-07 | PG-12108 | 237.33d | 0d | L&T [195000 h] | 195,000 | 15268 |
| PG-12489 |  | Cornice fixing | 4d | 2025-11-17 | 2025-11-21 | PG-12105 FF+6d | 237.33d | 11.83d | Interiors (False celing) [62000 h] | 62,000 | 15269 |
| PG-12491 |  | Toilet False ceiling | 4d | 2025-11-25 | 2025-11-29 | PG-12499 FF+5d | 215.83d | 26d | Interiors (False celing) [86000 h] | 86,000 | 15271 |
| PG-12490 |  | Painting Works - Putty, Primer and 1st | 6d | 2025-12-05 | 2025-12-12 | PG-12489, PG-12494 | 225.5d | 0d | Surfa Coats (Painting) [130000 h] | 130,000 | 15270 |
| PG-12492 |  | Final Coat Painting | 19.5d | 2025-12-12 | 2026-01-05 | PG-12490, PG-12501 | 225.5d | 35.67d | Surfa Coats (Painting) [125000 h] | 125,000 | 15272 |
|  | 1.3.1.3.4.24.2 | **Wall Finishing works - Civil** |  | 2025-10-22 | 2026-01-05 |  |  |  |  |  |  |
| PG-12493 |  | Balcony Railing Fixing works | 4d | 2025-10-22 | 2025-10-25 | PG-11883 | 218.5d | 28.67d | L&T [165000 h] | 165,000 | 15274 |
| PG-12495 |  | Dadoing - Wet area | 5d | 2025-11-12 | 2025-11-18 | PG-12103 | 189.83d | 0d | L&T [168000 h] | 168,000 | 15276 |
| PG-12494 |  | UPVC Windows & Sliding doors | 5d | 2025-11-29 | 2025-12-05 | PG-12493, PG-12500 FF+5d | 189.83d | 0d | Fenesta (UPVC Windows) [430000 h] | 430,000 | 15275 |
| PG-12496 |  | Painting Works - Putty, Primer and 1st | 6d | 2025-12-05 | 2025-12-12 | PG-12494 | 189.83d | 0d | Surfa Coats (Painting) [188000 h] | 188,000 | 15277 |
| PG-12497 |  | Final Coat Painting | 19.5d | 2025-12-12 | 2026-01-05 | PG-12501 | 189.83d | 0d | Surfa Coats (Painting) [172000 h] | 172,000 | 15278 |
|  | 1.3.1.3.4.24.3 | **Floor Finishing Works - Civil** |  | 2025-10-22 | 2025-12-12 |  |  |  |  |  |  |
| PG-12498 |  | Waterproofing for sunken areas | 3d | 2025-10-22 | 2025-10-24 | PG-11883 | 209.5d | 19.67d | L&T [64000 h] | 64,000 | 15280 |
| PG-12499 |  | Floor Tiling - Wet area | 5d | 2025-11-18 | 2025-11-24 | PG-12495, PG-12498 | 189.83d | 0d | L&T [126000 h] | 126,000 | 15281 |
| PG-12500 |  | Floor Tiling - Dry area | 5d | 2025-11-24 | 2025-11-29 | PG-12499 FF+5d | 189.83d | 0d | L&T [335000 h] | 335,000 | 15282 |
| PG-12501 |  | Wooden doors | 5d | 2025-12-06 | 2025-12-12 | PG-12496 FF | 189.83d | 0d | Morph (Wooden Doors) [330000 h] | 330,000 | 15283 |
|  | 1.3.1.3.4.25 | **Floor 22** |  | 2025-11-05 | 2026-01-17 |  |  |  |  |  |  |
|  | 1.3.1.3.4.25.1 | **Ceiling Finishing works - Civil** |  | 2025-11-13 | 2026-01-17 |  |  |  |  |  |  |
| PG-12502 |  | Gypsum Plastering | 6d | 2025-11-13 | 2025-11-20 | PG-12117 | 226.33d | 0d | L&T [195000 h] | 195,000 | 15286 |
| PG-12503 |  | Cornice fixing | 4d | 2025-11-29 | 2025-12-04 | PG-12114 FF+6d | 226.33d | 11.83d | Interiors (False celing) [62000 h] | 62,000 | 15287 |
| PG-12505 |  | Toilet False ceiling | 4d | 2025-12-08 | 2025-12-12 | PG-12513 FF+5d | 204.83d | 26d | Interiors (False celing) [86000 h] | 86,000 | 15289 |
| PG-12504 |  | Painting Works - Putty, Primer and 1st | 6d | 2025-12-18 | 2025-12-25 | PG-12503, PG-12508 | 214.5d | 0d | Surfa Coats (Painting) [130000 h] | 130,000 | 15288 |
| PG-12506 |  | Final Coat Painting | 19.5d | 2025-12-25 | 2026-01-17 | PG-12504, PG-12515 | 214.5d | 35.67d | Surfa Coats (Painting) [125000 h] | 125,000 | 15290 |

| ID | WBS | Activity | Duration | Start | Finish | Predecessors | Planned start | Planned finish | Total float | Free float | Resources | Cost | MSP Activity ID |
| --- | --- | --- | --- | --- | --- | --- | --- | --- | --- | --- | --- | --- | --- |
|  | 1.3.1.3.4.25.2 | **Wall Finishing works - Civil** |  | 2025-11-05 | 2026-01-17 |  |  |  |  |  |  |  |  |
| PG-12507 |  | Balcony Railing Fixing works | 4d | 2025-11-05 | 2025-11-08 | PG-11888 |  |  | 207.67d | 7d | L&T [165000 h] | 165,000 | 15292 |
| PG-12509 |  | Dadoing - Wet area | 5d | 2025-11-25 | 2025-12-01 | PG-12112 |  |  | 178.83d | 0d | L&T [168000 h] | 168,000 | 15294 |
| PG-12508 |  | UPVC Windows & Sliding doors | 5d | 2025-12-12 | 2025-12-18 | PG-12514 FF+5d |  |  | 178.83d | 0d | Fenesta (UPVC Windows) [430000 h] | 430,000 | 15293 |
| PG-12510 |  | Painting Works - Putty, Primer and 1st | 6d | 2025-12-18 | 2025-12-25 | PG-12508 |  |  | 178.83d | 0d | Surfa Coats (Painting) [188000 h] | 188,000 | 15295 |
| PG-12511 |  | Final Coat Painting | 19.5d | 2025-12-25 | 2026-01-17 | PG-12515 |  |  | 178.83d | 0d | Surfa Coats (Painting) [172000 h] | 172,000 | 15296 |
|  | 1.3.1.3.4.25.3 | **Floor Finishing Works - Civil** |  | 2025-11-05 | 2025-12-25 |  |  |  |  |  |  |  |  |
| PG-12512 |  | Waterproofing for sunken areas | 3d | 2025-11-05 | 2025-11-07 | PG-11888 |  |  | 198.5d | 19.67d | L&T [64000 h] | 64,000 | 15298 |
| PG-12513 |  | Floor Tiling - Wet area | 5d | 2025-12-01 | 2025-12-06 | PG-12512, PG-12509 |  |  | 178.83d | 0d | L&T [126000 h] | 126,000 | 15299 |
| PG-12514 |  | Floor Tiling - Dry area | 5d | 2025-12-06 | 2025-12-12 | PG-12513 FF+5d |  |  | 178.83d | 0d | L&T [335000 h] | 335,000 | 15300 |
| PG-12515 |  | Wooden doors | 5d | 2025-12-19 | 2025-12-25 | PG-12510 FF |  |  | 178.83d | 0d | Morph (Wooden Doors) [330000 h] | 330,000 | 15301 |
|  | 1.3.1.3.4.26 | **Floor 23** |  | 2025-11-17 | 2026-01-30 |  |  |  |  |  |  |  |  |
|  | 1.3.1.3.4.26.1 | **Ceiling Finishing works - Civil** |  | 2025-11-25 | 2026-01-30 |  |  |  |  |  |  |  |  |
| PG-12516 |  | Gypsum Plastering | 6d | 2025-11-25 | 2025-12-02 | PG-12126 |  |  | 215.67d | 0d | L&T [195000 h] | 195,000 | 15304 |
| PG-12517 |  | Cornice fixing | 4d | 2025-12-11 | 2025-12-16 | PG-12123 FF+6d |  |  | 215.67d | 11.83d | Interiors (False celing) [62000 h] | 62,000 | 15305 |
| PG-12519 |  | Toilet False ceiling | 4d | 2025-12-19 | 2025-12-24 | PG-12527 FF+5d |  |  | 196.17d | 28d | Interiors (False celing) [86000 h] | 86,000 | 15307 |
| PG-12518 |  | Painting Works - Putty, Primer and 1st | 6d | 2025-12-30 | 2026-01-06 | PG-12517, PG-12522 |  |  | 203.83d | 0d | Surfa Coats (Painting) [130000 h] | 130,000 | 15306 |
| PG-12520 |  | Final Coat Painting | 19.5d | 2026-01-06 | 2026-01-30 | PG-12518, PG-12529 | 2026-01-06 | 2026-01-29 | 203.83d | 35.67d | Surfa Coats (Painting) [125000 h] | 125,000 | 15308 |
|  | 1.3.1.3.4.26.2 | **Wall Finishing works - Civil** |  | 2025-11-17 | 2026-01-30 |  |  |  |  |  |  |  |  |
| PG-12521 |  | Balcony Railing Fixing works | 4d | 2025-11-17 | 2025-11-21 | PG-11893 |  |  | 195.83d | 27.67d | L&T [165000 h] | 165,000 | 15310 |
| PG-12523 |  | Dadoing - Wet area | 5d | 2025-12-06 | 2025-12-12 | PG-12121 |  |  | 168.17d | 0d | L&T [168000 h] | 168,000 | 15312 |
| PG-12522 |  | UPVC Windows & Sliding doors | 5d | 2025-12-24 | 2025-12-30 | PG-12521, PG-12528 FF+5d |  |  | 168.17d | 0d | Fenesta (UPVC Windows) [430000 h] | 430,000 | 15311 |
| PG-12524 |  | Painting Works - Putty, Primer and 1st | 6d | 2025-12-30 | 2026-01-06 | PG-12522 |  |  | 168.17d | 0d | Surfa Coats (Painting) [188000 h] | 188,000 | 15313 |
| PG-12525 |  | Final Coat Painting | 19.5d | 2026-01-06 | 2026-01-30 | PG-12529 | 2026-01-06 | 2026-01-29 | 168.17d | 0d | Surfa Coats (Painting) [172000 h] | 172,000 | 15314 |

| ID | WBS | Activity | Duration | Start | Finish | Predecessors | Total float | Free float | Resources | Cost | MSP Activity ID |
| --- | --- | --- | --- | --- | --- | --- | --- | --- | --- | --- | --- |
|  | 1.3.1.3.4.26.3 | **Floor Finishing Works - Civil** |  | 2025-11-17 | 2026-01-06 |  |  |  |  |  |  |
| PG-12526 |  | Waterproofing for sunken areas | 3d | 2025-11-17 | 2025-11-20 | PG-11893 | 186.83d | 18.67d | L&T [64000 h] | 64,000 | 15316 |
| PG-12527 |  | Floor Tiling - Wet area | 5d | 2025-12-12 | 2025-12-18 | PG-12526, PG-12523 | 168.17d | 0d | L&T [126000 h] | 126,000 | 15317 |
| PG-12528 |  | Floor Tiling - Dry area | 5d | 2025-12-18 | 2025-12-24 | PG-12527 FF+5d | 168.17d | 0d | L&T [335000 h] | 335,000 | 15318 |
| PG-12529 |  | Wooden doors | 5d | 2025-12-31 | 2026-01-06 | PG-12524 FF | 168.17d | 0d | Morph (Wooden Doors) [330000 h] | 330,000 | 15319 |
|  | 1.3.1.3.4.27 | **Floor 24** |  | 2025-11-29 | 2026-02-13 |  |  |  |  |  |  |
|  | 1.3.1.3.4.27.1 | **Ceiling Finishing works - Civil** |  | 2025-12-09 | 2026-02-13 |  |  |  |  |  |  |
| PG-12530 |  | Gypsum Plastering | 6d | 2025-12-09 | 2025-12-16 | PG-12135 | 204.33d | 0d | L&T [195000 h] | 195,000 | 15322 |
| PG-12531 |  | Cornice fixing | 4d | 2025-12-25 | 2025-12-30 | PG-12132 FF+6d | 204.33d | 11.83d | Interiors (False celing) [62000 h] | 62,000 | 15323 |
| PG-12533 |  | Toilet False ceiling | 4d | 2026-01-02 | 2026-01-07 | PG-12541 FF+5d | 183.83d | 27d | Interiors (False celing) [86000 h] | 86,000 | 15325 |
| PG-12532 |  | Painting Works - Putty, Primer and 1st | 6d | 2026-01-13 | 2026-01-20 | PG-12531, PG-12536 | 192.5d | 0d | Surfa Coats (Painting) [130000 h] | 130,000 | 15324 |
| PG-12534 |  | Final Coat Painting | 19.67d | 2026-01-20 | 2026-02-13 | PG-12532, PG-12543 | 192.5d | 35.67d | Surfa Coats (Painting) [125000 h] | 125,000 | 15326 |
|  | 1.3.1.3.4.27.2 | **Wall Finishing works - Civil** |  | 2025-11-29 | 2026-02-13 |  |  |  |  |  |  |
| PG-12535 |  | Balcony Railing Fixing works | 4d | 2025-11-29 | 2025-12-04 | PG-11898 | 185.5d | 28.67d | L&T [165000 h] | 165,000 | 15328 |
| PG-12537 |  | Dadoing - Wet area | 5d | 2025-12-20 | 2025-12-26 | PG-12130 | 156.83d | 0d | L&T [168000 h] | 168,000 | 15330 |
| PG-12536 |  | UPVC Windows & Sliding doors | 5d | 2026-01-07 | 2026-01-13 | PG-12535, PG-12542 FF+5d | 156.83d | 0d | Fenesta (UPVC Windows) [430000 h] | 430,000 | 15329 |
| PG-12538 |  | Painting Works - Putty, Primer and 1st | 6d | 2026-01-13 | 2026-01-20 | PG-12536 | 156.83d | 0d | Surfa Coats (Painting) [188000 h] | 188,000 | 15331 |
| PG-12539 |  | Final Coat Painting | 19.67d | 2026-01-20 | 2026-02-13 | PG-12543 | 156.83d | 0d | Surfa Coats (Painting) [172000 h] | 172,000 | 15332 |
|  | 1.3.1.3.4.27.3 | **Floor Finishing Works - Civil** |  | 2025-11-29 | 2026-01-20 |  |  |  |  |  |  |
| PG-12540 |  | Waterproofing for sunken areas | 3d | 2025-11-29 | 2025-12-03 | PG-11898 | 176.5d | 19.67d | L&T [64000 h] | 64,000 | 15334 |
| PG-12541 |  | Floor Tiling - Wet area | 5d | 2025-12-26 | 2026-01-01 | PG-12540, PG-12537 | 156.83d | 0d | L&T [126000 h] | 126,000 | 15335 |
| PG-12542 |  | Floor Tiling - Dry area | 5d | 2026-01-01 | 2026-01-07 | PG-12541 FF+5d | 156.83d | 0d | L&T [335000 h] | 335,000 | 15336 |
| PG-12543 |  | Wooden doors | 5d | 2026-01-14 | 2026-01-20 | PG-12538 FF | 156.83d | 0d | Morph (Wooden Doors) [330000 h] | 330,000 | 15337 |
|  | 1.3.1.3.4.28 | **Floor 25** |  | 2025-12-22 | 2026-03-06 |  |  |  |  |  |  |
|  | 1.3.1.3.4.28.1 | **Ceiling Finishing works - Civil** |  | 2025-12-31 | 2026-03-06 |  |  |  |  |  |  |
| PG-12544 |  | Gypsum Plastering | 6d | 2025-12-31 | 2026-01-07 | PG-12144 | 100.33d | 0d | L&T [195000 h] | 195,000 | 15340 |
| PG-12545 |  | Cornice fixing | 3.67d | 2026-01-16 | 2026-01-21 | PG-12141 FF+6d | 100.33d | 0d | Interiors (False celing) [62000 h] | 62,000 | 15341 |
| PG-12547 |  | Toilet False ceiling | 4d | 2026-01-23 | 2026-01-29 | PG-12555 FF+5d | 165.33d | 27.67d | Interiors (False celing) [86000 h] | 86,000 | 15343 |
| PG-12546 |  | Painting Works - Putty, Primer and 1st | 6d | 2026-02-04 | 2026-02-11 | PG-12545, PG-12550 | 89.17d | 0d | Surfa Coats (Painting) [130000 h] | 130,000 | 15342 |
| PG-12548 |  | Final Coat Painting | 20d | 2026-02-11 | 2026-03-06 | PG-12546, PG-12557 | 173.33d | 35.67d | Surfa Coats (Painting) [125000 h] | 125,000 | 15344 |

| ID | WBS | Activity | Duration | Start | Finish | Predecessors | Total float | Free float | Resources | Cost | MSP Activity ID |
| --- | --- | --- | --- | --- | --- | --- | --- | --- | --- | --- | --- |
|  | 1.3.1.3.4.28.2 | **Wall Finishing works - Civil** |  | 2025-12-22 | 2026-03-06 |  |  |  |  |  |  |
| PG-12549 |  | Balcony Railing Fixing works | 4d | 2025-12-22 | 2025-12-26 | PG-12129 FS+7d | 117d | 27.83d | L&T [165000 h] | 165,000 | 15346 |
| PG-12551 |  | Dadoing - Wet area | 5d | 2026-01-10 | 2026-01-16 | PG-12139 | 89.17d | 0d | L&T [168000 h] | 168,000 | 15348 |
| PG-12550 |  | UPVC Windows & Sliding doors | 5d | 2026-01-29 | 2026-02-04 | PG-12549, PG-12556 FF+5d | 89.17d | 0d | Fenesta (UPVC Windows) [430000 h] | 430,000 | 15347 |
| PG-12552 |  | Painting Works - Putty, Primer and 1st | 6d | 2026-02-04 | 2026-02-11 | PG-12550 | 137.67d | 0d | Surfa Coats (Painting) [188000 h] | 188,000 | 15349 |
| PG-12553 |  | Final Coat Painting | 20d | 2026-02-11 | 2026-03-06 | PG-12557 | 137.67d | 0d | Surfa Coats (Painting) [172000 h] | 172,000 | 15350 |
|  | 1.3.1.3.4.28.3 | **Floor Finishing Works - Civil** |  | 2025-12-22 | 2026-02-11 |  |  |  |  |  |  |
| PG-12554 |  | Waterproofing for sunken areas | 3d | 2025-12-22 | 2025-12-25 | PG-12129 FS+7d | 108d | 18.83d | L&T [64000 h] | 64,000 | 15352 |
| PG-12555 |  | Floor Tiling - Wet area | 5d | 2026-01-16 | 2026-01-22 | PG-12554, PG-12551 | 89.17d | 0d | L&T [126000 h] | 126,000 | 15353 |
| PG-12556 |  | Floor Tiling - Dry area | 5d | 2026-01-22 | 2026-01-29 | PG-12555 FF+5d | 89.17d | 0d | L&T [335000 h] | 335,000 | 15354 |
| PG-12557 |  | Wooden doors | 5d | 2026-02-05 | 2026-02-11 | PG-12552 FF | 137.67d | 0d | Morph (Wooden Doors) [330000 h] | 330,000 | 15355 |
|  | 1.3.1.3.4.29 | **Floor 26** |  | 2026-01-12 | 2026-03-28 |  |  |  |  |  |  |
|  | 1.3.1.3.4.29.1 | **Ceiling Finishing works - Civil** |  | 2026-01-21 | 2026-03-28 |  |  |  |  |  |  |
| PG-12558 |  | Gypsum Plastering | 6d | 2026-01-21 | 2026-01-28 | PG-12153 | 167.5d | 0d | L&T [195000 h] | 195,000 | 15358 |
| PG-12559 |  | Cornice fixing | 3.67d | 2026-02-07 | 2026-02-11 | PG-12150 FF+6d | 167.5d | 12.17d | Interiors (False celing) [62000 h] | 62,000 | 15359 |
| PG-12561 |  | Toilet False ceiling | 4d | 2026-02-16 | 2026-02-20 | PG-12569 FF+5d | 146.33d | 28d | Interiors (False celing) [86000 h] | 86,000 | 15361 |
| PG-12560 |  | Painting Works - Putty, Primer and 1st | 6d | 2026-02-26 | 2026-03-05 | PG-12559, PG-12564 | 155.33d | 0d | Surfa Coats (Painting) [130000 h] | 130,000 | 15360 |
| PG-12562 |  | Final Coat Painting | 20d | 2026-03-05 | 2026-03-28 | PG-12560, PG-12571 | 155.33d | 37d | Surfa Coats (Painting) [125000 h] | 125,000 | 15362 |
|  | 1.3.1.3.4.29.2 | **Wall Finishing works - Civil** |  | 2026-01-12 | 2026-03-27 |  |  |  |  |  |  |
| PG-12563 |  | Balcony Railing Fixing works | 4d | 2026-01-12 | 2026-01-16 | PG-12138 FS+7d | 147.17d | 28.83d | L&T [165000 h] | 165,000 | 15364 |
| PG-12565 |  | Dadoing - Wet area | 5d | 2026-02-03 | 2026-02-09 | PG-12148 | 118.33d | 0d | L&T [168000 h] | 168,000 | 15366 |
| PG-12564 |  | UPVC Windows & Sliding doors | 5d | 2026-02-20 | 2026-02-26 | PG-12563, PG-12570 FF+5d | 118.33d | 0d | Fenesta (UPVC Windows) [430000 h] | 430,000 | 15365 |
| PG-12566 |  | Painting Works - Putty, Primer and 1st | 6d | 2026-02-26 | 2026-03-05 | PG-12564 | 118.33d | 0d | Surfa Coats (Painting) [188000 h] | 188,000 | 15367 |
| PG-12567 |  | Final Coat Painting | 19.33d | 2026-03-05 | 2026-03-27 | PG-12571 | 118.33d | 0d | Surfa Coats (Painting) [172000 h] | 172,000 | 15368 |

| ID | WBS | Activity | Duration | Start | Finish | Predecessors | Total float | Free float | Resources | Cost | MSP Activity ID |
| --- | --- | --- | --- | --- | --- | --- | --- | --- | --- | --- | --- |
|  | 1.3.1.3.4.29.3 | **Floor Finishing Works - Civil** |  | 2026-01-12 | 2026-03-05 |  |  |  |  |  |  |
| PG-12568 |  | Waterproofing for sunken areas | 3d | 2026-01-12 | 2026-01-15 | PG-12138 FS+7d | 138.17d | 19.83d | L&T [64000 h] | 64,000 | 15370 |
| PG-12569 |  | Floor Tiling - Wet area | 5d | 2026-02-09 | 2026-02-14 | PG-12568, PG-12565 | 118.33d | 0d | L&T [126000 h] | 126,000 | 15371 |
| PG-12570 |  | Floor Tiling - Dry area | 5d | 2026-02-14 | 2026-02-20 | PG-12569 FF+5d | 118.33d | 0d | L&T [335000 h] | 335,000 | 15372 |
| PG-12571 |  | Wooden doors | 5d | 2026-02-27 | 2026-03-05 | PG-12566 FF | 118.33d | 0d | Morph (Wooden Doors) [330000 h] | 330,000 | 15373 |
|  | 1.3.1.3.4.30 | **Floor 27** |  | 2026-02-04 | 2026-04-18 |  |  |  |  |  |  |
|  | 1.3.1.3.4.30.1 | **Ceiling Finishing works - Civil** |  | 2026-02-12 | 2026-04-18 |  |  |  |  |  |  |
| PG-12572 |  | Gypsum Plastering | 6d | 2026-02-12 | 2026-02-19 | PG-12162 | 149.17d | 0d | L&T [195000 h] | 195,000 | 15419 |
| PG-12573 |  | Cornice fixing | 4d | 2026-02-28 | 2026-03-05 | PG-12159 FF+6d | 149.17d | 12d | Interiors (False celing) [62000 h] | 62,000 | 15420 |
| PG-12575 |  | Toilet False ceiling | 4d | 2026-03-09 | 2026-03-13 | PG-12583 FF+5d | 126.5d | 26d | Interiors (False celing) [86000 h] | 86,000 | 15422 |
| PG-12574 |  | Painting Works - Putty, Primer and 1st | 6d | 2026-03-19 | 2026-03-26 | PG-12573, PG-12578 | 137.17d | 0d | Surfa Coats (Painting) [130000 h] | 130,000 | 15421 |
| PG-12576 |  | Final Coat Painting | 19.67d | 2026-03-26 | 2026-04-18 | PG-12574, PG-12585 | 137.17d | 36.67d | Surfa Coats (Painting) [125000 h] | 125,000 | 15423 |
|  | 1.3.1.3.4.30.2 | **Wall Finishing works - Civil** |  | 2026-02-04 | 2026-04-18 |  |  |  |  |  |  |
| PG-12577 |  | Balcony Railing Fixing works | 4d | 2026-02-04 | 2026-02-09 | PG-12147 FS+7d | 129.17d | 28.67d | L&T [165000 h] | 165,000 | 15425 |
| PG-12579 |  | Dadoing - Wet area | 5d | 2026-02-24 | 2026-03-02 | PG-12157 | 100.5d | 0d | L&T [168000 h] | 168,000 | 15427 |
| PG-12578 |  | UPVC Windows & Sliding doors | 5d | 2026-03-13 | 2026-03-19 | PG-12577, PG-12584 FF+5d | 100.5d | 0d | Fenesta (UPVC Windows) [430000 h] | 430,000 | 15426 |
| PG-12580 |  | Painting Works - Putty, Primer and 1st | 6d | 2026-03-19 | 2026-03-26 | PG-12578 | 100.5d | 0d | Surfa Coats (Painting) [188000 h] | 188,000 | 15428 |
| PG-12581 |  | Final Coat Painting | 19.67d | 2026-03-26 | 2026-04-18 | PG-12585 | 100.5d | 0d | Surfa Coats (Painting) [172000 h] | 172,000 | 15429 |
|  | 1.3.1.3.4.30.3 | **Floor Finishing Works - Civil** |  | 2026-02-04 | 2026-03-26 |  |  |  |  |  |  |
| PG-12582 |  | Waterproofing for sunken areas | 3d | 2026-02-04 | 2026-02-07 | PG-12147 FS+7d | 120.17d | 19.67d | L&T [64000 h] | 64,000 | 15431 |
| PG-12583 |  | Floor Tiling - Wet area | 5d | 2026-03-02 | 2026-03-07 | PG-12582, PG-12579 | 100.5d | 0d | L&T [126000 h] | 126,000 | 15432 |
| PG-12584 |  | Floor Tiling - Dry area | 5d | 2026-03-07 | 2026-03-13 | PG-12583 FF+5d | 100.5d | 0d | L&T [335000 h] | 335,000 | 15433 |
| PG-12585 |  | Wooden doors | 5d | 2026-03-20 | 2026-03-26 | PG-12580 FF | 100.5d | 0d | Morph (Wooden Doors) [330000 h] | 330,000 | 15434 |
|  | 1.3.1.3.4.31 | **Floor 28** |  | 2026-02-25 | 2026-05-11 |  |  |  |  |  |  |
|  | 1.3.1.3.4.31.1 | **Ceiling Finishing works - Civil** |  | 2026-03-06 | 2026-05-11 |  |  |  |  |  |  |
| PG-12586 |  | Gypsum Plastering | 6d | 2026-03-06 | 2026-03-13 | PG-12171 | 130.17d | 0d | L&T [195000 h] | 195,000 | 15438 |
| PG-12587 |  | Cornice fixing | 3.67d | 2026-03-23 | 2026-03-27 | PG-12168 FF+6d | 130.17d | 12d | Interiors (False celing) [62000 h] | 62,000 | 15439 |
| PG-12589 |  | Toilet False ceiling | 4d | 2026-03-31 | 2026-04-04 | PG-12597 FF+5d | 109.83d | 27.33d | Interiors (False celing) [86000 h] | 86,000 | 15441 |
| PG-12588 |  | Painting Works - Putty, Primer and 1st | 6d | 2026-04-10 | 2026-04-17 | PG-12587, PG-12592 | 118.17d | 0d | Surfa Coats (Painting) [130000 h] | 130,000 | 15440 |
| PG-12590 |  | Final Coat Painting | 20d | 2026-04-17 | 2026-05-11 | PG-12588, PG-12599 | 118.17d | 35.67d | Surfa Coats (Painting) [125000 h] | 125,000 | 15442 |

| ID | WBS | Activity | Duration | Start | Finish | Predecessors | Total float | Free float | Resources | Cost | MSP Activity ID |
| --- | --- | --- | --- | --- | --- | --- | --- | --- | --- | --- | --- |
|  | 1.3.1.3.4.31.2 | **Wall Finishing works - Civil** |  | 2026-02-25 | 2026-05-11 |  |  |  |  |  |  |
| PG-12591 |  | Balcony Railing Fixing works | 4d | 2026-02-25 | 2026-03-02 | PG-12156 FS+7d | 111.17d | 28.67d | L&T [165000 h] | 165,000 | 15444 |
| PG-12593 |  | Dadoing - Wet area | 5d | 2026-03-18 | 2026-03-24 | PG-12166 | 82.5d | 0d | L&T [168000 h] | 168,000 | 15446 |
| PG-12592 |  | UPVC Windows & Sliding doors | 5d | 2026-04-04 | 2026-04-10 | PG-12591, PG-12598 FF+5d | 82.5d | 0d | Fenesta (UPVC Windows) [430000 h] | 430,000 | 15445 |
| PG-12594 |  | Painting Works - Putty, Primer and 1st | 6d | 2026-04-10 | 2026-04-17 | PG-12592 | 82.5d | 0d | Surfa Coats (Painting) [188000 h] | 188,000 | 15447 |
| PG-12595 |  | Final Coat Painting | 20d | 2026-04-17 | 2026-05-11 | PG-12599 | 82.5d | 0d | Surfa Coats (Painting) [172000 h] | 172,000 | 15448 |
|  | 1.3.1.3.4.31.3 | **Floor Finishing Works - Civil** |  | 2026-02-25 | 2026-04-17 |  |  |  |  |  |  |
| PG-12596 |  | Waterproofing for sunken areas | 3d | 2026-02-25 | 2026-02-28 | PG-12156 FS+7d | 102.17d | 19.67d | L&T [64000 h] | 64,000 | 15450 |
| PG-12597 |  | Floor Tiling - Wet area | 5d | 2026-03-24 | 2026-03-30 | PG-12596, PG-12593 | 82.5d | 0d | L&T [126000 h] | 126,000 | 15451 |
| PG-12598 |  | Floor Tiling - Dry area | 5d | 2026-03-30 | 2026-04-04 | PG-12597 FF+5d | 82.5d | 0d | L&T [335000 h] | 335,000 | 15452 |
| PG-12599 |  | Wooden doors | 5d | 2026-04-11 | 2026-04-17 | PG-12594 FF | 82.5d | 0d | Morph (Wooden Doors) [330000 h] | 330,000 | 15453 |
|  | 1.3.1.3.4.32 | **Floor 29** |  | 2026-03-19 | 2026-06-01 |  |  |  |  |  |  |
|  | 1.3.1.3.4.32.1 | **Ceiling Finishing works - Civil** |  | 2026-03-28 | 2026-06-01 |  |  |  |  |  |  |
| PG-12600 |  | Gypsum Plastering | 6d | 2026-03-28 | 2026-04-04 | PG-12180 | 105.83d | 0d | L&T [195000 h] | 195,000 | 15456 |
| PG-12601 |  | Cornice fixing | 3.67d | 2026-04-21 | 2026-04-25 | PG-12177 FF+12d | 105.83d | 6d | Interiors (False celing) [62000 h] | 62,000 | 15457 |
| PG-12603 |  | Toilet False ceiling | 4d | 2026-04-22 | 2026-04-27 | PG-12611 FF+5d | 91.17d | 27d | Interiors (False celing) [86000 h] | 86,000 | 15459 |
| PG-12602 |  | Painting Works - Putty, Primer and 1st | 6d | 2026-05-02 | 2026-05-09 | PG-12601, PG-12606 | 99.83d | 0d | Surfa Coats (Painting) [130000 h] | 130,000 | 15458 |
| PG-12604 |  | Final Coat Painting | 19.67d | 2026-05-09 | 2026-06-01 | PG-12602, PG-12613 | 99.83d | 35.67d | Surfa Coats (Painting) [125000 h] | 125,000 | 15460 |
|  | 1.3.1.3.4.32.2 | **Wall Finishing works - Civil** |  | 2026-03-19 | 2026-06-01 |  |  |  |  |  |  |
| PG-12605 |  | Balcony Railing Fixing works | 4d | 2026-03-19 | 2026-03-24 | PG-12165 FS+7d | 92.83d | 28.67d | L&T [165000 h] | 165,000 | 15462 |
| PG-12607 |  | Dadoing - Wet area | 5d | 2026-04-09 | 2026-04-15 | PG-12175 | 64.17d | 0d | L&T [168000 h] | 168,000 | 15464 |
| PG-12606 |  | UPVC Windows & Sliding doors | 5d | 2026-04-27 | 2026-05-02 | PG-12605, PG-12612 FF+5d | 64.17d | 0d | Fenesta (UPVC Windows) [430000 h] | 430,000 | 15463 |
| PG-12608 |  | Painting Works - Putty, Primer and 1st | 6d | 2026-05-02 | 2026-05-09 | PG-12606 | 64.17d | 0d | Surfa Coats (Painting) [188000 h] | 188,000 | 15465 |
| PG-12609 |  | Final Coat Painting | 19.67d | 2026-05-09 | 2026-06-01 | PG-12613 | 64.17d | 0d | Surfa Coats (Painting) [172000 h] | 172,000 | 15466 |

| ID | WBS | Activity | Duration | Start | Finish | Predecessors | Total float | Free float | Resources | Cost | MSP Activity ID |
| --- | --- | --- | --- | --- | --- | --- | --- | --- | --- | --- | --- |
|  | 1.3.1.3.4.32.3 | **Floor Finishing Works - Civil** |  | 2026-03-19 | 2026-05-09 |  |  |  |  |  |  |
| PG-12610 |  | Waterproofing for sunken areas | 3d | 2026-03-19 | 2026-03-23 | PG-12165 FS+7d | 83.83d | 19.67d | L&T [64000 h] | 64,000 | 15468 |
| PG-12611 |  | Floor Tiling - Wet area | 5d | 2026-04-15 | 2026-04-21 | PG-12610, PG-12607 | 64.17d | 0d | L&T [126000 h] | 126,000 | 15469 |
| PG-12612 |  | Floor Tiling - Dry area | 5d | 2026-04-21 | 2026-04-27 | PG-12611 FF+5d | 64.17d | 0d | L&T [335000 h] | 335,000 | 15470 |
| PG-12613 |  | Wooden doors | 5d | 2026-05-04 | 2026-05-09 | PG-12608 FF | 64.17d | 0d | Morph (Wooden Doors) [330000 h] | 330,000 | 15471 |
|  | 1.3.1.3.4.33 | **External Finishing works** |  | 2025-12-27 | 2026-04-24 |  |  |  |  |  |  |
| PG-12614 |  | External walls tie rod hole plugging with GP2 | 30d | 2025-12-27 | 2026-02-02 | PG-11904 | 58.83d | 0d | L&T [1200000 h] | 1,200,000 | 38114 |
| PG-12615 |  | External walls grinding works | 40d | 2026-01-20 | 2026-03-09 | PG-12614 FF+30d | 58.83d | 0d | L&T [1600000 h] | 1,600,000 | 38115 |
| PG-12616 |  | Texture and painting works | 45d | 2026-03-03 | 2026-04-24 | PG-12615 FF+40d | 58.83d | 0d | Surfa Coats (Painting) [1170000 h] | 1,170,000 | 38116 |
|  | 1.3.1.3.5 | **Corridor & Fire Staircase Finishing works** |  | 2026-03-05 | 2026-07-01 |  |  |  |  |  |  |
|  | 1.3.1.3.5.1 | **Ceiling Finishing works - Civil** |  | 2026-03-05 | 2026-05-27 |  |  |  |  |  |  |
| PG-12617 |  | Gypsum Plastering | 6d | 2026-03-05 | 2026-03-12 | PG-12144 FF+60d | 0d |  | L&T [195000 h] | 195,000 | 38011 |
| PG-12618 |  | Cornice fixing | 4d | 2026-03-11 | 2026-03-16 | PG-12545 FF+45d | 100.33d | 11.17d | Interiors (False celing) [62000 h] | 62,000 | 38012 |
| PG-12619 |  | Painting Works - Putty, Primer and 1st | 6d | 2026-03-28 | 2026-04-04 | PG-12546 FF+45d, PG-12618 | 89.17d | 0d | Surfa Coats (Painting) [130000 h] | 130,000 | 38013 |
| PG-12620 |  | False ceiling | 30d | 2026-04-04 | 2026-05-09 | PG-12619 | 89.17d | 0d | Interiors (False celing) [660000 h] | 660,000 | 38014 |
| PG-12621 |  | Final Coat Painting | 30.67d | 2026-04-21 | 2026-05-27 | PG-12620 FF+15d | 119.17d |  | Surfa Coats (Painting) [125000 h] | 125,000 | 38015 |
|  | 1.3.1.3.5.2 | **Wall Finishing works - Civil** |  | 2026-04-09 | 2026-07-01 |  |  |  |  |  |  |
| PG-12622 |  | UPVC Windows & Sliding doors | 5d | 2026-04-09 | 2026-04-15 | PG-12550 FF+60d | 95.17d | 0d | Fenesta (UPVC Windows) [430000 h] | 430,000 | 38017 |
| PG-12623 |  | Wall Cladding Upto 1.2 Mts | 20d | 2026-04-27 | 2026-05-20 | PG-12622 FF+30d | 95.17d | 6d | L&T [800000 h] | 800,000 | 38018 |
| PG-12624 |  | Painting Works - Texture & one coat Painting works | 15d | 2026-05-27 | 2026-06-13 | PG-12623, PG-12620 FF+30d | 89.17d | 0d | Surfa Coats (Painting) [390000 h] | 390,000 | 38019 |
| PG-12625 |  | Final Coat Painting | 19.67d | 2026-06-08 | 2026-07-01 | PG-12624 FF+15d, PG-12627 | 89.17d | 0d | Surfa Coats (Painting) [172000 h] | 172,000 | 38020 |
|  | 1.3.1.3.5.3 | **Floor Finishing Works - Civil** |  | 2026-03-12 | 2026-04-10 |  |  |  |  |  |  |
| PG-12626 |  | Fire Doors installation | 10d | 2026-03-12 | 2026-03-24 | PG-12617 | 139.67d | 0d | Shakthi Hormann (Fire Doors) [500000 h] | 500,000 | 38022 |
| PG-12627 |  | Vitrified tile flooring works | 15d | 2026-03-24 | 2026-04-10 | PG-12626 | 139.67d | 50.5d | L&T [600000 h] | 600,000 | 38023 |

| ID | WBS | Activity | Duration | Start | Finish | Predecessors | Total float | Free float | Resources | Cost | MSP Activity ID |
| --- | --- | --- | --- | --- | --- | --- | --- | --- | --- | --- | --- |
|  | 1.3.1.3.5.4 | **Fire Staircase Finishing Works - Civil** |  | 2026-03-12 | 2026-07-01 |  |  |  |  |  |  |
| PG-12628 |  | Staircase Railing Fixing works | 20d | 2026-03-12 | 2026-04-04 | PG-12617 | 0d |  | L&T [800000 h] | 800,000 | 42542 |
| PG-12629 |  | Wall and ceiling Gypsum plastering | 31.5d | 2026-03-21 | 2026-04-28 | PG-12628 FF+20d | 0d |  | L&T [1260000 h] | 1,260,000 | 42543 |
| PG-12630 |  | Staircase Flooring and Skirting Works | 39.5d | 2026-04-10 | 2026-05-27 | PG-12629 FF+25d | 0d |  | L&T [1580000 h] | 1,580,000 | 42544 |
| PG-12631 |  | UPVC Window fixing works | 15.5d | 2026-05-26 | 2026-06-13 | PG-12630 FF+15d | 0d |  | Fenesta (UPVC Windows) [930000 h] | 930,000 | 42545 |
| PG-12632 |  | Staircase Painting works | 20d | 2026-06-08 | 2026-07-01 | PG-12631 FF+15d | 0d |  | Surfa Coats (Painting) [520000 h] | 520,000 | 42546 |
|  | 1.3.1.3.6 | **MEP Civil Works (Shaft, Lift Shaft & OHT )** |  | 2025-12-13 | 2026-05-13 |  |  |  |  |  |  |
|  | 1.3.1.3.6.1 | **Lift Shaft Works** |  | 2025-12-13 | 2026-05-13 |  |  |  |  |  |  |
| PG-12633 |  | Tie rod hole packing | 8d | 2025-12-13 | 2025-12-23 | PG-11901 | 51.67d | 0d | L&T [320000 h] | 320,000 | 38026 |
| PG-12634 |  | Grinding works | 5d | 2025-12-23 | 2025-12-29 | PG-12633 | 51.67d | 0d | L&T [200000 h] | 200,000 | 38027 |
| PG-12635 |  | Lift pit water proofing works | 20.67d | 2025-12-29 | 2026-01-22 | PG-12634 | 51.67d | 0d | Otis (Lifts) [661000 h] | 661,000 | 38028 |
| PG-12636 |  | Shaft door opening finishing | 6.67d | 2026-01-22 | 2026-01-30 | PG-12635 | 51.67d | 0d | L&T [267000 h] | 267,000 | 38029 |
| PG-12637 |  | Painting works | 8d | 2026-01-30 | 2026-02-09 | PG-12636 | 51.67d | 0d | Surfa Coats (Painting) [256000 h] | 256,000 | 38030 |
| PG-12638 |  | Lift Wall Cladding Works | 15.67d | 2026-04-25 | 2026-05-13 | PG-12673 | 86d | 34.33d | Otis (Lifts) [501000 h] | 501,000 | 38031 |
|  | 1.3.1.3.6.2 | **Electrical Shaft works** |  | 2025-12-13 | 2026-01-15 |  |  |  |  |  |  |
| PG-12639 |  | Tie rod hole packing | 8d | 2025-12-13 | 2025-12-23 | PG-11901 | 103.33d | 0d | L&T [320000 h] | 320,000 | 38033 |
| PG-12640 |  | Grinding works | 5d | 2025-12-23 | 2025-12-29 | PG-12639 | 103.33d | 0d | L&T [200000 h] | 200,000 | 38034 |
| PG-12641 |  | Shaft door opening finishing | 6.67d | 2025-12-29 | 2026-01-06 | PG-12640 | 103.33d | 0d | L&T [267000 h] | 267,000 | 38035 |
| PG-12642 |  | Painting works | 8d | 2026-01-06 | 2026-01-15 | PG-12641 | 103.33d | 0d | Surfa Coats (Painting) [256000 h] | 256,000 | 38036 |
|  | 1.3.1.3.6.3 | **FPS Shaft works** |  | 2025-12-13 | 2026-01-15 |  |  |  |  |  |  |
| PG-12643 |  | Tie rod hole packing | 8d | 2025-12-13 | 2025-12-23 | PG-11901 | 181.5d | 0d | L&T [320000 h] | 320,000 | 38038 |
| PG-12644 |  | Grinding works | 5d | 2025-12-23 | 2025-12-29 | PG-12643 | 181.5d | 0d | L&T [200000 h] | 200,000 | 38039 |
| PG-12645 |  | Shaft door opening finishing | 6.67d | 2025-12-29 | 2026-01-06 | PG-12644 | 181.5d | 0d | L&T [267000 h] | 267,000 | 38040 |
| PG-12646 |  | Painting works | 8d | 2026-01-06 | 2026-01-15 | PG-12645 | 181.5d | 0d | Surfa Coats (Painting) [256000 h] | 256,000 | 38041 |

| ID | WBS | Activity | Duration | Start | Finish | Predecessors | Total float | Free float | Resources | Cost | MSP Activity ID |
| --- | --- | --- | --- | --- | --- | --- | --- | --- | --- | --- | --- |
|  | 1.3.1.3.6.4 | **PHE Shaft works** |  | 2025-12-13 | 2026-01-15 |  |  |  |  |  |  |
| PG-12647 |  | Tie rod hole packing | 8d | 2025-12-13 | 2025-12-23 | PG-11901 | 138.5d | 0d | L&T [320000 h] | 320,000 | 38043 |
| PG-12648 |  | Grinding works | 5d | 2025-12-23 | 2025-12-29 | PG-12647 | 138.5d | 0d | L&T [200000 h] | 200,000 | 38044 |
| PG-12649 |  | Shaft door opening finishing | 6.67d | 2025-12-29 | 2026-01-06 | PG-12648 | 138.5d | 0d | L&T [267000 h] | 267,000 | 38045 |
| PG-12650 |  | Painting works | 8d | 2026-01-06 | 2026-01-15 | PG-12649 | 138.5d | 0d | Surfa Coats (Painting) [256000 h] | 256,000 | 38046 |
|  | 1.3.1.3.6.5 | **Data & Communication Shaft** |  | 2025-12-13 | 2026-01-13 |  |  |  |  |  |  |
| PG-12651 |  | Tie rod hole packing | 8d | 2025-12-13 | 2025-12-23 | PG-11901 | 177.67d | 0d | L&T [320000 h] | 320,000 | 38048 |
| PG-12652 |  | Grinding works | 5d | 2025-12-23 | 2025-12-29 | PG-12651 | 177.67d | 0d | L&T [200000 h] | 200,000 | 38049 |
| PG-12653 |  | Shaft door opening finishing | 5d | 2025-12-29 | 2026-01-03 | PG-12652 | 177.67d | 0d | L&T [200000 h] | 200,000 | 38050 |
| PG-12654 |  | Painting works | 8d | 2026-01-03 | 2026-01-13 | PG-12653 | 177.67d | 0d | Surfa Coats (Painting) [256000 h] | 256,000 | 38051 |
|  | 1.3.1.3.6.6 | **OHT Works** |  | 2025-12-13 | 2026-02-02 |  |  |  |  |  |  |
| PG-12655 |  | Tank materials Supply & Shifting | 10d | 2025-12-13 | 2025-12-25 | PG-11901 | 145.5d | 0d | Santech (Plumbing) [320000 h] | 320,000 | 43237 |
| PG-12656 |  | Assembling OHT FRP Tank | 10d | 2025-12-25 | 2026-01-06 | PG-12655 | 145.5d | 0d | Santech (Plumbing) [320000 h] | 320,000 | 43238 |
| PG-12657 |  | Installation of OHT Tank | 15d | 2026-01-06 | 2026-01-23 | PG-12656 | 145.5d | 0d | Santech (Plumbing) [480000 h] | 480,000 | 43239 |
| PG-12658 |  | Water tightness works and checking | 7d | 2026-01-23 | 2026-02-02 | PG-12657 | 145.5d | 7d | Santech (Plumbing) [224000 h] | 224,000 | 43240 |
|  | 1.3.1.3.7 | **MEP Shaft works** |  | 2026-01-13 | 2026-04-04 |  |  |  |  |  |  |
|  | 1.3.1.3.7.1 | **Electrical** |  | 2026-01-15 | 2026-02-25 |  |  |  |  |  |  |
| PG-12659 |  | Tray Works | 9.67d | 2026-01-15 | 2026-01-27 | PG-12642 | 103.33d | 0d | Elexir (Electrical) [309000 h] | 309,000 | 38054 |
| PG-12660 |  | Cable & Conducting works | 9.83d | 2026-01-27 | 2026-02-07 | PG-12659 | 103.33d | 0d | Elexir (Electrical) [315000 h] | 315,000 | 38055 |
| PG-12661 |  | Wiring/DB/connector box installation and termination works | 14.5d | 2026-02-07 | 2026-02-25 | PG-12660 | 103.33d | 0d | Elexir (Electrical) [464000 h] | 464,000 | 38056 |
|  | 1.3.1.3.7.2 | **FPS** |  | 2026-01-15 | 2026-02-25 |  |  |  |  |  |  |
| PG-12662 |  | Shaft MS Piping & fixtures installation | 19.83d | 2026-01-15 | 2026-02-07 | PG-12646 | 181.5d | 0d | Nexus (Fire) [635000 h] | 635,000 | 38058 |
| PG-12663 |  | Tray / cabling / conducting & wiring works | 14.33d | 2026-02-09 | 2026-02-25 | PG-12662 | 181.5d | 0d | Elexir (Electrical) [459000 h] | 459,000 | 38059 |
|  | 1.3.1.3.7.3 | **Data & Communication** |  | 2026-01-13 | 2026-03-03 |  |  |  |  |  |  |
| PG-12664 |  | Tray Works | 11.67d | 2026-01-13 | 2026-01-28 | PG-12654 | 177.67d | 0d | Elexir (Electrical) [373000 h] | 373,000 | 38061 |
| PG-12665 |  | Tray / cabling / conducting & wiring works | 14.67d | 2026-01-28 | 2026-02-13 | PG-12664 | 177.67d | 0d | Elexir (Electrical) [469000 h] | 469,000 | 38062 |
| PG-12666 |  | Wiring/DB/connector box installation and termination works | 14.5d | 2026-02-13 | 2026-03-03 | PG-12665 | 177.67d | 0d | Elexir (Electrical) [464000 h] | 464,000 | 38063 |

| ID | WBS | Activity | Duration | Start | Finish | Predecessors | Total float | Free float | Resources | Cost | MSP Activity ID |
| --- | --- | --- | --- | --- | --- | --- | --- | --- | --- | --- | --- |
|  | 1.3.1.3.7.4 | **PHE** |  | 2026-01-15 | 2026-04-04 |  |  |  |  |  |  |
| PG-12667 |  | Bracket fixing works | 6.67d | 2026-01-15 | 2026-01-22 | PG-12650 | 138.5d | 0d | Santech (Plumbing) [213000 h] | 213,000 | 38065 |
| PG-12668 |  | Piping Works | 14.67d | 2026-01-22 | 2026-02-10 | PG-12667 | 138.5d | 0d | Santech (Plumbing) [469000 h] | 469,000 | 38066 |
| PG-12669 |  | Terrace Ring main & OHT Connection works | 39.67d | 2026-02-10 | 2026-03-28 | PG-11905, PG-12668, PG-12658 | 138.5d | 0d | Santech (Plumbing) [1269000 h] | 1,269,000 | 43352 |
| PG-12670 |  | Commissioning | 6.67d | 2026-03-28 | 2026-04-04 | PG-12669 | 138.5d | 0d | Santech (Plumbing) [213000 h] | 213,000 | 38067 |
|  | 1.3.1.3.8 | **Lift Installation and Testing works** |  | 2025-12-29 | 2026-07-27 |  |  |  |  |  |  |
| PG-12671 |  | Lift Shaft Survey works | 9.67d | 2025-12-29 | 2026-01-09 | PG-12634 | 77.33d | 25.67d | Otis (Lifts) [387000 h] | 387,000 | 38070 |
| PG-12672 |  | Guide Rails fixing works | 40.83d | 2026-02-09 | 2026-03-28 | PG-12671, PG-12637 | 51.67d | 0d | Otis (Lifts) [3471000 h] | 3,471,000 | 38071 |
| PG-12673 |  | Lift Frame fixing works | 23.33d | 2026-03-28 | 2026-04-24 | PG-12672 | 51.67d | 0d | Otis (Lifts) [933000 h] | 933,000 | 38072 |
| PG-12674 |  | CAR Assembly works | 20.67d | 2026-04-25 | 2026-05-19 | PG-12673 | 51.67d | 0d | L&T [827000 h] | 827,000 | 38073 |
| PG-12675 |  | Lift Machine Room Works | 29.33d | 2026-05-19 | 2026-06-22 | PG-12674 | 51.67d | 0d | Otis (Lifts) [1173000 h] | 1,173,000 | 38074 |
| PG-12676 |  | Slow Speed & High Speed Testing works | 29.67d | 2026-06-23 | 2026-07-27 | PG-12638, PG-12675 | 51.67d | 0d | L&T [1187000 h] | 1,187,000 | 38075 |
|  | 1.3.1.3.9 | **Electrical Panel Works** |  | 2025-12-16 | 2026-07-22 |  |  |  |  |  |  |
|  | 1.3.1.3.9.1 | **Civil Finishing Works** |  | 2025-12-16 | 2026-01-30 |  |  |  |  |  |  |
| PG-12677 |  | Wall Tie rod hole packing & Grinding works. | 13.83d | 2025-12-16 | 2026-01-01 | PG-12417 | 45.17d | 0d | L&T [553000 h] | 553,000 | 42066 |
| PG-12678 |  | Window, Louver and Door fixing works | 6.67d | 2026-01-01 | 2026-01-08 | PG-12677 | 45.17d | 0d | Fenesta (UPVC Windows) [400000 h] | 400,000 | 42067 |
| PG-12679 |  | Pedestal works | 10.67d | 2026-01-08 | 2026-01-21 | PG-12678 | 45.17d | 0d | Elexir (Electrical) [341000 h] | 341,000 | 42068 |
| PG-12680 |  | Painting works | 6.67d | 2026-01-21 | 2026-01-30 | PG-12679 | 45.17d | 0d | Surfa Coats (Painting) [213000 h] | 213,000 | 42069 |
|  | 1.3.1.3.9.2 | **Electrical Panel works** |  | 2026-01-30 | 2026-07-22 |  |  |  |  |  |  |
| PG-12681 |  | Electrical Panel assembly works | 58.5d | 2026-01-30 | 2026-04-08 | PG-12680 | 45.17d | 0d | Elexir (Electrical) [1872000 h] | 1,872,000 | 42071 |
| PG-12682 |  | Electrical Panel installation and cable termination. | 60.67d | 2026-04-08 | 2026-06-18 | PG-12681 | 45.17d | 0d | Elexir (Electrical) [1941000 h] | 1,941,000 | 42072 |
| PG-12683 |  | Electrical Panel Testing and commissioning works | 29.5d | 2026-06-18 | 2026-07-22 | PG-12682 | 45.17d | 0d | Elexir (Electrical) [944000 h] | 944,000 | 42073 |
|  | 1.3.1.3.10 | **Entrance Lobby works** |  | 2026-07-01 | 2026-10-15 |  |  |  |  |  |  |
| PG-12684 |  | Flooring Works | 14.5d | 2026-07-01 | 2026-07-17 | PG-12632 | 0d |  | L&T [580000 h] | 580,000 | 43043 |
| PG-12685 |  | Glass Door and installation Works | 19.67d | 2026-07-17 | 2026-08-10 | PG-12684 | 0d |  | L&T [787000 h] | 787,000 | 43044 |
| PG-12687 |  | Canopy Works | 24.83d | 2026-07-17 | 2026-08-17 | PG-12684 | 4.33d |  | L&T [993000 h] | 993,000 | 46269 |
| PG-12686 |  | Painting Works | 9.5d | 2026-08-10 | 2026-08-21 | PG-12685 | 0d |  | Surfa Coats (Painting) [247000 h] | 247,000 | 43045 |
| PG-12688 |  | Interior Works | 45.67d | 2026-08-21 | 2026-10-15 | PG-12687, PG-12686 | 0d |  | L&T [1827000 h] | 1,827,000 | 43046 |

| ID | WBS | Activity | Duration | Start | Finish | Predecessors | Complete | Planned start | Planned finish | Total float | Free float | Resources | Cost | MSP Activity ID |
| --- | --- | --- | --- | --- | --- | --- | --- | --- | --- | --- | --- | --- | --- | --- |
|  | 1.3.1.3.11 | **Lightening Arrester works** |  | 2026-04-24 | 2026-05-05 |  |  |  |  |  |  |  |  |  |
| PG-12689 |  | Conductor will be lifted with RCC Works, But Terrace works will be done once Parapet Painting done | 9.33d | 2026-04-24 | 2026-05-05 | PG-12616 |  |  |  | 139.17d | 0d | Surfa Coats (Painting) [243000 h] | 243,000 | 43134 |
|  | 1.3.1.4 | **Podium works Non Tower area** |  | 2024-02-03 | 2025-01-07 |  |  |  |  |  |  |  |  |  |
|  | 1.3.1.4.1 | **Structural works - Podium slab** |  | 2024-02-03 | 2024-09-04 |  |  |  |  |  |  |  |  |  |
|  | 1.3.1.4.1.1 | **LBF to UBF** |  | 2024-02-03 | 2024-07-01 |  |  |  |  |  |  |  |  |  |
| PG-12690 |  | Piling Works | 49.67d | 2024-02-03 A | 2024-04-02 A | PG-10049 | 100% | 2024-02-03 | 2024-04-01 |  |  | L&T [1987000 h] | 1,987,000 | 45976 |
| PG-12691 |  | Backfilling and Consolidation | 19.67d | 2024-04-02 A | 2024-04-25 A | PG-12690 | 100% | 2024-04-02 | 2024-04-24 |  |  | L&T [787000 h] | 787,000 | 45991 |
| PG-12692 |  | Columns, Retaining Walls reinforcement work | 9.5d | 2024-04-25 A | 2024-05-07 A | PG-12691 FF+10d | 100% | 2024-04-25 | 2024-05-06 |  |  | L&T [380000 h] | 380,000 | 38077 |
| PG-12693 |  | Columns, Retaining walls Formwork & Concrete | 14.5d | 2024-05-01 A | 2024-05-18 A | PG-12692 FF+10d | 100% | 2024-05-01 | 2024-05-17 |  |  | L&T [580000 h] | 580,000 | 38076 |
| PG-12694 |  | Slab Formwork | 29.5d | 2024-05-13 A | 2024-06-17 A | PG-12693 FF+25d | 100% | 2024-05-13 | 2024-06-15 |  |  | L&T [1180000 h] | 1,180,000 | 38079 |
| PG-12695 |  | Slab reinforcement work | 14.5d | 2024-06-11 A | 2024-06-28 A | PG-12694 FF+10d | 100% | 2024-06-11 | 2024-06-27 |  |  | L&T [580000 h] | 580,000 | 38078 |
| PG-12696 |  | Slab concrete works | 3.5d | 2024-06-26 A | 2024-07-01 A | PG-12695 FF+2d | 100% | 2024-06-26 | 2024-06-29 |  |  | L&T [140000 h] | 140,000 | 19945 |
|  | 1.3.1.4.1.2 | **UBF to Podium Level** |  | 2024-06-28 | 2024-09-04 |  |  |  |  |  |  |  |  |  |
| PG-12697 |  | Columns, Retaining Walls reinforcement work | 9.5d | 2024-06-28 A | 2024-07-10 A | PG-12696 FF+8d | 100% | 2024-06-28 | 2024-07-09 |  |  | L&T [380000 h] | 380,000 | 38080 |
| PG-12698 |  | Columns, Retaining walls Formwork & Concrete | 14.5d | 2024-07-04 A | 2024-07-22 A | PG-12697 FF+10d | 100% | 2024-07-04 | 2024-07-20 |  |  | L&T [580000 h] | 580,000 | 38081 |
| PG-12699 |  | Slab Formwork | 29.5d | 2024-07-16 A | 2024-08-21 A | PG-12698 FF+25d | 100% | 2024-07-16 | 2024-08-20 |  |  | L&T [1180000 h] | 1,180,000 | 38082 |
| PG-12700 |  | Slab reinforcement work | 14.5d | 2024-08-14 A | 2024-09-02 A | PG-12699 FF+10d | 100% | 2024-08-14 | 2024-08-31 |  |  | L&T [580000 h] | 580,000 | 38083 |
| PG-12701 |  | Slab concrete works | 3.5d | 2024-08-30 A | 2024-09-04 A | PG-12700 FF+2d | 100% | 2024-08-30 | 2024-09-03 |  |  | L&T [140000 h] | 140,000 | 38084 |
|  | 1.3.1.4.2 | **Finishing Works - Podium slab** |  | 2024-07-01 | 2024-12-04 |  |  |  |  |  |  |  |  |  |
| PG-12702 |  | Carwash Collection Sump Works | 29.67d | 2024-07-01 A | 2024-08-05 A | PG-12696 | 100% | 2024-07-01 | 2024-08-03 |  |  | L&T [1187000 h] | 1,187,000 | 38086 |
| PG-12703 |  | Waterproofing works | 24.67d | 2024-08-05 A | 2024-09-04 A | PG-12702 | 100% | 2024-08-05 | 2024-09-03 |  |  | L&T [987000 h] | 987,000 | 19948 |
| PG-12704 |  | Screed concrete works | 9.5d | 2024-09-04 A | 2024-09-14 A | PG-12703 | 100% | 2024-09-03 | 2024-09-14 |  |  | L&T [380000 h] | 380,000 | 19949 |
| PG-12705 |  | Podium Waterproofing works | 34.5d | 2024-09-14 A | 2024-10-25 A | PG-12704, PG-12701 | 100% |  |  |  |  | L&T [1380000 h] | 1,380,000 | 38087 |
| PG-12706 |  | Painting Works | 31.17d | 2024-10-26 A | 2024-12-04 A | PG-12705 | 100% | 2024-10-26 | 2024-12-03 |  |  | Surfa Coats (Painting) [810000 h] | 810,000 | 46057 |
| PG-12707 |  | Fire Driveway around buildings | 31.17d | 2024-10-26 A | 2024-12-02 A | PG-12705 | 100% | 2024-10-26 | 2024-12-03 |  |  | L&T [1247000 h] | 1,247,000 | 19982 |

| ID | WBS | Activity | Duration | Start | Finish | Predecessors | Complete | Planned start | Planned finish | Total float | Free float | Resources | Cost | MSP Activity ID |
| --- | --- | --- | --- | --- | --- | --- | --- | --- | --- | --- | --- | --- | --- | --- |
|  | 1.3.1.4.3 | **MEP Works** |  | 2024-04-25 | 2025-01-07 |  |  |  |  |  |  |  |  |  |
|  | 1.3.1.4.3.1 | **LBF to UBF** |  | 2024-04-25 | 2025-01-07 |  |  |  |  |  |  |  |  |  |
| PG-12708 |  | Surface Drainage System (Chambers and Pipeline for Sump) | 29.67d | 2024-04-25 A | 2024-05-30 A | PG-12690 FS+20d | 100% | 2024-04-25 | 2024-05-29 |  |  | L&T [1187000 h] | 1,187,000 | 46048 |
| PG-12709 |  | Pump fixing for collection sump | 6.67d | 2024-08-05 A | 2024-08-13 A | PG-12702 | 100% | 2024-08-05 | 2024-08-12 |  |  | L&T [267000 h] | 267,000 | 46049 |
| PG-12710 |  | FPS Piping and Sprinkler Fixing works | 28.67d | 2024-12-04 A | 2025-01-07 A | PG-12709, PG-12706 | 100% | 2024-12-03 | 2025-01-04 |  |  | Nexus (Fire) [917000 h] | 917,000 | 46050 |
| PG-12711 |  | Electrical Conducting and Light Fixing works | 14.67d | 2024-12-04 A | 2024-12-20 A | PG-12706 FF+15d | 100% | 2024-12-03 | 2024-12-20 |  |  | Elexir (Electrical) [469000 h] | 469,000 | 46051 |
|  | 1.3.1.4.3.2 | **UBF to Podium** |  | 2024-09-27 | 2024-12-27 |  |  |  |  |  |  |  |  |  |
| PG-12712 |  | Piping for Rainwater and Soil lines in Ceiling | 39.83d | 2024-09-27 A | 2024-11-16 A | PG-12701 FF+60d | 100% | 2024-09-27 | 2024-11-15 |  |  | Santech (Plumbing) [1275000 h] | 1,275,000 | 46054 |
| PG-12713 |  | FPS Piping and Sprinkler Fixing works | 29.5d | 2024-11-05 A | 2024-12-10 A | PG-12712 FF+20d | 100% | 2024-11-04 | 2024-12-09 |  |  | Nexus (Fire) [944000 h] | 944,000 | 46055 |
| PG-12714 |  | Electrical Conducting and Light Fixing works | 14.67d | 2024-12-10 A | 2024-12-27 A | PG-12713, PG-12706 | 100% | 2024-12-09 | 2024-12-25 |  |  | Elexir (Electrical) [469000 h] | 469,000 | 46056 |
|  | 1.3.1.5 | **Landscape and Hardscape works** |  | 2026-04-24 | 2026-08-06 |  |  |  |  |  |  |  |  |  |
| PG-12715 |  | Hardscape ( Granite, Planter, Walkways Etc..) | 44.83d | 2026-04-24 | 2026-06-16 | PG-12616 |  |  |  | 58.83d | 0d | L&T [1793000 h] | 1,793,000 | 38090 |
| PG-12716 |  | Filter media and soil filling works | 19.67d | 2026-06-10 | 2026-07-03 | PG-12715 FF+15d |  |  |  | 58.83d | 0d | L&T [787000 h] | 787,000 | 38089 |
| PG-12717 |  | Irrigation piping works | 19.67d | 2026-06-22 | 2026-07-15 | PG-12716 FF+10d |  |  |  | 58.83d | 0d | Santech (Plumbing) [629000 h] | 629,000 | 38088 |
| PG-12718 |  | Planting works | 19.67d | 2026-07-15 | 2026-08-06 | PG-12717 |  |  |  | 58.83d | 0d | L&T [787000 h] | 787,000 | 19951 |
|  | 1.3.9 | **Project Infrastructure Works ( Services/MEP )** |  | 2023-10-04 | 2026-09-23 |  |  |  |  |  |  |  |  |  |
|  | 1.3.9.1 | **Civil & Services Works ( Transformer, DG,STP )** |  | 2023-10-04 | 2026-09-23 |  |  |  |  |  |  |  |  |  |
|  | 1.3.9.1.1 | **Transformer Yard Civil Works** |  | 2026-03-19 | 2026-05-28 |  |  |  |  |  |  |  |  |  |
|  | 1.3.9.1.1.1 | **Transformer 01** |  | 2026-03-19 | 2026-05-28 |  |  |  |  |  |  |  |  |  |
| PG-30428 |  | Footing and Pedestal Excavation Works | 10.5d | 2026-03-19 | 2026-04-01 | PG-12661 FF+30d |  |  |  | 119d | 0d | L&T [420000 h] | 420,000 | 42347 |
| PG-30429 |  | Footing and Pedestal Reinforcement works | 3.33d | 2026-04-02 | 2026-04-07 | PG-30428 FF+5d |  |  |  | 119d | 0d | L&T [133000 h] | 133,000 | 42348 |
| PG-30430 |  | Footing and Pedestal Concrete works | 9.67d | 2026-04-07 | 2026-04-17 | PG-30429 |  |  |  | 119d | 0d | L&T [387000 h] | 387,000 | 42349 |
| PG-30431 |  | Fencing Retaining wall footing reinforcement works | 6.33d | 2026-04-17 | 2026-04-25 | PG-30430 |  |  |  | 119d | 0d | L&T [253000 h] | 253,000 | 42350 |
| PG-30432 |  | Fencing Retaining wall footing formwork and concrete works | 6.33d | 2026-04-25 | 2026-05-02 | PG-30431 |  |  |  | 119d | 0d | L&T [253000 h] | 253,000 | 42351 |
| PG-30434 |  | Fencing works MS/GRC | 20.67d | 2026-04-30 | 2026-05-25 | PG-30433 FF+15d |  |  |  | 119d | 0d | L&T [827000 h] | 827,000 | 42353 |
| PG-30433 |  | Retaining wall upto low level concrete works | 3.67d | 2026-05-02 | 2026-05-07 | PG-30432 |  |  |  | 119d | 0d | L&T [147000 h] | 147,000 | 42352 |
| PG-30435 |  | Floor Aggregates spreading works | 3.67d | 2026-05-25 | 2026-05-28 | PG-30434 |  |  |  | 119d | 60.17d | L&T [147000 h] | 147,000 | 42354 |

| ID | WBS | Activity | Duration | Start | Finish | Predecessors | Complete | Planned start | Planned finish | Total float | Free float | Resources | Cost | MSP Activity ID |
| --- | --- | --- | --- | --- | --- | --- | --- | --- | --- | --- | --- | --- | --- | --- |
|  | 1.3.9.1.2 | **Transformer Yard Electrical works** |  | 2026-08-07 | 2026-09-23 |  |  |  |  |  |  |  |  |  |
|  | 1.3.9.1.2.1 | **Transformer 01** |  | 2026-08-07 | 2026-09-23 |  |  |  |  |  |  |  |  |  |
| PG-30460 |  | Cable Trench works | 9.5d | 2026-08-07 | 2026-08-19 | PG-30435, PG-12718 |  |  |  | 58.83d | 0d | Elexir (Electrical) [304000 h] | 304,000 | 42458 |
| PG-30461 |  | LTQS Installation Works | 7.67d | 2026-08-19 | 2026-08-28 | PG-30460 |  |  |  | 58.83d | 0d | Elexir (Electrical) [245000 h] | 245,000 | 42459 |
| PG-30462 |  | Cable laying works | 13.5d | 2026-08-28 | 2026-09-12 | PG-30461 |  |  |  | 58.83d | 0d | Elexir (Electrical) [432000 h] | 432,000 | 42460 |
| PG-30463 |  | Cable Termination works | 3.67d | 2026-09-12 | 2026-09-17 | PG-30462 |  |  |  | 58.83d | 0d | Elexir (Electrical) [117000 h] | 117,000 | 42461 |
| PG-30464 |  | Testing and commissioning works | 5.67d | 2026-09-17 | 2026-09-23 | PG-30463, PG-10036 |  |  |  | 58.83d | 0d | Elexir (Electrical) [181000 h] | 181,000 | 42462 |
|  | 1.3.9.1.3 | **DG Room & Installation Works** |  | 2023-10-04 | 2024-06-03 |  |  |  |  |  |  |  |  |  |
|  | 1.3.9.1.3.1 | **Civil Works** |  | 2023-10-04 | 2023-11-13 |  |  |  |  |  |  |  |  |  |
|  | 1.3.9.1.3.1.1 | **DG 01** |  | 2023-10-04 | 2023-11-13 |  |  |  |  |  |  |  |  |  |
| PG-30480 |  | Wall Grinding Works | 8.67d | 2023-10-04 A | 2023-10-13 A |  | 100% |  |  |  |  | L&T [347000 h] | 347,000 | 42646 |
| PG-30481 |  | DG Exhaust works | 14.67d | 2023-10-04 A | 2023-10-20 A | PG-30480 FF+5d | 100% |  |  |  |  | L&T [587000 h] | 587,000 | 42647 |
| PG-30482 |  | Pedestal Concrete works | 4.67d | 2023-10-20 A | 2023-10-26 A | PG-30481 | 100% |  |  |  |  | L&T [187000 h] | 187,000 | 42648 |
| PG-30483 |  | DG Room Flooring Works | 6.5d | 2023-10-26 A | 2023-11-03 A | PG-30482 | 100% |  |  |  |  | L&T [260000 h] | 260,000 | 42649 |
| PG-30484 |  | DG Room Painting works | 7.5d | 2023-11-03 A | 2023-11-13 A | PG-30483 | 100% | 2023-11-04 | 2023-11-13 |  |  | Surfa Coats (Painting) [195000 h] | 195,000 | 42650 |
|  | 1.3.9.1.3.2 | **Electrical works** |  | 2023-11-13 | 2024-06-03 |  |  |  |  |  |  |  |  |  |
|  | 1.3.9.1.3.2.1 | **DG 01** |  | 2023-11-13 | 2024-06-03 |  |  |  |  |  |  |  |  |  |
| PG-30495 |  | Exhaust Piping and insulation works | 89.67d | 2023-11-13 A | 2024-02-26 A | PG-30484 | 100% |  |  |  |  | Elexir (Electrical) [2869000 h] | 2,869,000 | 42720 |
| PG-30496 |  | DG Cabling and conducting works | 29.67d | 2024-02-27 A | 2024-04-01 A | PG-30495 | 100% |  |  |  |  | Elexir (Electrical) [949000 h] | 949,000 | 42721 |
| PG-30497 |  | DG installation works | 29.67d | 2024-04-01 A | 2024-05-06 A | PG-30496 | 100% |  |  |  |  | Elexir (Electrical) [949000 h] | 949,000 | 42722 |
| PG-30498 |  | Light fixtures and Switch plates fixing works | 8.67d | 2024-05-06 A | 2024-05-16 A | PG-30497 | 100% | 2024-05-06 | 2024-05-15 |  |  | Elexir (Electrical) [277000 h] | 277,000 | 42723 |
| PG-30499 |  | Testing and Snag Works | 15.67d | 2024-05-16 A | 2024-06-03 A | PG-30498, PG-10034 | 100% |  |  |  |  | Elexir (Electrical) [501000 h] | 501,000 | 42724 |
|  | 1.3.9.1.4 | **STP Civil Works** |  | 2023-10-04 | 2024-05-28 |  |  |  |  |  |  |  |  |  |
|  | 1.3.9.1.4.1 | **Sewage Treatment Plant 01 ( 1000KLD )** |  | 2023-10-04 | 2024-05-28 |  |  |  |  |  |  |  |  |  |
| PG-30510 |  | Partition Walls RCC for SBR,Equilisation,Sledg Tank Etc. | 49d | 2023-10-04 A | 2023-12-01 A |  | 100% |  |  |  |  | L&T [1960000 h] | 1,960,000 | 42739 |
| PG-30511 |  | All Tank Top Slab and Working Platform RCC works | 25d | 2023-12-01 A | 2023-12-30 A | PG-30510 | 100% |  |  |  |  | L&T [1000000 h] | 1,000,000 | 42740 |
| PG-30512 |  | Grinding works for all RCC Walls and ceiling | 25d | 2023-12-30 A | 2024-01-30 A | PG-30511 | 100% |  |  |  |  | L&T [1000000 h] | 1,000,000 | 42741 |
| PG-30513 |  | Puddle Flange Fixing Works | 10d | 2024-01-30 A | 2024-02-10 A | PG-30512 | 100% |  |  |  |  | L&T [400000 h] | 400,000 | 42782 |
| PG-30514 |  | Waterproofing inside tanks | 24.67d | 2024-02-10 A | 2024-03-11 A | PG-30513 | 100% | 2024-02-10 | 2024-03-09 |  |  | L&T [987000 h] | 987,000 | 42742 |
| PG-30515 |  | Pond Testing for leakage | 21d | 2024-03-11 A | 2024-04-05 A | PG-30514 | 100% | 2024-03-11 | 2024-04-04 |  |  | Santech (Plumbing) [672000 h] | 672,000 | 42743 |
| PG-30516 |  | Pumps Pedestal works | 10d | 2024-04-05 A | 2024-04-17 A | PG-30515 | 100% | 2024-04-04 | 2024-04-16 |  |  | L&T [400000 h] | 400,000 | 42744 |
| PG-30517 |  | Railing works for working platform | 14.67d | 2024-04-17 A | 2024-05-04 A | PG-30516 | 100% | 2024-04-16 | 2024-05-02 |  |  | L&T [587000 h] | 587,000 | 42745 |
| PG-30518 |  | Access Ladder works | 10d | 2024-05-04 A | 2024-05-16 A | PG-30517 | 100% | 2024-05-03 | 2024-05-15 |  |  | L&T [400000 h] | 400,000 | 42746 |
| PG-30519 |  | Painting Works | 9.67d | 2024-05-16 A | 2024-05-28 A | PG-30518 | 100% | 2024-05-15 | 2024-05-25 |  |  | Surfa Coats (Painting) [251000 h] | 251,000 | 42747 |

| ID | WBS | Activity | Duration | Start | Finish | Predecessors | Complete | Planned start | Planned finish | Total float | Free float | Resources | Cost | MSP Activity ID |
| --- | --- | --- | --- | --- | --- | --- | --- | --- | --- | --- | --- | --- | --- | --- |
|  | 1.3.9.1.5 | **STP MEP Works** |  | 2024-05-28 | 2026-02-17 |  |  |  |  |  |  |  |  |  |
|  | 1.3.9.1.5.1 | **Sewage Treatment Plant 01 ( 1000KLD )** |  | 2024-05-28 | 2026-02-17 |  |  |  |  |  |  |  |  |  |
| PG-30540 |  | Piping works from Flush tank to STP | 15d | 2024-05-28 A | 2024-06-14 A | PG-10038, PG-30519 | 100% | 2024-05-27 | 2024-06-13 |  |  | Santech (Plumbing) [480000 h] | 480,000 | 42772 |
| PG-30546 |  | STP Exhaust piping and Insulation works | 162d | 2024-05-28 A | 2024-12-09 A | PG-30519 | 100% | 2024-05-27 | 2024-12-05 |  |  | Santech (Plumbing) [5184000 h] | 5,184,000 | 42778 |
| PG-30541 |  | Piping from STP Treated water to Irrigation network | 5.67d | 2024-06-14 A | 2024-06-20 A | PG-30540 | 100% | 2024-06-13 | 2024-06-19 |  |  | Santech (Plumbing) [181000 h] | 181,000 | 42773 |
| PG-30542 |  | piping for Excess Treated water discharge | 5.67d | 2025-11-29 | 2025-12-06 | PG-30541, PG-10027 |  |  |  | 215.83d | 0d | Santech (Plumbing) [181000 h] | 181,000 | 42774 |
| PG-30543 |  | Equipment installation and Pump Fixing Works | 15.67d | 2025-12-06 | 2025-12-24 | PG-30542 |  |  |  | 215.83d | 0d | L&T [627000 h] | 627,000 | 42775 |
| PG-30544 |  | Electrical Cabling works for Pumps | 9.5d | 2025-12-24 | 2026-01-05 | PG-30543 |  |  |  | 215.83d | 0d | Elexir (Electrical) [304000 h] | 304,000 | 42776 |
| PG-30545 |  | Electrical Conducting/Wiring and fixture installation | 14.67d | 2026-01-05 | 2026-01-22 | PG-30544 |  |  |  | 215.83d | 0d | Elexir (Electrical) [469000 h] | 469,000 | 42777 |
| PG-30547 |  | Testing and internal Snag | 21d | 2026-01-22 | 2026-02-17 | PG-30545, PG-30546 |  |  |  | 215.83d | 0d | L&T [840000 h] | 840,000 | 42779 |
|  | 1.4 | **External Development Works** |  | 2023-10-04 | 2025-12-23 |  |  |  |  |  |  |  |  |  |
|  | 1.4.3 | **External Development works - Road Works** |  | 2023-10-04 | 2024-01-02 |  |  |  |  |  |  |  |  |  |
|  | 1.4.3.1 | **Spine Road works** |  | 2023-10-04 | 2023-11-27 |  |  |  |  |  |  |  |  |  |
| PG-30612 |  | Civil Works | 44.67d | 2023-10-04 A | 2023-11-27 A | PG-0998 SS | 100% | 2023-10-04 | 2023-11-25 |  |  | L&T [1787000 h] | 1,787,000 | 46170 |
| PG-30613 |  | Services Works | 30.67d | 2023-10-10 A | 2023-11-15 A | PG-30612 SS+5d | 100% |  |  |  |  | L&T [1227000 h] | 1,227,000 | 42960 |
|  | 1.4.3.2 | **CDP Road works** |  | 2023-10-04 | 2024-01-02 |  |  |  |  |  |  |  |  |  |
| PG-30614 |  | Civil Works | 74.67d | 2023-10-04 A | 2024-01-02 A | PG-30613 FF+30d, PG-0998 SS | 100% | 2023-10-04 | 2023-12-30 |  |  | L&T [2987000 h] | 2,987,000 | 46171 |
| PG-30615 |  | Services Works | 44.67d | 2023-10-21 A | 2023-12-14 A | PG-30614 SS+15d | 100% | 2023-10-21 | 2023-12-13 |  |  | L&T [1787000 h] | 1,787,000 | 42959 |
|  | 1.4.4 | **External Development Amenities** |  | 2023-10-04 | 2024-05-18 |  |  |  |  |  |  |  |  |  |
|  | 1.4.4.1 | **Swimming Pool & Lagoon Works** |  | 2023-10-04 | 2024-05-18 |  |  |  |  |  |  |  |  |  |
|  | 1.4.4.1.1 | **Civil Works** |  | 2023-10-04 | 2024-04-15 |  |  |  |  |  |  |  |  |  |
| PG-30616 |  | Excavation Works | 4.5d | 2023-10-04 A | 2023-10-09 A | MS-0000 | 100% |  |  |  |  | L&T [180000 h] | 180,000 | 42942 |
| PG-30617 |  | PCC For Bottom Raft | 4.67d | 2023-10-10 A | 2023-10-16 A | PG-30616 | 100% | 2023-10-10 | 2023-10-14 |  |  | L&T [187000 h] | 187,000 | 42943 |
| PG-30618 |  | Bottom Raft Reinforcement and Formwork | 9.5d | 2023-10-16 A | 2023-10-27 A | PG-30617 | 100% | 2023-10-16 | 2023-10-26 |  |  | L&T [380000 h] | 380,000 | 42944 |
| PG-30619 |  | Bottom Raft concrete works | 1.67d | 2023-10-27 A | 2023-10-30 A | PG-30618 | 100% | 2023-10-27 | 2023-10-28 |  |  | L&T [67000 h] | 67,000 | 42940 |
| PG-30620 |  | Side Retaining wall Reinforcement works | 4.67d | 2023-10-30 A | 2023-11-06 A | PG-30619 | 100% | 2023-10-30 | 2023-11-04 |  |  | L&T [187000 h] | 187,000 | 42939 |
| PG-30621 |  | Side Wall Formwork | 17.67d | 2023-11-06 A | 2023-11-25 A | PG-30620 | 100% |  |  |  |  | L&T [707000 h] | 707,000 | 42938 |
| PG-30622 |  | Side Wall Concreting works | 3.67d | 2023-11-25 A | 2023-11-30 A | PG-30621 | 100% |  |  |  |  | L&T [147000 h] | 147,000 | 42937 |
| PG-30623 |  | Puddle Flange Fixing Works | 1.67d | 2023-11-30 A | 2023-12-02 A | PG-30622 | 100% |  |  |  |  | L&T [67000 h] | 67,000 | 42947 |
| PG-30624 |  | Waterproofing works | 20.67d | 2023-12-02 A | 2023-12-26 A | PG-30623 | 100% |  |  |  |  | L&T [827000 h] | 827,000 | 42946 |
| PG-30625 |  | Pond Testing works | 13.67d | 2023-12-26 A | 2024-01-11 A | PG-30624 | 100% | 2023-12-27 | 2024-01-11 |  |  | Santech (Plumbing) [437000 h] | 437,000 | 42945 |
| PG-30626 |  | Snag and DE snag works | 4.83d | 2024-01-11 A | 2024-01-17 A | PG-30625 | 100% |  |  |  |  | L&T [193000 h] | 193,000 | 42948 |
| PG-30627 |  | Plant room Civil works | 30.67d | 2024-01-17 A | 2024-02-23 A | PG-30626 | 100% | 2024-01-17 | 2024-02-22 |  |  | L&T [1227000 h] | 1,227,000 | 42963 |
| PG-30628 |  | Protective Screed Concrete works | 2.5d | 2024-01-17 A | 2024-01-20 A | PG-30626 | 100% | 2024-01-17 | 2024-01-19 |  |  | L&T [100000 h] | 100,000 | 42954 |
| PG-30629 |  | Screed Concrete above Plumbing Pipes | 2.33d | 2024-02-07 A | 2024-02-10 A | PG-30631 | 100% | 2024-02-07 | 2024-02-09 |  |  | Santech (Plumbing) [75000 h] | 75,000 | 42955 |
| PG-30630 |  | Tiling works for floor and walls including Grouting | 50.33d | 2024-02-15 A | 2024-04-15 A | PG-30629 FF+55d | 100% | 2024-02-15 | 2024-04-13 |  |  | L&T [2013000 h] | 2,013,000 | 42949 |

| ID | WBS | Activity | Duration | Start | Finish | Predecessors | Complete | Planned start | Planned finish | Total float | Free float | Resources | Cost | MSP Activity ID |
| --- | --- | --- | --- | --- | --- | --- | --- | --- | --- | --- | --- | --- | --- | --- |
|  | 1.4.4.1.2 | **MEP Works** |  | 2024-01-20 | 2024-05-18 |  |  |  |  |  |  |  |  |  |
| PG-30631 |  | Plumbing Pipes installation in Floor | 14.67d | 2024-01-20 A | 2024-02-07 A | PG-30628 | 100% |  |  |  |  | Santech (Plumbing) [469000 h] | 469,000 | 42953 |
| PG-30632 |  | Pipe Network for Pump room works | 25.67d | 2024-02-23 A | 2024-03-23 A | PG-30627 | 100% |  |  |  |  | L&T [1027000 h] | 1,027,000 | 42951 |
| PG-30634 |  | Electrical cabling and fixture works | 8.5d | 2024-03-19 A | 2024-03-29 A | PG-30627 FF+30d | 100% | 2024-03-19 | 2024-03-28 |  |  | Elexir (Electrical) [272000 h] | 272,000 | 42961 |
| PG-30633 |  | Fixtures inside Pool | 8.67d | 2024-04-15 A | 2024-04-25 A | PG-30632, PG-30630 | 100% | 2024-04-15 | 2024-04-24 |  |  | L&T [347000 h] | 347,000 | 42957 |
| PG-30635 |  | Testing and Snaging | 20.67d | 2024-04-25 A | 2024-05-18 A | PG-30634, PG-30633 | 100% | 2024-04-24 | 2024-05-18 |  |  | L&T [827000 h] | 827,000 | 42956 |
|  | 1.4.6 | **Central Club House** |  | 2023-10-04 | 2025-12-23 |  |  |  |  |  |  |  |  |  |
| PG-30711 |  | Club House Interior works | 152.67d | 2025-06-24 | 2025-12-23 | PG-30700 SS+30d, PG-30710 |  |  |  | 303.56d | 0d | L&T [6107000 h] | 6,107,000 | 43010 |
|  | 1.4.6.1 | **Civil Structure works** |  | 2023-10-04 | 2024-07-13 |  |  |  |  |  |  |  |  |  |
| PG-30680 |  | Excavation Works | 20.67d | 2023-10-04 A | 2023-10-27 A |  | 100% |  |  |  |  | L&T [827000 h] | 827,000 | 42975 |
| PG-30681 |  | Foundation and Shear wall Reinforcement | 17.67d | 2023-10-28 A | 2023-11-20 A | PG-30680 | 100% | 2023-10-28 | 2023-11-18 |  |  | L&T [707000 h] | 707,000 | 42976 |
| PG-30682 |  | Foundation and Shear wall Formwork & Concrete | 24.67d | 2023-11-20 A | 2023-12-19 A | PG-30681 | 100% | 2023-11-20 | 2023-12-18 |  |  | L&T [987000 h] | 987,000 | 42977 |
| PG-30683 |  | Basement Roof Formwork and Reinforcement | 15.67d | 2023-12-19 A | 2024-01-06 A | PG-30682 | 100% | 2023-12-19 | 2024-01-05 |  |  | L&T [627000 h] | 627,000 | 43001 |
| PG-30684 |  | Basement Roof Works | 5d | 2024-01-06 A | 2024-01-12 A | PG-30683 | 100% |  |  |  |  | L&T [200000 h] | 200,000 | 42978 |
| PG-30685 |  | Shear Wall Reinforcement works from GF to FF | 14d | 2024-01-12 A | 2024-01-29 A | PG-30684 | 100% | 2024-01-11 | 2024-01-29 |  |  | L&T [560000 h] | 560,000 | 42979 |
| PG-30686 |  | Shear Wall Formwork and Concrete from GF to FF | 20d | 2024-01-29 A | 2024-02-21 A | PG-30685 | 100% |  |  |  |  | L&T [800000 h] | 800,000 | 42980 |
| PG-30687 |  | Ground Floor Roof Slab Formwork and reinforcement | 14.5d | 2024-02-21 A | 2024-03-09 A | PG-30686 | 100% | 2024-02-21 | 2024-03-08 |  |  | L&T [580000 h] | 580,000 | 42981 |
| PG-30688 |  | Ground Floor Roof Slab Concrete | 1.33d | 2024-03-09 A | 2024-03-09 A | PG-30687 | 100% | 2024-03-08 | 2024-03-09 |  |  | L&T [53000 h] | 53,000 | 42982 |
| PG-30689 |  | Shear walls Reinforcement from FF to Terrace Level | 15.67d | 2024-03-09 A | 2024-03-28 A | PG-30688 | 100% | 2024-03-09 | 2024-03-27 |  |  | L&T [627000 h] | 627,000 | 42983 |
| PG-30690 |  | Shear walls Formwork & Concrete from FF to Terrace Level | 19.5d | 2024-03-28 A | 2024-04-19 A | PG-30689 | 100% | 2024-03-27 | 2024-04-19 |  |  | L&T [780000 h] | 780,000 | 42984 |
| PG-30691 |  | First Floor Roof Slab Formwork and reinforcement | 15.5d | 2024-04-19 A | 2024-05-08 A | PG-30690 | 100% | 2024-04-19 | 2024-05-07 |  |  | L&T [620000 h] | 620,000 | 42985 |
| PG-30692 |  | First Floor Roof Slab Concrete | 0.83d | 2024-05-08 A | 2024-05-09 A | PG-30691 | 100% | 2024-05-07 | 2024-05-08 |  |  | L&T [33000 h] | 33,000 | 42986 |
| PG-30693 |  | Terrace Parapet wall works | 10.67d | 2024-05-09 A | 2024-05-22 A | PG-30692 | 100% | 2024-05-08 | 2024-05-21 |  |  | L&T [427000 h] | 427,000 | 42987 |
| PG-30694 |  | Terrace Lift head room works | 13.5d | 2024-05-22 A | 2024-06-07 A | PG-30693 | 100% | 2024-05-21 | 2024-06-06 |  |  | Otis (Lifts) [540000 h] | 540,000 | 42988 |
| PG-30695 |  | Terrace Waterproofing and Screed works | 30.67d | 2024-06-07 A | 2024-07-13 A | PG-30694 | 100% | 2024-06-06 | 2024-07-12 |  |  | L&T [1227000 h] | 1,227,000 | 42989 |

| ID | WBS | Activity | Duration | Start | Finish | Predecessors | Complete | Remaining | Planned start | Planned finish | Total float | Free float | Resources | Cost | MSP Activity ID |
| --- | --- | --- | --- | --- | --- | --- | --- | --- | --- | --- | --- | --- | --- | --- | --- |
|  | 1.4.6.2 | **MEP Works** |  | 2024-05-09 | 2025-06-17 |  |  |  |  |  |  |  |  |  |  |
| PG-30701 |  | Electrical Works | 60.5d | 2024-05-09 A | 2024-07-19 A | PG-30692 | 100% |  | 2024-05-08 | 2024-07-18 |  |  | Elexir (Electrical) [1936000 h] | 1,936,000 | 43011 |
| PG-30702 |  | HVAC Works | 39.67d | 2024-05-09 A | 2024-06-25 A | PG-30692 | 100% |  | 2024-05-08 | 2024-06-24 |  |  | L&T [1587000 h] | 1,587,000 | 42999 |
| PG-30703 |  | Data and Communication works | 13.67d | 2024-05-09 A | 2024-05-25 A | PG-30692 | 100% |  | 2024-05-08 | 2024-05-24 |  |  | L&T [547000 h] | 547,000 | 43000 |
| PG-30704 |  | Lift Installation Works | 153.5d | 2024-07-13 A | 2025-01-13 A | PG-30695 | 100% |  | 2024-07-12 | 2025-01-11 |  |  | Otis (Lifts) [13048000 h] | 13,048,000 | 46444 |
|  | 1.4.6.2.1 | **Plumbing Works** |  | 2024-07-01 | 2025-05-31 |  |  |  |  |  |  |  |  |  |  |
| PG-30696 |  | Piping works in toilets and Testing | 14.67d | 2024-07-01 A | 2024-07-18 A | PG-30692 FF+60d | 100% |  | 2024-07-01 | 2024-07-17 |  |  | Santech (Plumbing) [469000 h] | 469,000 | 43004 |
| PG-30698 |  | Terrace Ring main works | 15.67d | 2024-07-13 A | 2024-08-01 A | PG-30695 | 100% |  | 2024-07-12 | 2024-07-31 |  |  | Santech (Plumbing) [501000 h] | 501,000 | 43008 |
| PG-30697 |  | CP and Sanitary fixture works | 10.33d | 2025-05-20 | 2025-05-31 | PG-30705, PG-30709 |  |  |  |  | 543.39d |  | Santech (Plumbing) [331000 h] | 331,000 | 43005 |
|  | 1.4.6.2.2 | **FPS Works** |  | 2024-05-09 | 2025-06-17 |  |  |  |  |  |  |  |  |  |  |
| PG-30699 |  | Piping Works | 14.67d | 2024-05-09 A | 2024-05-27 A | PG-30692 | 100% |  | 2024-05-08 | 2024-05-25 |  |  | Nexus (Fire) [469000 h] | 469,000 | 43007 |
| PG-30700 |  | Sprinkler fixing and Testing Works | 24.33d | 2025-05-20 | 2025-06-17 | PG-30699, PG-30709 |  |  |  |  | 303.56d | 0d | Nexus (Fire) [779000 h] | 779,000 | 42996 |
|  | 1.4.6.3 | **Civil Finishing works** |  | 2024-07-18 | 2025-05-20 |  |  |  |  |  |  |  |  |  |  |
| PG-30706 |  | Toilet Tiling Works | 61.5d | 2024-07-18 A | 2024-09-30 A | PG-30696 | 100% |  | 2024-07-17 | 2024-09-28 |  |  | L&T [2460000 h] | 2,460,000 | 43002 |
| PG-30705 |  | Toilet waterproofing works | 31.5d | 2024-08-19 A | 2024-09-25 A | PG-30698 SS+30d, PG-30692 | 100% |  | 2024-08-17 | 2024-09-24 |  |  | L&T [1260000 h] | 1,260,000 | 43003 |
| PG-30707 |  | Granite and Marble works | 91.67d | 2024-09-30 A | 2025-01-18 A | PG-30703, PG-30702, PG-30701, PG-30706 | 100% |  | 2024-09-28 | 2025-01-16 |  |  | L&T [3667000 h] | 3,667,000 | 42992 |
| PG-30708 |  | UPVC Door Window Works | 29.67d | 2025-01-18 A | 2025-02-21 A | PG-30707 | 100% |  | 2025-01-16 | 2025-02-19 |  |  | Fenesta (UPVC Windows) [1780000 h] | 1,780,000 | 42993 |
| PG-30710 |  | Glazing / Façade /Wall Cladding Works | 72.67d | 2025-01-18 A | 2025-04-17 A | PG-30707 | 100% |  | 2025-01-16 | 2025-04-10 |  |  | L&T [2907000 h] | 2,907,000 | 43009 |
| PG-30709 |  | Painting Works | 29.83d | 2025-04-17 A | 2025-05-20 | PG-30708, PG-30710 | 28% | 21.44d | 2025-04-16 | 2025-05-20 | 303.56d | 0d | Surfa Coats (Painting) [776000 h] | 776,000 | 42994 |
|  | 1.6 | **Testing And Commissioning Works** |  | 2024-05-18 | 2026-10-28 |  |  |  |  |  |  |  |  |  |  |
| PG-31528 |  | T&C - Roundabout and Water bodies | 15.67d | 2024-07-27 A | 2024-08-16 A | PG-32349 | 100% |  |  |  |  |  | Third Party [251000 h] | 251,000 | 46373 |
| PG-31533 |  | T&C - Clubhouse Lift | 29.33d | 2025-01-13 A | 2025-02-15 A | PG-30704 | 100% |  | 2025-01-11 | 2025-02-14 |  |  | Otis (Lifts) [469000 h] | 469,000 | 46445 |
|  | 1.6.1 | **Building 1** |  | 2024-12-20 | 2026-08-18 |  |  |  |  |  |  |  |  |  |  |
|  | 1.6.1.1 | **Tower 1** |  | 2025-01-15 | 2026-04-18 |  |  |  |  |  |  |  |  |  |  |
|  | 1.6.1.1.1 | **Units** |  | 2025-01-15 | 2026-02-20 |  |  |  |  |  |  |  |  |  |  |
| PG-30731 |  | T&C - Ground Floor | 28.67d | 2025-01-15 A | 2025-02-17 A | PG-10207, PG-10210, PG-10213 | 100% |  | 2025-01-14 | 2025-02-15 |  |  | Third Party [459000 h] | 459,000 | 43406 |
| PG-30732 |  | T&C - Floor 1 | 30.67d | 2025-02-01 A | 2025-03-10 A | PG-10219, PG-10216, PG-10222 | 100% |  | 2025-01-29 | 2025-03-05 |  |  | Third Party [491000 h] | 491,000 | 43407 |
| PG-30733 |  | T&C - Floor 2 | 29.67d | 2025-02-14 A | 2025-03-21 A | PG-10228, PG-10225, PG-10231 | 100% |  | 2025-02-13 | 2025-03-19 |  |  | Third Party [475000 h] | 475,000 | 43408 |
| PG-30734 |  | T&C - Floor 3 | 29.67d | 2025-03-04 A | 2025-04-05 A | PG-10237, PG-10234, PG-10240 | 100% |  | 2025-03-01 | 2025-04-04 |  |  | Third Party [475000 h] | 475,000 | 43409 |
| PG-30735 |  | T&C - Floor 4 | 29.67d | 2025-03-17 A | 2025-04-18 A | PG-10243, PG-10246, PG-10249, PG-10256 | 100% |  | 2025-03-15 | 2025-04-18 |  |  | Third Party [475000 h] | 475,000 | 43410 |
| PG-30736 |  | T&C - Floor 5 | 29.67d | 2025-04-02 A | 2025-05-08 | PG-10506, PG-10255, PG-10252, PG-10258 | 62% | 11.35d | 2025-04-02 | 2025-05-06 | 429.15d | 0d | Third Party [475000 h] | 475,000 | 43411 |
| PG-30737 |  | T&C - Floor 6 | 29.67d | 2025-04-17 A | 2025-05-21 | PG-10264, PG-10261, PG-10267 | 23% | 22.7d | 2025-04-17 | 2025-05-22 | 417.8d | 0d | Third Party [475000 h] | 475,000 | 43412 |
| PG-30738 |  | T&C - Floor 7 | 28.67d | 2025-05-02 | 2025-06-05 | PG-10273, PG-10270, PG-10276 |  |  |  |  | 405.43d | 0d | Third Party [459000 h] | 459,000 | 43413 |
| PG-30739 |  | T&C - Floor 8 | 28.67d | 2025-05-16 | 2025-06-19 | PG-10282, PG-10279, PG-10285 |  |  |  |  | 391.64d | 0d | Third Party [459000 h] | 459,000 | 43414 |
| PG-30740 |  | T&C - Floor 9 | 28.67d | 2025-05-29 | 2025-07-02 | PG-10291, PG-10288, PG-10294 |  |  |  |  | 381.52d | 0d | Third Party [459000 h] | 459,000 | 43415 |
| PG-30741 |  | T&C - Floor 10 | 30.67d | 2025-06-12 | 2025-07-18 | PG-10300, PG-10297, PG-10303 |  |  |  |  | 368.27d | 0d | Third Party [491000 h] | 491,000 | 43416 |
| PG-30742 |  | T&C - Floor 11 | 30.67d | 2025-06-27 | 2025-08-02 | PG-10309, PG-10306, PG-10312 |  |  |  |  | 355.08d | 0d | Third Party [491000 h] | 491,000 | 43417 |
| PG-30743 |  | T&C - Floor 12 | 28.83d | 2025-07-09 | 2025-08-12 | PG-10318, PG-10315, PG-10321 |  |  |  |  | 347.08d | 0d | Third Party [461000 h] | 461,000 | 43418 |
| PG-30744 |  | T&C - Floor 13 | 28.67d | 2025-07-24 | 2025-08-28 | PG-10327, PG-10324, PG-10330 |  |  |  |  | 334.66d | 0d | Third Party [459000 h] | 459,000 | 43419 |
| PG-30745 |  | T&C - Floor 14 | 28.67d | 2025-08-06 | 2025-09-10 | PG-10336, PG-10333, PG-10339 |  |  |  |  | 323.66d | 0d | Third Party [459000 h] | 459,000 | 43420 |
| PG-30746 |  | T&C - Floor 15 | 28.67d | 2025-08-19 | 2025-09-22 | PG-10345, PG-10342, PG-10348 |  |  |  |  | 313.66d | 0d | Third Party [459000 h] | 459,000 | 43421 |
| PG-30747 |  | T&C - Floor 16 | 28.67d | 2025-09-01 | 2025-10-06 | PG-10354, PG-10351, PG-10357 |  |  |  |  | 302.66d | 0d | Third Party [459000 h] | 459,000 | 43422 |
| PG-30748 |  | T&C - Floor 17 | 28.67d | 2025-09-13 | 2025-10-18 | PG-10363, PG-10360, PG-10366 |  |  |  |  | 291.66d | 0d | Third Party [459000 h] | 459,000 | 43423 |
| PG-30749 |  | T&C - Floor 18 | 28.67d | 2025-09-26 | 2025-10-31 | PG-10372, PG-10369, PG-10375 |  |  |  |  | 280.66d | 0d | Third Party [459000 h] | 459,000 | 43397 |
| PG-30750 |  | T&C - Floor 19 | 28.67d | 2025-10-22 | 2025-11-26 | PG-10381, PG-10378, PG-10384 |  |  |  |  | 259.66d | 0d | Third Party [459000 h] | 459,000 | 43398 |
| PG-30751 |  | T&C - Floor 20 | 28.67d | 2025-11-13 | 2025-12-17 | PG-10390, PG-10387, PG-10393 |  |  |  |  | 240.49d | 0d | Third Party [459000 h] | 459,000 | 43399 |
| PG-30752 |  | T&C - Floor 21 | 28.67d | 2025-12-05 | 2026-01-08 | PG-10399, PG-10396, PG-10402 |  |  |  |  | 221.49d | 0d | Third Party [459000 h] | 459,000 | 43400 |
| PG-30753 |  | T&C - Floor 22 | 29.67d | 2025-12-27 | 2026-02-02 | PG-10408, PG-10405, PG-10411 |  |  |  |  | 201.49d | 0d | Third Party [475000 h] | 475,000 | 43401 |
| PG-30754 |  | T&C - Floor 23 | 28.83d | 2026-01-16 | 2026-02-20 | PG-10417, PG-10414, PG-10420 |  |  |  |  | 185.49d | 0d | Third Party [461000 h] | 461,000 | 43402 |

| ID | WBS | Activity | Duration | Start | Finish | Predecessors | Complete | Remaining | Planned start | Planned finish | Total float | Free float | Resources | Cost | MSP Activity ID |
| --- | --- | --- | --- | --- | --- | --- | --- | --- | --- | --- | --- | --- | --- | --- | --- |
|  | 1.6.1.1.2 | **Common Areas** |  | 2025-10-04 | 2026-04-18 |  |  |  |  |  |  |  |  |  |  |
| PG-30755 |  | T&C - Internal Electrical Works | 12.67d | 2025-10-04 | 2025-10-20 | PG-10815 |  |  |  |  | 261.16d | 0d | Elexir (Electrical) [405000 h] | 405,000 | 45607 |
| PG-30756 |  | T&C - Internal FPS Works | 12.83d | 2025-10-04 | 2025-10-20 | PG-10817 |  |  |  |  | 260.83d | 0d | Nexus (Fire) [411000 h] | 411,000 | 45606 |
| PG-30757 |  | T&C - Data & Communication Works | 12.83d | 2025-10-10 | 2025-10-25 | PG-10820 |  |  |  |  | 255.83d | 0d | Elexir (Electrical) [411000 h] | 411,000 | 45605 |
| PG-30758 |  | T&C - Internal PHE Works including OHT | 19.33d | 2025-11-14 | 2025-12-08 | PG-10824 |  |  |  |  | 217.83d | 0d | Santech (Plumbing) [619000 h] | 619,000 | 45604 |
| PG-30761 |  | T&C - Lightining Arrestor works | 6.67d | 2025-12-15 | 2025-12-23 | PG-10843 |  |  |  |  | 249.66d | 0d | Elexir (Electrical) [213000 h] | 213,000 | 45729 |
| PG-30760 |  | T&C - Electrical Panel Works | 20.5d | 2026-02-25 | 2026-03-21 | PG-10837 |  |  |  |  | 131.16d | 0d | Elexir (Electrical) [656000 h] | 656,000 | 45602 |
| PG-30759 |  | T&C - Lift Works | 19.33d | 2026-03-27 | 2026-04-18 | PG-10830 |  |  |  |  | 106.97d | 0d | Otis (Lifts) [1643000 h] | 1,643,000 | 45603 |
|  | 1.6.1.2 | **Tower 2** |  | 2025-01-11 | 2026-05-08 |  |  |  |  |  |  |  |  |  |  |
|  | 1.6.1.2.1 | **Units** |  | 2025-01-11 | 2026-03-31 |  |  |  |  |  |  |  |  |  |  |
| PG-30762 |  | T&C - Ground Floor | 28.67d | 2025-01-11 A | 2025-02-13 A | PG-11022, PG-11019, PG-11025 | 100% |  | 2025-01-08 | 2025-02-10 |  |  | Third Party [459000 h] | 459,000 | 43425 |
| PG-30763 |  | T&C - Floor 1 | 29.67d | 2025-01-29 A | 2025-03-04 A | PG-11031, PG-11028, PG-11034 | 100% |  | 2025-01-23 | 2025-02-26 |  |  | Third Party [475000 h] | 475,000 | 43426 |
| PG-30764 |  | T&C - Floor 2 | 30.67d | 2025-02-12 A | 2025-03-20 A | PG-11040, PG-11037, PG-11043 | 100% |  | 2025-02-07 | 2025-03-14 |  |  | Third Party [491000 h] | 491,000 | 43427 |
| PG-30765 |  | T&C - Floor 3 | 28.67d | 2025-03-01 A | 2025-04-04 A | PG-11049, PG-11046, PG-11052 | 100% |  | 2025-02-22 | 2025-03-27 |  |  | Third Party [459000 h] | 459,000 | 43428 |
| PG-30766 |  | T&C - Floor 4 | 29.67d | 2025-03-19 A | 2025-04-25 | PG-11058, PG-11055, PG-11061 | 98% | 0.57d | 2025-03-11 | 2025-04-14 | 439.1d | 0d | Third Party [475000 h] | 475,000 | 43429 |
| PG-30767 |  | T&C - Floor 5 | 29.67d | 2025-03-31 A | 2025-05-06 | PG-11067, PG-11064, PG-11070 | 68% | 9.41d | 2025-03-31 | 2025-05-03 | 430.26d | 0d | Third Party [475000 h] | 475,000 | 43430 |
| PG-30768 |  | T&C - Floor 6 | 29.67d | 2025-04-17 A | 2025-05-24 | PG-11076, PG-11073, PG-11079 | 15% | 25.1d | 2025-04-17 | 2025-05-21 | 415.4d | 0d | Third Party [475000 h] | 475,000 | 43431 |
| PG-30769 |  | T&C - Floor 7 | 29.67d | 2025-05-01 | 2025-06-05 | PG-11085, PG-11082, PG-11088 |  |  |  |  | 405.33d | 0d | Third Party [475000 h] | 475,000 | 43432 |
| PG-30770 |  | T&C - Floor 8 | 28.67d | 2025-05-20 | 2025-06-23 | PG-11094, PG-11091, PG-11097 |  |  |  |  | 389.34d | 0d | Third Party [459000 h] | 459,000 | 43433 |
| PG-30771 |  | T&C - Floor 9 | 28.67d | 2025-05-29 | 2025-07-02 | PG-11103, PG-11100, PG-11106 |  |  |  |  | 381.35d | 0d | Third Party [459000 h] | 459,000 | 43434 |
| PG-30772 |  | T&C - Floor 10 | 29.67d | 2025-06-13 | 2025-07-18 | PG-11112, PG-11109, PG-11115 |  |  |  |  | 367.93d | 0d | Third Party [475000 h] | 475,000 | 43435 |
| PG-30773 |  | T&C - Floor 11 | 29.67d | 2025-06-28 | 2025-08-01 | PG-11121, PG-11118, PG-11124 |  |  |  |  | 355.75d | 0d | Third Party [475000 h] | 475,000 | 43436 |
| PG-30774 |  | T&C - Floor 12 | 29.67d | 2025-07-10 | 2025-08-14 | PG-11130, PG-11127, PG-11133 |  |  |  |  | 345.27d | 0d | Third Party [475000 h] | 475,000 | 43437 |
| PG-30775 |  | T&C - Floor 13 | 28.67d | 2025-07-24 | 2025-08-28 | PG-11139, PG-11136, PG-11142 |  |  |  |  | 334.57d | 0d | Third Party [459000 h] | 459,000 | 43438 |
| PG-30776 |  | T&C - Floor 14 | 28.67d | 2025-08-06 | 2025-09-10 | PG-11148, PG-11145, PG-11151 |  |  |  |  | 323.57d | 0d | Third Party [459000 h] | 459,000 | 43439 |
| PG-30777 |  | T&C - Floor 15 | 28.67d | 2025-08-19 | 2025-09-22 | PG-11157, PG-11154, PG-11160 |  |  |  |  | 313.57d | 0d | Third Party [459000 h] | 459,000 | 43440 |
| PG-30778 |  | T&C - Floor 16 | 28.83d | 2025-08-30 | 2025-10-04 | PG-11166, PG-11163, PG-11169 |  |  |  |  | 303.24d | 0d | Third Party [461000 h] | 461,000 | 43441 |
| PG-30779 |  | T&C - Floor 17 | 28.83d | 2025-09-12 | 2025-10-17 | PG-11175, PG-11172, PG-11178 |  |  |  |  | 292.24d | 0d | Third Party [461000 h] | 461,000 | 43442 |
| PG-30780 |  | T&C - Floor 18 | 29.83d | 2025-09-26 | 2025-11-03 | PG-11184, PG-11181, PG-11187 |  |  |  |  | 280.4d | 0d | Third Party [477000 h] | 477,000 | 43443 |
| PG-30781 |  | T&C - Floor 19 | 29.83d | 2025-10-10 | 2025-11-15 | PG-11193, PG-11190, PG-11196 |  |  |  |  | 269.4d | 0d | Third Party [477000 h] | 477,000 | 43444 |
| PG-30782 |  | T&C - Floor 20 | 29.83d | 2025-10-24 | 2025-11-29 | PG-11202, PG-11199, PG-11205 |  |  |  |  | 257.4d | 0d | Third Party [477000 h] | 477,000 | 43445 |
| PG-30783 |  | T&C - Floor 21 | 29.67d | 2025-11-06 | 2025-12-10 | PG-11211, PG-11208, PG-11214 |  |  |  |  | 247.74d | 0d | Third Party [475000 h] | 475,000 | 43446 |
| PG-30784 |  | T&C - Floor 22 | 28.67d | 2025-11-28 | 2025-12-31 | PG-11220, PG-11217, PG-11223 |  |  |  |  | 227.9d | 0d | Third Party [459000 h] | 459,000 | 43447 |
| PG-30785 |  | T&C - Floor 23 | 29.83d | 2025-12-18 | 2026-01-22 | PG-11229, PG-11226, PG-11232 |  |  |  |  | 209.9d | 0d | Third Party [477000 h] | 477,000 | 43448 |
| PG-30786 |  | T&C - Floor 24 | 30.67d | 2026-01-08 | 2026-02-13 | PG-11238, PG-11235, PG-11241 |  |  |  |  | 190.74d | 0d | Third Party [491000 h] | 491,000 | 43451 |
| PG-30787 |  | T&C - Floor 25 | 29.67d | 2026-02-02 | 2026-03-09 | PG-11247, PG-11244, PG-11250 |  |  |  |  | 171.24d | 0d | Third Party [475000 h] | 475,000 | 43450 |
| PG-30788 |  | T&C - Floor 26 | 30.67d | 2026-02-23 | 2026-03-31 | PG-11256, PG-11253, PG-11259 |  |  |  |  | 123.74d | 0d | Third Party [491000 h] | 491,000 | 43449 |

| ID | WBS | Activity | Duration | Start | Finish | Predecessors | Complete | Remaining | Planned start | Planned finish | Total float | Free float | Resources | Cost | MSP Activity ID |
| --- | --- | --- | --- | --- | --- | --- | --- | --- | --- | --- | --- | --- | --- | --- | --- |
|  | 1.6.1.2.2 | **Common Areas** |  | 2025-11-12 | 2026-05-08 |  |  |  |  |  |  |  |  |  |  |
| PG-30790 |  | T&C - Internal FPS Works | 14.67d | 2025-11-12 | 2025-11-28 | PG-11698 |  |  |  |  | 226.9d | 0d | Nexus (Fire) [469000 h] | 469,000 | 45609 |
| PG-30789 |  | T&C - Internal Electrical Works | 14.5d | 2025-11-12 | 2025-11-28 | PG-11696 |  |  |  |  | 227.07d | 103.33d | Elexir (Electrical) [464000 h] | 464,000 | 45608 |
| PG-30791 |  | T&C - Data & Communication Works | 14.67d | 2025-11-18 | 2025-12-05 | PG-11701 |  |  |  |  | 221.57d | 0d | Elexir (Electrical) [469000 h] | 469,000 | 45610 |
| PG-30792 |  | T&C - Internal PHE Works including OHT | 20.5d | 2025-12-22 | 2026-01-15 | PG-11705 |  |  |  |  | 185.74d | 0d | Santech (Plumbing) [656000 h] | 656,000 | 45611 |
| PG-30795 |  | T&C - Lightining Arrestor works | 6.67d | 2026-01-21 | 2026-01-30 | PG-11724 |  |  |  |  | 219.9d | 0d | Elexir (Electrical) [213000 h] | 213,000 | 45730 |
| PG-30794 |  | T&C - Electrical Panel Works | 20.5d | 2026-02-24 | 2026-03-20 | PG-11718 |  |  |  |  | 162.57d | 0d | Elexir (Electrical) [656000 h] | 656,000 | 45613 |
| PG-30793 |  | T&C - Lift Works | 19.5d | 2026-04-15 | 2026-05-08 | PG-11711 |  |  |  |  | 120.4d | 0d | Otis (Lifts) [1658000 h] | 1,658,000 | 45612 |
|  | 1.6.1.3 | **Tower 3** |  | 2025-03-17 | 2026-08-18 |  |  |  |  |  |  |  |  |  |  |
|  | 1.6.1.3.1 | **Units** |  | 2025-03-17 | 2026-07-13 |  |  |  |  |  |  |  |  |  |  |
| PG-30796 |  | T&C - Ground Floor | 29.67d | 2025-03-17 A | 2025-04-23 A | PG-11918, PG-11915, PG-11921 | 100% |  | 2025-03-07 | 2025-04-10 |  |  | Third Party [475000 h] | 475,000 | 43453 |
| PG-30797 |  | T&C - Floor 1 | 29.67d | 2025-04-03 A | 2025-05-07 | PG-11927, PG-11924, PG-11930 | 65% | 10.44d | 2025-04-02 | 2025-05-06 | 429.23d | 0d | Third Party [475000 h] | 475,000 | 43454 |
| PG-30798 |  | T&C - Floor 2 | 28.83d | 2025-04-16 A | 2025-05-20 | PG-11936, PG-11933, PG-11939 | 25% | 21.72d | 2025-04-16 | 2025-05-19 | 416.95d | 0d | Third Party [461000 h] | 461,000 | 43455 |
| PG-30799 |  | T&C - Floor 3 | 29.67d | 2025-05-06 | 2025-06-10 | PG-11945, PG-11942, PG-11948 |  |  |  |  | 400.11d | 0d | Third Party [475000 h] | 475,000 | 43456 |
| PG-30800 |  | T&C - Floor 4 | 30.67d | 2025-05-20 | 2025-06-25 | PG-11954, PG-11951, PG-11957 |  |  |  |  | 387.62d | 0d | Third Party [491000 h] | 491,000 | 43457 |
| PG-30802 |  | T&C - Floor 6 | 29.67d | 2025-06-17 | 2025-07-22 | PG-11972, PG-11969, PG-11975 |  |  |  |  | 365.07d | 0d | Third Party [475000 h] | 475,000 | 43459 |
| PG-30803 |  | T&C - Floor 7 | 28.67d | 2025-07-04 | 2025-08-06 | PG-11981, PG-11978, PG-11984 |  |  |  |  | 351.8d | 0d | Third Party [459000 h] | 459,000 | 43460 |
| PG-30804 |  | T&C - Floor 8 | 28.67d | 2025-07-21 | 2025-08-25 | PG-11990, PG-11987, PG-11993 |  |  |  |  | 336.5d | 0d | Third Party [459000 h] | 459,000 | 43461 |
| PG-30805 |  | T&C - Floor 9 | 28.83d | 2025-08-02 | 2025-09-06 | PG-11999, PG-11996, PG-12002 |  |  |  |  | 325.33d | 0d | Third Party [461000 h] | 461,000 | 43462 |
| PG-30801 |  | T&C - Floor 5 | 29.67d | 2025-08-12 | 2025-09-16 | PG-11963, PG-11960, PG-11966 |  |  |  |  | 317.83d | 0d | Third Party [475000 h] | 475,000 | 43458 |
| PG-30806 |  | T&C - Floor 10 | 29.67d | 2025-08-20 | 2025-09-24 | PG-12008, PG-12005, PG-12011 |  |  |  |  | 311.17d | 0d | Third Party [475000 h] | 475,000 | 43463 |
| PG-30807 |  | T&C - Floor 11 | 29.67d | 2025-09-02 | 2025-10-08 | PG-12017, PG-12014, PG-12020 |  |  |  |  | 300.5d | 0d | Third Party [475000 h] | 475,000 | 43464 |
| PG-30808 |  | T&C - Floor 12 | 28.83d | 2025-09-18 | 2025-10-23 | PG-12026, PG-12023, PG-12029 |  |  |  |  | 287.17d | 0d | Third Party [461000 h] | 461,000 | 43465 |
| PG-30809 |  | T&C - Floor 13 | 28.67d | 2025-10-01 | 2025-11-06 | PG-12035, PG-12032, PG-12038 |  |  |  |  | 276.5d | 0d | Third Party [459000 h] | 459,000 | 43466 |
| PG-30810 |  | T&C - Floor 14 | 28.67d | 2025-10-13 | 2025-11-17 | PG-12044, PG-12041, PG-12047 |  |  |  |  | 267.5d | 0d | Third Party [459000 h] | 459,000 | 43467 |
| PG-30812 |  | T&C - Floor 16 | 28.67d | 2025-11-08 | 2025-12-12 | PG-12062, PG-12059, PG-12065 |  |  |  |  | 245.33d | 0d | Third Party [459000 h] | 459,000 | 43469 |
| PG-30813 |  | T&C - Floor 17 | 29.67d | 2025-11-20 | 2025-12-25 | PG-12071, PG-12068, PG-12074 |  |  |  |  | 234.33d | 0d | Third Party [475000 h] | 475,000 | 43470 |
| PG-30814 |  | T&C - Floor 18 | 29.67d | 2025-12-03 | 2026-01-07 | PG-12080, PG-12077, PG-12083 |  |  |  |  | 223.33d | 0d | Third Party [475000 h] | 475,000 | 43471 |
| PG-30815 |  | T&C - Floor 19 | 29.67d | 2025-12-16 | 2026-01-20 | PG-12089, PG-12086, PG-12092 |  |  |  |  | 212.33d | 0d | Third Party [475000 h] | 475,000 | 43472 |
| PG-30816 |  | T&C - Floor 20 | 29.67d | 2025-12-30 | 2026-02-03 | PG-12098, PG-12095, PG-12101 |  |  |  |  | 200.67d | 0d | Third Party [475000 h] | 475,000 | 43473 |
| PG-30817 |  | T&C - Floor 21 | 29.67d | 2026-01-12 | 2026-02-16 | PG-12107, PG-12104, PG-12110 |  |  |  |  | 189.83d | 0d | Third Party [475000 h] | 475,000 | 43474 |
| PG-30811 |  | T&C - Floor 15 | 29.83d | 2026-01-14 | 2026-02-19 | PG-12053, PG-12050, PG-12056 |  |  |  |  | 186.83d | 0d | Third Party [477000 h] | 477,000 | 43468 |
| PG-30818 |  | T&C - Floor 22 | 29.67d | 2026-01-24 | 2026-02-28 | PG-12116, PG-12113, PG-12119 |  |  |  |  | 178.83d | 0d | Third Party [475000 h] | 475,000 | 43475 |
| PG-30819 |  | T&C - Floor 23 | 29.67d | 2026-02-06 | 2026-03-13 | PG-12125, PG-12122, PG-12128 |  |  |  |  | 168.17d | 0d | Third Party [475000 h] | 475,000 | 43476 |
| PG-30820 |  | T&C - Floor 24 | 29.67d | 2026-02-20 | 2026-03-26 | PG-12134, PG-12131, PG-12137 |  |  |  |  | 156.83d | 0d | Third Party [475000 h] | 475,000 | 43477 |
| PG-30821 |  | T&C - Floor 25 | 29.67d | 2026-03-13 | 2026-04-16 | PG-12143, PG-12140, PG-12146 |  |  |  |  | 137.67d | 0d | Third Party [475000 h] | 475,000 | 43478 |
| PG-30822 |  | T&C - Floor 26 | 31.67d | 2026-04-03 | 2026-05-11 | PG-12152, PG-12149, PG-12155 |  |  |  |  | 118.33d | 0d | Third Party [507000 h] | 507,000 | 43479 |
| PG-30823 |  | T&C - Floor 27 | 30.67d | 2026-04-25 | 2026-06-01 | PG-12158, PG-12161, PG-12164 |  |  |  |  | 100.5d | 0d | Third Party [491000 h] | 491,000 | 43508 |
| PG-30824 |  | T&C - Floor 28 | 29.67d | 2026-05-18 | 2026-06-22 | PG-12167, PG-12170, PG-12173 |  |  |  |  | 82.5d | 0d | Third Party [475000 h] | 475,000 | 43510 |
| PG-30825 |  | T&C - Floor 29 | 29.67d | 2026-06-08 | 2026-07-13 | PG-12176, PG-12179, PG-12182 |  |  |  |  | 64.17d | 0d | Third Party [475000 h] | 475,000 | 43509 |

| ID | WBS | Activity | Duration | Start | Finish | Predecessors | Complete | Remaining | Planned start | Planned finish | Total float | Free float | Resources | Cost | MSP Activity ID |
| --- | --- | --- | --- | --- | --- | --- | --- | --- | --- | --- | --- | --- | --- | --- | --- |
|  | 1.6.1.3.2 | **Common Areas** |  | 2026-02-25 | 2026-08-18 |  |  |  |  |  |  |  |  |  |  |
| PG-30826 |  | T&C - Internal Electrical Works | 14.67d | 2026-02-25 | 2026-03-13 | PG-12661 |  |  |  |  | 182d | 0d | Elexir (Electrical) [469000 h] | 469,000 | 45620 |
| PG-30827 |  | T&C - Internal FPS Works | 14.83d | 2026-02-25 | 2026-03-14 | PG-12663 |  |  |  |  | 181.5d | 0d | Nexus (Fire) [475000 h] | 475,000 | 45621 |
| PG-30828 |  | T&C - Data & Communication Works | 14.67d | 2026-03-03 | 2026-03-19 | PG-12666 |  |  |  |  | 177.67d | 0d | Elexir (Electrical) [469000 h] | 469,000 | 45622 |
| PG-30829 |  | T&C - Internal PHE Works including OHT | 20.33d | 2026-04-04 | 2026-04-29 | PG-12670 |  |  |  |  | 138.5d | 0d | Santech (Plumbing) [651000 h] | 651,000 | 45623 |
| PG-30832 |  | T&C - Lightining Arrestor works | 6.67d | 2026-05-05 | 2026-05-13 | PG-12689 |  |  |  |  | 139.17d | 0d | Elexir (Electrical) [213000 h] | 213,000 | 45731 |
| PG-30831 |  | T&C - Electrical Panel Works | 21.5d | 2026-07-22 | 2026-08-18 | PG-12683 |  |  |  |  | 45.17d | 0d | Elexir (Electrical) [688000 h] | 688,000 | 45625 |
| PG-30830 |  | T&C - Lift Works | 9.67d | 2026-07-27 | 2026-08-07 | PG-12676 |  |  |  |  | 51.67d | 0d | Otis (Lifts) [822000 h] | 822,000 | 45624 |
|  | 1.6.1.4 | **Basements** |  | 2024-12-20 | 2025-01-14 |  |  |  |  |  |  |  |  |  |  |
| PG-30833 |  | T&C - LBF | 14d | 2024-12-20 A | 2025-01-07 A | PG-12711 | 100% |  | 2024-12-20 | 2025-01-06 |  |  | Third Party [224000 h] | 224,000 | 46345 |
| PG-30834 |  | T&C - UBF | 14d | 2024-12-27 A | 2025-01-14 A | PG-12714 | 100% |  | 2024-12-26 | 2025-01-11 |  |  | Third Party [224000 h] | 224,000 | 46346 |
|  | 1.6.9 | **Project InfraStructure Works ( Services & MEP )** |  | 2024-05-18 | 2026-10-28 |  |  |  |  |  |  |  |  |  |  |
| PG-31526 |  | T&C - FPS & FA works ( External & Plant Room ) | 29.67d | 2025-08-26 | 2025-09-30 | PG-32391 |  |  |  |  | 411.73d | 0d | Nexus (Fire) [949000 h] | 949,000 | 45922 |
|  | 1.6.9.1 | **Transformer Works** |  | 2026-09-24 | 2026-10-28 |  |  |  |  |  |  |  |  |  |  |
| PG-31514 |  | T&C - Transformer 01 ( Building 01 & 02 ) | 28.83d | 2026-09-24 | 2026-10-28 | PG-32392, PG-30464 |  |  |  |  | 58.83d | 0d | Third Party [461000 h] | 461,000 | 45886 |
|  | 1.6.9.2 | **DG Works** |  | 2024-06-03 | 2024-07-02 |  |  |  |  |  |  |  |  |  |  |
| PG-31518 |  | T&C - DG 01 ( Tower 1,2,12,13,14 & CH ) | 24.67d | 2024-06-03 A | 2024-07-02 A | PG-30499 | 100% |  |  |  |  |  | Third Party [395000 h] | 395,000 | 45889 |
|  | 1.6.9.3 | **STP Works** |  | 2026-02-17 | 2026-03-24 |  |  |  |  |  |  |  |  |  |  |
| PG-31521 |  | T&C - Sewage Treatment Plant 01 ( 1000KLD ) | 30d | 2026-02-17 | 2026-03-24 | PG-30547 |  |  |  |  | 215.83d | 0d | Third Party [480000 h] | 480,000 | 45894 |
|  | 1.6.9.7 | **Swimming Pool** |  | 2024-05-18 | 2024-06-24 |  |  |  |  |  |  |  |  |  |  |
| PG-31527 |  | T&C - MEP Works | 30.67d | 2024-05-18 A | 2024-06-24 A | PG-30635 | 100% |  | 2024-05-18 | 2024-06-22 |  |  | Third Party [491000 h] | 491,000 | 45928 |
|  | 1.7 | **Snagging De Snagging** |  | 2024-06-24 | 2026-12-02 |  |  |  |  |  |  |  |  |  |  |
| PG-32377 |  | Project Signage & Carpark / Driveway marking works | 10.67d | 2026-02-11 | 2026-02-24 | PG-32370 |  |  |  |  | 312.56d |  | L&T [427000 h] | 427,000 | 46387 |
|  | 1.7.1 | **Building 1** |  | 2025-02-13 | 2026-11-02 |  |  |  |  |  |  |  |  |  |  |
|  | 1.7.1.1 | **Tower 1** |  | 2025-02-17 | 2026-10-08 |  |  |  |  |  |  |  |  |  |  |
|  | 1.7.1.1.1 | **Units** |  | 2025-02-17 | 2026-03-27 |  |  |  |  |  |  |  |  |  |  |
| PG-31534 |  | Ground Floor | 30.67d | 2025-02-17 A | 2025-03-24 A | PG-10436, PG-30731 | 100% |  | 2025-02-15 | 2025-03-24 |  |  | L&T [1227000 h] | 1,227,000 | 44725 |
| PG-31535 |  | Floor 1 | 30.67d | 2025-03-10 A | 2025-04-12 A | PG-10450, PG-30732 | 100% |  | 2025-03-05 | 2025-04-10 |  |  | L&T [1227000 h] | 1,227,000 | 44726 |
| PG-31536 |  | Floor 2 | 30.67d | 2025-03-21 A | 2025-04-28 | PG-10464, PG-30733 | 91% | 2.86d | 2025-03-19 | 2025-04-24 | 467.47d |  | L&T [1227000 h] | 1,227,000 | 44727 |
| PG-31537 |  | Floor 3 | 30.67d | 2025-04-05 A | 2025-05-08 | PG-10478, PG-30734 | 63% | 11.45d | 2025-04-04 | 2025-05-10 | 458.88d |  | L&T [1227000 h] | 1,227,000 | 44728 |
| PG-31538 |  | Floor 4 | 30.67d | 2025-04-18 A | 2025-05-23 | PG-10492, PG-30735 | 20% | 24.58d | 2025-04-17 | 2025-05-23 | 445.75d |  | L&T [1227000 h] | 1,227,000 | 44729 |
| PG-31539 |  | Floor 5 | 29.83d | 2025-05-08 | 2025-06-12 | PG-10091, PG-30736 |  |  |  |  | 429.15d |  | L&T [1193000 h] | 1,193,000 | 44730 |
| PG-31540 |  | Floor 6 | 29.83d | 2025-05-21 | 2025-06-25 | PG-10520, PG-30737 |  |  |  |  | 417.8d |  | L&T [1193000 h] | 1,193,000 | 44731 |
| PG-31541 |  | Floor 7 | 29.67d | 2025-06-05 | 2025-07-09 | PG-10534, PG-30738 |  |  |  |  | 405.43d |  | L&T [1187000 h] | 1,187,000 | 44732 |
| PG-31542 |  | Floor 8 | 31.67d | 2025-06-19 | 2025-07-25 | PG-10548, PG-30739 |  |  |  |  | 391.64d |  | L&T [1267000 h] | 1,267,000 | 44733 |
| PG-31543 |  | Floor 9 | 30.67d | 2025-07-02 | 2025-08-06 | PG-10562, PG-30740 |  |  |  |  | 381.52d |  | L&T [1227000 h] | 1,227,000 | 44734 |
| PG-31544 |  | Floor 10 | 29.67d | 2025-07-18 | 2025-08-23 | PG-10576, PG-30741 |  |  |  |  | 368.27d |  | L&T [1187000 h] | 1,187,000 | 44735 |
| PG-31545 |  | Floor 11 | 29.67d | 2025-08-02 | 2025-09-08 | PG-10590, PG-30742 |  |  |  |  | 355.08d |  | L&T [1187000 h] | 1,187,000 | 44736 |
| PG-31546 |  | Floor 12 | 29.83d | 2025-08-12 | 2025-09-17 | PG-10604, PG-30743 |  |  |  |  | 347.08d |  | L&T [1193000 h] | 1,193,000 | 44737 |
| PG-31547 |  | Floor 13 | 29.67d | 2025-08-28 | 2025-10-01 | PG-10618, PG-30744 |  |  |  |  | 334.66d |  | L&T [1187000 h] | 1,187,000 | 44738 |
| PG-31548 |  | Floor 14 | 29.67d | 2025-09-10 | 2025-10-15 | PG-10632, PG-30745 |  |  |  |  | 323.66d |  | L&T [1187000 h] | 1,187,000 | 44739 |
| PG-31549 |  | Floor 15 | 29.67d | 2025-09-22 | 2025-10-27 | PG-10646, PG-30746 |  |  |  |  | 313.66d |  | L&T [1187000 h] | 1,187,000 | 44740 |
| PG-31550 |  | Floor 16 | 29.67d | 2025-10-06 | 2025-11-10 | PG-10660, PG-30747 |  |  |  |  | 302.66d |  | L&T [1187000 h] | 1,187,000 | 44741 |
| PG-31551 |  | Floor 17 | 29.67d | 2025-10-18 | 2025-11-22 | PG-10674, PG-30748 |  |  |  |  | 291.66d |  | L&T [1187000 h] | 1,187,000 | 44742 |
| PG-31552 |  | Floor 18 | 29.67d | 2025-10-31 | 2025-12-05 | PG-10688, PG-30749 |  |  |  |  | 280.66d |  | L&T [1187000 h] | 1,187,000 | 44743 |
| PG-31553 |  | Floor 19 | 29.67d | 2025-11-26 | 2025-12-30 | PG-10702, PG-30750 |  |  |  |  | 259.66d |  | L&T [1187000 h] | 1,187,000 | 44744 |
| PG-31554 |  | Floor 20 | 30.67d | 2025-12-17 | 2026-01-21 | PG-10716, PG-30751 |  |  |  |  | 240.49d |  | L&T [1227000 h] | 1,227,000 | 44745 |
| PG-31555 |  | Floor 21 | 30.67d | 2026-01-08 | 2026-02-13 | PG-10730, PG-30752 |  |  |  |  | 221.49d |  | L&T [1227000 h] | 1,227,000 | 44746 |
| PG-31556 |  | Floor 22 | 30.83d | 2026-02-02 | 2026-03-09 | PG-10744, PG-30753 |  |  |  |  | 201.49d |  | L&T [1233000 h] | 1,233,000 | 44747 |
| PG-31557 |  | Floor 23 | 30.67d | 2026-02-20 | 2026-03-27 | PG-10758, PG-30754 |  |  |  |  | 185.49d |  | L&T [1227000 h] | 1,227,000 | 44748 |

| ID | WBS | Activity | Duration | Start | Finish | Predecessors | Complete | Remaining | Planned start | Planned finish | Total float | Resources | Cost | MSP Activity ID |
| --- | --- | --- | --- | --- | --- | --- | --- | --- | --- | --- | --- | --- | --- | --- |
|  | 1.7.1.1.2 | **Common Areas** |  | 2025-10-20 | 2026-10-08 |  |  |  |  |  |  |  |  |  |
| PG-31559 |  | Internal Electrical Works | 58.67d | 2025-10-20 | 2025-12-29 | PG-30755 |  |  |  |  | 261.16d | Elexir (Electrical) [1877000 h] | 1,877,000 | 45748 |
| PG-31560 |  | Internal FPS Works | 58.83d | 2025-10-20 | 2025-12-29 | PG-30756 |  |  |  |  | 260.83d | Nexus (Fire) [1883000 h] | 1,883,000 | 45749 |
| PG-31561 |  | Data & Communication Works | 58.83d | 2025-10-25 | 2026-01-03 | PG-30757 |  |  |  |  | 255.83d | Elexir (Electrical) [1883000 h] | 1,883,000 | 45750 |
| PG-31562 |  | Internal PHE Works including OHT | 61.33d | 2025-12-08 | 2026-02-18 | PG-30758 |  |  |  |  | 217.83d | Santech (Plumbing) [1963000 h] | 1,963,000 | 45751 |
| PG-31565 |  | Lightining Arrestor works | 16.67d | 2025-12-23 | 2026-01-10 | PG-30761 |  |  |  |  | 249.66d | Elexir (Electrical) [533000 h] | 533,000 | 45754 |
| PG-31564 |  | Electrical Panel Works | 59.83d | 2026-03-21 | 2026-05-30 | PG-30760 |  |  |  |  | 131.16d | Elexir (Electrical) [1915000 h] | 1,915,000 | 45753 |
| PG-31563 |  | Lift Works | 59.5d | 2026-04-18 | 2026-06-27 | PG-30759 |  |  |  |  | 106.97d | Otis (Lifts) [5058000 h] | 5,058,000 | 45752 |
| PG-31558 |  | Common Area Civil Works | 60.67d | 2026-07-27 | 2026-10-08 | PG-10842, PG-10779, PG-10775 |  |  |  |  | 21d | L&T [2427000 h] | 2,427,000 | 46168 |
|  | 1.7.1.2 | **Tower 2** |  | 2025-02-13 | 2026-10-15 |  |  |  |  |  |  |  |  |  |
|  | 1.7.1.2.1 | **Units** |  | 2025-02-13 | 2026-05-04 |  |  |  |  |  |  |  |  |  |
| PG-31566 |  | Ground Floor | 31.67d | 2025-02-13 A | 2025-03-26 A | PG-30762, PG-11275 | 100% |  | 2025-02-10 | 2025-03-19 |  | L&T [1267000 h] | 1,267,000 | 44809 |
| PG-31567 |  | Floor 1 | 29.67d | 2025-03-04 A | 2025-04-10 A | PG-30763, PG-11289 | 100% |  | 2025-02-26 | 2025-04-02 |  | L&T [1187000 h] | 1,187,000 | 44810 |
| PG-31568 |  | Floor 2 | 30.67d | 2025-03-20 A | 2025-04-24 A | PG-30764, PG-11303 | 100% |  | 2025-03-14 | 2025-04-19 |  | L&T [1227000 h] | 1,227,000 | 44811 |
| PG-31569 |  | Floor 3 | 30.67d | 2025-04-04 A | 2025-05-09 | PG-30765, PG-11317 | 58% | 13d | 2025-04-03 | 2025-05-09 | 457.33d | L&T [1227000 h] | 1,227,000 | 44812 |
| PG-31570 |  | Floor 4 | 30.67d | 2025-04-25 | 2025-05-31 | PG-30766, PG-11331 |  |  |  |  | 439.1d | L&T [1227000 h] | 1,227,000 | 44813 |
| PG-31571 |  | Floor 5 | 30.67d | 2025-05-06 | 2025-06-11 | PG-30767, PG-11345 |  |  |  |  | 430.26d | L&T [1227000 h] | 1,227,000 | 44814 |
| PG-31572 |  | Floor 6 | 29.83d | 2025-05-24 | 2025-06-27 | PG-30768, PG-11359 |  |  |  |  | 415.4d | L&T [1193000 h] | 1,193,000 | 44815 |
| PG-31573 |  | Floor 7 | 29.83d | 2025-06-05 | 2025-07-09 | PG-30769, PG-11373 |  |  |  |  | 405.33d | L&T [1193000 h] | 1,193,000 | 44816 |
| PG-31574 |  | Floor 8 | 30.67d | 2025-06-23 | 2025-07-28 | PG-30770, PG-11387 |  |  |  |  | 389.34d | L&T [1227000 h] | 1,227,000 | 44817 |
| PG-31575 |  | Floor 9 | 30.83d | 2025-07-02 | 2025-08-06 | PG-30771, PG-11401 |  |  |  |  | 381.35d | L&T [1233000 h] | 1,233,000 | 44818 |
| PG-31576 |  | Floor 10 | 29.83d | 2025-07-18 | 2025-08-23 | PG-30772, PG-11415 |  |  |  |  | 367.93d | L&T [1193000 h] | 1,193,000 | 44819 |
| PG-31577 |  | Floor 11 | 29.83d | 2025-08-01 | 2025-09-06 | PG-30773, PG-11429 |  |  |  |  | 355.75d | L&T [1193000 h] | 1,193,000 | 44820 |
| PG-31578 |  | Floor 12 | 29.67d | 2025-08-14 | 2025-09-19 | PG-30774, PG-11443 |  |  |  |  | 345.27d | L&T [1187000 h] | 1,187,000 | 44821 |
| PG-31579 |  | Floor 13 | 29.67d | 2025-08-28 | 2025-10-01 | PG-30775, PG-11457 |  |  |  |  | 334.57d | L&T [1187000 h] | 1,187,000 | 44822 |
| PG-31580 |  | Floor 14 | 29.67d | 2025-09-10 | 2025-10-15 | PG-30776, PG-11471 |  |  |  |  | 323.57d | L&T [1187000 h] | 1,187,000 | 44823 |
| PG-31581 |  | Floor 15 | 29.67d | 2025-09-22 | 2025-10-27 | PG-30777, PG-11485 |  |  |  |  | 313.57d | L&T [1187000 h] | 1,187,000 | 44824 |
| PG-31582 |  | Floor 16 | 29.83d | 2025-10-04 | 2025-11-10 | PG-30778, PG-11499 |  |  |  |  | 303.24d | L&T [1193000 h] | 1,193,000 | 44825 |
| PG-31583 |  | Floor 17 | 29.83d | 2025-10-17 | 2025-11-22 | PG-30779, PG-11513 |  |  |  |  | 292.24d | L&T [1193000 h] | 1,193,000 | 44826 |
| PG-31584 |  | Floor 18 | 28.83d | 2025-11-03 | 2025-12-05 | PG-30780, PG-11527 |  |  |  |  | 280.4d | L&T [1153000 h] | 1,153,000 | 44827 |
| PG-31585 |  | Floor 19 | 28.83d | 2025-11-15 | 2025-12-18 | PG-30781, PG-11541 |  |  |  |  | 269.4d | L&T [1153000 h] | 1,153,000 | 44828 |
| PG-31586 |  | Floor 20 | 28.83d | 2025-11-29 | 2026-01-01 | PG-30782, PG-11555 |  |  |  |  | 257.4d | L&T [1153000 h] | 1,153,000 | 44829 |
| PG-31587 |  | Floor 21 | 28.67d | 2025-12-10 | 2026-01-13 | PG-30783, PG-11569 |  |  |  |  | 247.74d | L&T [1147000 h] | 1,147,000 | 44830 |
| PG-31588 |  | Floor 22 | 30.67d | 2025-12-31 | 2026-02-06 | PG-30784, PG-11583 |  |  |  |  | 227.9d | L&T [1227000 h] | 1,227,000 | 44831 |
| PG-31589 |  | Floor 23 | 29.83d | 2026-01-22 | 2026-02-27 | PG-30785, PG-11597 |  |  |  |  | 209.9d | L&T [1193000 h] | 1,193,000 | 44835 |
| PG-31590 |  | Floor 24 | 30.67d | 2026-02-13 | 2026-03-21 | PG-30786, PG-11611 |  |  |  |  | 190.74d | L&T [1227000 h] | 1,227,000 | 44834 |
| PG-31591 |  | Floor 25 | 30.67d | 2026-03-09 | 2026-04-14 | PG-30787, PG-11625 |  |  |  |  | 171.24d | L&T [1227000 h] | 1,227,000 | 44833 |
| PG-31592 |  | Floor 26 | 29.83d | 2026-03-31 | 2026-05-04 | PG-30788, PG-11639 |  |  |  |  | 153.4d | L&T [1193000 h] | 1,193,000 | 44832 |

| ID | WBS | Activity | Duration | Start | Finish | Predecessors | Complete | Remaining | Planned start | Planned finish | Total float | Resources | Cost | MSP Activity ID |
| --- | --- | --- | --- | --- | --- | --- | --- | --- | --- | --- | --- | --- | --- | --- |
|  | 1.7.1.2.2 | **Comman Areas** |  | 2025-11-28 | 2026-10-15 |  |  |  |  |  |  |  |  |  |
| PG-31595 |  | Internal FPS Works | 59.67d | 2025-11-28 | 2026-02-07 | PG-30790 |  |  |  |  | 226.9d | Nexus (Fire) [1909000 h] | 1,909,000 | 45756 |
| PG-31596 |  | Data & Communication Works | 59.67d | 2025-12-05 | 2026-02-13 | PG-30791 |  |  |  |  | 221.57d | Elexir (Electrical) [1909000 h] | 1,909,000 | 45757 |
| PG-31597 |  | Internal PHE Works including OHT | 60.5d | 2026-01-15 | 2026-03-27 | PG-30792 |  |  |  |  | 185.74d | Santech (Plumbing) [1936000 h] | 1,936,000 | 45758 |
| PG-31600 |  | Lightining Arrestor works | 13.83d | 2026-01-30 | 2026-02-16 | PG-30795 |  |  |  |  | 219.9d | Elexir (Electrical) [443000 h] | 443,000 | 45761 |
| PG-31599 |  | Electrical Panel Works | 29.67d | 2026-03-20 | 2026-04-23 | PG-30794 |  |  |  |  | 162.57d | Elexir (Electrical) [949000 h] | 949,000 | 45760 |
| PG-31594 |  | Internal Electrical Works | 59.5d | 2026-03-31 | 2026-06-08 | PG-30789, PG-30788 |  |  |  |  | 123.74d | Elexir (Electrical) [1904000 h] | 1,904,000 | 45755 |
| PG-31598 |  | Lift Works | 29.5d | 2026-05-08 | 2026-06-11 | PG-30793 |  |  |  |  | 120.4d | Otis (Lifts) [2508000 h] | 2,508,000 | 45759 |
| PG-31593 |  | Common Area Civil Works | 59.67d | 2026-08-04 | 2026-10-15 | PG-11723, PG-11660, PG-11656 |  |  |  |  | 14.9d | L&T [2387000 h] | 2,387,000 | 46287 |
|  | 1.7.1.3 | **Tower 3** |  | 2025-04-23 | 2026-11-02 |  |  |  |  |  |  |  |  |  |
|  | 1.7.1.3.1 | **Units** |  | 2025-04-23 | 2026-08-18 |  |  |  |  |  |  |  |  |  |
| PG-31601 |  | Ground Floor | 29.67d | 2025-04-23 A | 2025-05-28 | PG-30796, PG-12198 | 3% | 28.78d | 2025-04-22 | 2025-05-26 | 441.55d | L&T [1187000 h] | 1,187,000 | 44837 |
| PG-31602 |  | Floor 1 | 30.67d | 2025-05-07 | 2025-06-12 | PG-30797, PG-12212 |  |  |  |  | 429.23d | L&T [1227000 h] | 1,227,000 | 44838 |
| PG-31603 |  | Floor 2 | 31.67d | 2025-05-20 | 2025-06-26 | PG-30798, PG-12226 |  |  |  |  | 416.95d | L&T [1267000 h] | 1,267,000 | 44839 |
| PG-31604 |  | Floor 3 | 30.67d | 2025-06-10 | 2025-07-16 | PG-30799, PG-12240 |  |  |  |  | 400.11d | L&T [1227000 h] | 1,227,000 | 44840 |
| PG-31605 |  | Floor 4 | 30.67d | 2025-06-25 | 2025-07-30 | PG-30800, PG-12254 |  |  |  |  | 387.62d | L&T [1227000 h] | 1,227,000 | 44841 |
| PG-31607 |  | Floor 6 | 29.67d | 2025-07-22 | 2025-08-27 | PG-30802, PG-12282 |  |  |  |  | 365.07d | L&T [1187000 h] | 1,187,000 | 44843 |
| PG-31608 |  | Floor 7 | 29.67d | 2025-08-06 | 2025-09-11 | PG-30803, PG-12296 |  |  |  |  | 351.8d | L&T [1187000 h] | 1,187,000 | 44844 |
| PG-31609 |  | Floor 8 | 30.67d | 2025-08-25 | 2025-09-29 | PG-30804, PG-12310 |  |  |  |  | 336.5d | L&T [1227000 h] | 1,227,000 | 44845 |
| PG-31610 |  | Floor 9 | 30.67d | 2025-09-06 | 2025-10-13 | PG-30805, PG-12324 |  |  |  |  | 325.33d | L&T [1227000 h] | 1,227,000 | 44846 |
| PG-31606 |  | Floor 5 | 29.67d | 2025-09-16 | 2025-10-22 | PG-30801, PG-12268 |  |  |  |  | 317.83d | L&T [1187000 h] | 1,187,000 | 44842 |
| PG-31611 |  | Floor 10 | 30d | 2025-09-24 | 2025-10-30 | PG-30833, PG-30806, PG-12338 |  |  |  |  | 311.17d | L&T [1200000 h] | 1,200,000 | 44847 |
| PG-31612 |  | Floor 11 | 29.67d | 2025-10-08 | 2025-11-12 | PG-30807, PG-12352 |  |  |  |  | 300.5d | L&T [1187000 h] | 1,187,000 | 44848 |
| PG-31613 |  | Floor 12 | 29.83d | 2025-10-23 | 2025-11-28 | PG-30808, PG-12366 |  |  |  |  | 287.17d | L&T [1193000 h] | 1,193,000 | 44849 |
| PG-31614 |  | Floor 13 | 29.67d | 2025-11-06 | 2025-12-10 | PG-30809, PG-12380 |  |  |  |  | 276.5d | L&T [1187000 h] | 1,187,000 | 44850 |
| PG-31615 |  | Floor 14 | 29.67d | 2025-11-17 | 2025-12-20 | PG-30810, PG-12394 |  |  |  |  | 267.5d | L&T [1187000 h] | 1,187,000 | 44851 |
| PG-31617 |  | Floor 16 | 29.67d | 2025-12-12 | 2026-01-15 | PG-30812, PG-12422 |  |  |  |  | 245.33d | L&T [1187000 h] | 1,187,000 | 44853 |
| PG-31618 |  | Floor 17 | 29.67d | 2025-12-25 | 2026-01-29 | PG-30813, PG-12436 |  |  |  |  | 234.33d | L&T [1187000 h] | 1,187,000 | 44854 |
| PG-31619 |  | Floor 18 | 29.67d | 2026-01-07 | 2026-02-11 | PG-30814, PG-12450 |  |  |  |  | 223.33d | L&T [1187000 h] | 1,187,000 | 44855 |
| PG-31620 |  | Floor 19 | 29.67d | 2026-01-20 | 2026-02-24 | PG-30815, PG-12464 |  |  |  |  | 212.33d | L&T [1187000 h] | 1,187,000 | 44856 |
| PG-31621 |  | Floor 20 | 29.67d | 2026-02-04 | 2026-03-10 | PG-30816, PG-12478 |  |  |  |  | 200.67d | L&T [1187000 h] | 1,187,000 | 44857 |
| PG-31622 |  | Floor 21 | 29.67d | 2026-02-16 | 2026-03-23 | PG-30817, PG-12492 |  |  |  |  | 189.83d | L&T [1187000 h] | 1,187,000 | 44858 |
| PG-31616 |  | Floor 15 | 29.83d | 2026-02-19 | 2026-03-26 | PG-30811, PG-12408 |  |  |  |  | 186.83d | L&T [1193000 h] | 1,193,000 | 44852 |
| PG-31623 |  | Floor 22 | 29.67d | 2026-02-28 | 2026-04-04 | PG-30818, PG-12506 |  |  |  |  | 178.83d | L&T [1187000 h] | 1,187,000 | 44859 |
| PG-31624 |  | Floor 23 | 29.67d | 2026-03-13 | 2026-04-17 | PG-30819, PG-12520 |  |  |  |  | 168.17d | L&T [1187000 h] | 1,187,000 | 44860 |
| PG-31625 |  | Floor 24 | 29.67d | 2026-03-26 | 2026-04-30 | PG-30820, PG-12534 |  |  |  |  | 156.83d | L&T [1187000 h] | 1,187,000 | 44861 |
| PG-31626 |  | Floor 25 | 30.67d | 2026-04-17 | 2026-05-22 | PG-30821, PG-12548 |  |  |  |  | 137.67d | L&T [1227000 h] | 1,227,000 | 44862 |
| PG-31627 |  | Floor 26 | 29.83d | 2026-05-11 | 2026-06-13 | PG-30822, PG-12562 |  |  |  |  | 118.33d | L&T [1193000 h] | 1,193,000 | 44863 |
| PG-31628 |  | Floor 27 | 29.67d | 2026-06-01 | 2026-07-04 | PG-30823, PG-12576 |  |  |  |  | 100.5d | L&T [1187000 h] | 1,187,000 | 44864 |
| PG-31629 |  | Floor 28 | 29.67d | 2026-06-22 | 2026-07-25 | PG-30824, PG-12590 |  |  |  |  | 82.5d | L&T [1187000 h] | 1,187,000 | 44865 |
| PG-31630 |  | Floor 29 | 29.67d | 2026-07-13 | 2026-08-18 | PG-30825, PG-12604 |  |  |  |  | 64.17d | L&T [1187000 h] | 1,187,000 | 44866 |

| ID | WBS | Activity | Duration | Start | Finish | Predecessors | Complete | Remaining | Planned start | Planned finish | Total float | Free float | Resources | Cost | MSP Activity ID |
| --- | --- | --- | --- | --- | --- | --- | --- | --- | --- | --- | --- | --- | --- | --- | --- |
|  | 1.7.1.3.2 | **Common Areas** |  | 2026-03-13 | 2026-11-02 |  |  |  |  |  |  |  |  |  |  |
| PG-31632 |  | Internal Electrical Works | 15.5d | 2026-03-13 | 2026-04-01 | PG-30826 |  |  |  |  | 182d |  | Elexir (Electrical) [496000 h] | 496,000 | 45762 |
| PG-31633 |  | Internal FPS Works | 15.67d | 2026-03-14 | 2026-04-01 | PG-30827 |  |  |  |  | 181.5d |  | Nexus (Fire) [501000 h] | 501,000 | 45763 |
| PG-31634 |  | Data & Communication Works | 14.67d | 2026-03-20 | 2026-04-06 | PG-30828 |  |  |  |  | 177.67d |  | Elexir (Electrical) [469000 h] | 469,000 | 45764 |
| PG-31635 |  | Internal PHE Works including OHT | 19.67d | 2026-04-29 | 2026-05-21 | PG-30829 |  |  |  |  | 138.5d |  | Santech (Plumbing) [629000 h] | 629,000 | 45765 |
| PG-31638 |  | Lightining Arrestor works | 6.67d | 2026-05-13 | 2026-05-21 | PG-30832 |  |  |  |  | 139.17d |  | Elexir (Electrical) [213000 h] | 213,000 | 45768 |
| PG-31636 |  | Lift Works | 19.5d | 2026-08-07 | 2026-09-01 | PG-30830 |  |  | 2026-08-07 | 2026-08-31 | 51.67d |  | Otis (Lifts) [1658000 h] | 1,658,000 | 45766 |
| PG-31637 |  | Electrical Panel Works | 18.83d | 2026-08-18 | 2026-09-09 | PG-30831 |  |  |  |  | 45.17d |  | Elexir (Electrical) [603000 h] | 603,000 | 45767 |
| PG-31631 |  | Common Area Civil Works | 14.83d | 2026-10-15 | 2026-11-02 | PG-12688, PG-12625, PG-12621 |  |  |  |  | 0d |  | L&T [593000 h] | 593,000 | 46292 |
|  | 1.7.1.4 | **Basements** |  | 2025-04-03 | 2025-04-26 |  |  |  |  |  |  |  |  |  |  |
| PG-31639 |  | LBF | 14.67d | 2025-04-03 A | 2025-04-19 A | PG-12189, PG-11266, PG-12707, PG-10427 | 100% |  |  |  |  |  | L&T [587000 h] | 587,000 | 46179 |
| PG-31640 |  | UBF | 14.67d | 2025-04-12 A | 2025-04-26 | PG-30834, PG-12193, PG-11270, PG-12714, PG-12707, PG-10431 | 87% | 1.91d | 2025-04-11 | 2025-04-28 | 468.42d |  | L&T [587000 h] | 587,000 | 46180 |
|  | 1.7.9 | **Project InfraStructure Works ( Services & MEP )** |  | 2024-06-24 | 2026-12-02 |  |  |  |  |  |  |  |  |  |  |
| PG-32348 |  | FPS & FA works ( External & Plant Room ) | 9.67d | 2025-09-30 | 2025-10-11 | PG-31526 |  |  |  |  | 411.73d | 396.56d | Nexus (Fire) [309000 h] | 309,000 | 45923 |
|  | 1.7.9.1 | **Transformer Works** |  | 2026-10-28 | 2026-12-02 |  |  |  |  |  |  |  |  |  |  |
| PG-32336 |  | Transformer 01 ( Building 01 & 02 ) | 29.83d | 2026-10-28 | 2026-12-02 | PG-31514 |  |  |  |  | 58.83d | 0d | L&T [1193000 h] | 1,193,000 | 45901 |
|  | 1.7.9.2 | **DG Works** |  | 2024-07-02 | 2024-07-15 |  |  |  |  |  |  |  |  |  |  |
| PG-32340 |  | DG 01 ( Tower 1,2,12,13,14 & CH ) | 10.67d | 2024-07-02 A | 2024-07-15 A | PG-31518 | 100% |  | 2024-07-02 | 2024-07-13 |  |  | L&T [427000 h] | 427,000 | 45906 |
|  | 1.7.9.3 | **STP Works** |  | 2026-03-24 | 2026-04-27 |  |  |  |  |  |  |  |  |  |  |
| PG-32343 |  | Sewage Treatment Plant 01 ( 1000KLD ) | 29d | 2026-03-24 | 2026-04-27 | PG-31521 |  |  |  |  | 215.83d | 0d | L&T [1160000 h] | 1,160,000 | 45910 |
|  | 1.7.9.7 | **Swimming Pool** |  | 2024-06-24 | 2024-07-27 |  |  |  |  |  |  |  |  |  |  |
| PG-32349 |  | MEP Works | 29.67d | 2024-06-24 A | 2024-07-27 A | PG-31527 | 100% |  |  |  |  |  | L&T [1187000 h] | 1,187,000 | 45930 |
|  | 1.7.10 | **External Development Works** |  | 2025-12-23 | 2026-02-11 |  |  |  |  |  |  |  |  |  |  |
| PG-32370 |  | Clubhouse | 42.83d | 2025-12-23 | 2026-02-11 | PG-30711 |  |  |  |  | 303.56d | 0d | L&T [1713000 h] | 1,713,000 | 46374 |

| ID | WBS | Activity | Type | Duration | Start | Finish | Predecessors | Complete | Planned start | Planned finish | Total float | Free float | Resources | Cost | MSP Activity ID |
| --- | --- | --- | --- | --- | --- | --- | --- | --- | --- | --- | --- | --- | --- | --- | --- |
|  | 1.7.11 | **Pumps Installation Works** |  |  | 2024-06-24 | 2024-07-13 |  |  |  |  |  |  |  |  |  |
| PG-32373 |  | UG Sump Domestic Pumps |  | 13.67d | 2024-06-24 A | 2024-07-09 A | PG-31527 | 100% |  |  |  |  | L&T [547000 h] | 547,000 | 45959 |
| PG-32374 |  | Water bodies and Swimming Pool Pumps |  | 16.67d | 2024-06-24 A | 2024-07-13 A | PG-31527 | 100% | 2024-06-24 | 2024-07-12 |  |  | L&T [667000 h] | 667,000 | 45960 |
| PG-32375 |  | Roof & Rainwater disposal Pumps |  | 15.67d | 2024-06-24 A | 2024-07-12 A | PG-31527 | 100% | 2024-06-24 | 2024-07-11 |  |  | L&T [627000 h] | 627,000 | 45961 |
| PG-32376 |  | Car wash water & Strom water pumps in Basement |  | 13.67d | 2024-06-24 A | 2024-07-09 A | PG-31527 | 100% |  |  |  |  | L&T [547000 h] | 547,000 | 45962 |
|  | 1.8 | **Handing Over** |  |  | 2026-02-11 | 2027-02-09 |  |  |  |  |  |  |  |  |  |
| PG-32387 |  | External Development Works |  | 19.67d | 2026-02-11 | 2026-03-06 | PG-32370 |  |  |  | 303.56d |  | L&T [787000 h] | 787,000 | 46441 |
| PG-32378 |  | Building 1 |  | 9.67d | 2026-11-02 | 2026-11-12 | PG-31640, PG-31639, PG-31638, PG-31637, PG-31636, PG-31635, PG-31634, PG-31633, PG-31632, PG-31631, PG-31630, PG-31629, PG-31628, PG-31627, PG-31626, PG-31625, PG-31624, PG-31623, PG-31622, PG-31621, PG-31620, PG-31619, PG-31618, PG-31617, PG-31616, PG-31615, PG-31614, PG-31613, PG-31612, PG-31611, PG-31610, PG-31609, PG-31608, PG-31607, PG-31606, PG-31605, PG-31604, PG-31603, PG-31602, PG-31601, PG-31600, PG-31599, PG-31598, PG-31597, PG-31596, PG-31595, PG-31594, PG-31593, PG-31592, PG-31591, PG-31590, PG-31589, PG-31588, PG-31587, PG-31586, PG-31585, PG-31584, PG-31583, PG-31582, PG-31581, PG-31580, PG-31579, PG-31578, PG-31577, PG-31576, PG-31575, PG-31574, PG-31573, PG-31572, PG-31571, PG-31570, PG-31569, PG-31568, PG-31567, PG-31566, PG-31565, PG-31564, PG-31563, PG-31562, PG-31561, PG-31560, PG-31559, PG-31558, PG-31557, PG-31556, PG-31555, PG-31554, PG-31553, PG-31552, PG-31551, PG-31550, PG-31549, PG-31548, PG-31547, PG-31546, PG-31545, PG-31544, PG-31543, PG-31542, PG-31541, PG-31540, PG-31539, PG-31538, PG-31537, PG-31536, PG-31535, PG-31534 |  |  |  | 0d |  | L&T [387000 h] | 387,000 | 46378 |
| PG-32386 |  | Project InfraStructure Works ( Services & MEP ) |  | 14.67d | 2027-01-22 | 2027-02-09 | PG-32396, PG-32395, PG-32393, PG-32349, PG-32348, PG-32343, PG-32340, PG-32336 |  |  |  | 15.17d | 0d | L&T [587000 h] | 587,000 | 46442 |
|  | 1.10 | **Post Construction Statutory Approvals** |  |  | 2023-10-04 | 2027-02-27 |  |  |  |  |  |  |  |  |  |
| PG-32392 |  | Bescom Electrical CEIG Approval |  | 30.5d | 2023-10-04 A | 2023-11-09 A |  | 100% |  |  |  |  | Elexir (Electrical) [976000 h] | 976,000 | 44687 |
| PG-32393 |  | CEIG Approval - DG |  | 29.83d | 2024-07-15 A | 2024-08-20 A | PG-32340 | 100% | 2024-07-15 | 2024-08-19 |  |  | L&T [1193000 h] | 1,193,000 | 44682 |
| PG-32391 |  | Fire NOC |  | 58.67d | 2025-06-17 | 2025-08-26 | PG-30700 |  |  |  | 411.73d | 0d | L&T [2347000 h] | 2,347,000 | 44681 |
| PG-32396 |  | Pollution Control board clearance for STP |  | 29.67d | 2026-04-27 | 2026-05-30 | PG-32343 |  |  |  | 215.83d | 200.66d | L&T [1187000 h] | 1,187,000 | 44686 |
| PG-32394 |  | CEIG Approval - Lift |  | 29.5d | 2026-11-13 | 2026-12-17 | PG-32378 |  |  |  | 0d |  | Otis (Lifts) [1180000 h] | 1,180,000 | 44684 |
| PG-32395 |  | Pollution Control board CFO |  | 30.83d | 2026-12-17 | 2027-01-22 | PG-32394 |  |  |  | 15.17d | 0d | L&T [1233000 h] | 1,233,000 | 44715 |
| PG-32397 |  | Occupation Certificate |  | 60.67d | 2026-12-17 | 2027-02-27 | PG-32394 |  |  |  | 0d |  | L&T [2427000 h] | 2,427,000 | 44685 |
|  | 2 | **Milestone** |  |  | 2023-10-04 | 2027-02-27 |  |  |  |  |  |  |  |  |  |
| MS-0000 |  | Project Start | milestone | 0d | 2023-10-04 A | 2023-10-04 A |  | 100% |  |  |  |  |  |  |  |
| MS-9006 |  | Roads Complete | milestone | 0d | 2024-01-02 A | 2024-01-02 A | PG-30614 | 100% | 2023-12-30 | 2023-12-30 |  |  |  |  |  |
| MS-0104 |  | DG Sets Delivered to Site | milestone | 0d | 2024-04-06 A | 2024-04-06 A | PG-10034 | 100% |  |  |  |  |  |  |  |
| MS-0106 |  | STP Equipment Delivered | milestone | 0d | 2024-05-08 A | 2024-05-08 A | PG-10038 | 100% | 2024-05-07 | 2024-05-07 |  |  |  |  |  |
| MS-9003 |  | DG Commissioned | milestone | 0d | 2024-07-03 A | 2024-07-03 A | PG-31518 | 100% | 2024-07-02 | 2024-07-02 |  |  |  |  |  |
| MS-9004 |  | Swimming Pool Complete | milestone | 0d | 2024-07-29 A | 2024-07-29 A | PG-32349 | 100% | 2024-07-27 | 2024-07-27 |  |  |  |  |  |
| MS-0101 |  | Aluminium Formwork Kit Delivered | milestone | 0d | 2024-08-09 A | 2024-08-09 A | PG-10003 | 100% | 2024-08-07 | 2024-08-07 |  |  |  |  |  |
| MS-0109 |  | CP & Sanitaryware Delivered | milestone | 0d | 2025-03-10 A | 2025-03-10 A | PG-10023 | 100% | 2025-03-08 | 2025-03-08 |  |  |  |  |  |
| MS-1001 |  | Tower 1 - Structure Complete | milestone | 0d | 2025-08-16 | 2025-08-16 | PG-10197 |  |  |  | 478.33d |  |  |  |  |
| MS-0105 |  | Electrical Panels Delivered | milestone | 0d | 2025-08-23 | 2025-08-23 | PG-10032 |  |  |  | 472.66d |  |  |  |  |
| MS-2001 |  | Tower 2 - Structure Complete | milestone | 0d | 2025-09-24 | 2025-09-24 | PG-11009 |  |  |  | 445.57d |  |  |  |  |
| MS-1002 |  | Tower 1 - MEP 1st Fix Complete | milestone | 0d | 2025-11-21 | 2025-11-21 | PG-10415 |  |  |  | 397.33d |  |  |  |  |
| MS-0102 |  | Lifts Delivered to Site | milestone | 0d | 2025-11-24 | 2025-11-24 | PG-10030 |  |  |  | 395.97d |  |  |  |  |
| MS-0107 |  | FRP Water Tanks Delivered | milestone | 0d | 2025-11-29 | 2025-11-29 | PG-10027 |  |  |  | 390.66d |  |  |  |  |
| MS-9005 |  | Club House Complete | milestone | 0d | 2025-12-23 | 2025-12-23 | PG-30711 |  |  |  | 371.06d |  |  |  |  |
| MS-2002 |  | Tower 2 - MEP 1st Fix Complete | milestone | 0d | 2025-12-26 | 2025-12-26 | PG-11254 |  |  |  | 367.9d |  |  |  |  |
| MS-1003 |  | Tower 1 - MEP 2nd Fix Complete | milestone | 0d | 2025-12-26 | 2025-12-26 | PG-10416 |  |  |  | 367.33d |  |  |  |  |
| MS-3001 |  | Tower 3 - Structure Complete | milestone | 0d | 2026-01-08 | 2026-01-08 | PG-11905 |  |  |  | 356.67d |  |  |  |  |
| MS-1005 |  | Tower 1 - MEP Final Fix Complete | milestone | 0d | 2026-01-16 | 2026-01-16 | PG-10417 |  |  |  | 349.83d |  |  |  |  |
| MS-2003 |  | Tower 2 - MEP 2nd Fix Complete | milestone | 0d | 2026-01-31 | 2026-01-31 | PG-11255 |  |  |  | 338.07d |  |  |  |  |
| MS-9008 |  | External Development Complete | milestone | 0d | 2026-02-11 | 2026-02-11 | PG-32370 |  |  |  | 328.23d |  |  |  |  |
| MS-2005 |  | Tower 2 - MEP Final Fix Complete | milestone | 0d | 2026-02-23 | 2026-02-23 | PG-11259 |  |  |  | 318.74d |  |  |  |  |
| MS-2004 |  | Tower 2 - Internal Finishes Complete | milestone | 0d | 2026-03-19 | 2026-03-19 | PG-11660 |  |  |  | 297.74d |  |  |  |  |
| MS-9001 |  | STP Commissioned | milestone | 0d | 2026-03-24 | 2026-03-24 | PG-31521 |  |  |  | 294.16d |  |  |  |  |
| MS-1006 |  | Tower 1 - Lifts Commissioned | milestone | 0d | 2026-03-27 | 2026-03-27 | PG-10830 |  |  |  | 290.63d |  |  |  |  |
| MS-3002 |  | Tower 3 - MEP 1st Fix Complete | milestone | 0d | 2026-04-11 | 2026-04-11 | PG-12177 |  |  |  | 278d |  |  |  |  |
| MS-2006 |  | Tower 2 - Lifts Commissioned | milestone | 0d | 2026-04-15 | 2026-04-15 | PG-11711 |  |  |  | 274.24d |  |  |  |  |
| MS-1007 |  | Tower 1 - T&C Complete | milestone | 0d | 2026-04-18 | 2026-04-18 | PG-30759 |  |  |  | 271.3d |  |  |  |  |
| MS-2007 |  | Tower 2 - T&C Complete | milestone | 0d | 2026-05-08 | 2026-05-08 | PG-30793 |  |  |  | 254.74d |  |  |  |  |
| MS-3003 |  | Tower 3 - MEP 2nd Fix Complete | milestone | 0d | 2026-05-16 | 2026-05-16 | PG-12178 |  |  |  | 248d |  |  |  |  |
| MS-3005 |  | Tower 3 - MEP Final Fix Complete | milestone | 0d | 2026-06-08 | 2026-06-08 | PG-12179 |  |  |  | 228.33d |  |  |  |  |
| MS-3004 |  | Tower 3 - Internal Finishes Complete | milestone | 0d | 2026-07-01 | 2026-07-01 | PG-12625 |  |  |  | 208.83d |  |  |  |  |
| MS-0108 |  | Tiles & Marble Delivered | milestone | 0d | 2026-07-03 | 2026-07-03 | PG-10013 |  |  |  | 206.83d |  |  |  |  |
| MS-0103 |  | Transformer Delivered to Site | milestone | 0d | 2026-07-25 | 2026-07-25 | PG-10036 |  |  |  | 187.33d |  |  |  |  |
| MS-1004 |  | Tower 1 - Internal Finishes Complete | milestone | 0d | 2026-07-27 | 2026-07-27 | PG-10779 |  |  |  | 186.5d |  |  |  |  |
| MS-3006 |  | Tower 3 - Lifts Commissioned | milestone | 0d | 2026-07-27 | 2026-07-27 | PG-12676 |  |  |  | 186.5d |  |  |  |  |
| MS-9007 |  | Landscape Complete | milestone | 0d | 2026-08-06 | 2026-08-06 | PG-12718 |  |  |  | 177.17d |  |  |  |  |
| MS-3007 |  | Tower 3 - T&C Complete | milestone | 0d | 2026-08-18 | 2026-08-18 | PG-30831 |  |  |  | 168.83d |  |  |  |  |
| MS-9002 |  | Transformer Charged | milestone | 0d | 2026-10-28 | 2026-10-28 | PG-31514 |  |  |  | 108.33d |  |  |  |  |
| MS-9990 |  | Snagging Complete | milestone | 0d | 2026-12-02 | 2026-12-02 | PG-32336 |  |  |  | 78.5d |  |  |  |  |
| MS-9999 |  | Project Finish / Handover | milestone | 0d | 2027-02-09 | 2027-02-09 | PG-32386 |  |  |  | 20.17d |  |  |  |  |
| MS-9991 |  | Statutory Approvals Obtained | milestone | 0d | 2027-02-27 | 2027-02-27 | PG-32397 |  |  |  | 5d |  |  |  |  |
